# [VA-DC1-PRJ.01-UP]OWNER VA-DC1 (Start Work Date: 03/24/25)

Schedule from Primavera P6, 2026-05-05 to 2026-09-14, data date 2026-05-05.

## Calendars

- VA-DC1-Calendar 07 - 6 Day w/o holidays - Mon-Sat: Mon-Sat 08:00-12:00, 13:00-17:00; Sun off.
- Calendar 01 - 5 Day w/holidays (No Pats Day): Mon-Fri 08:00-12:00, 13:00-17:00; Sat-Sun off. Exceptions (off unless hours are given): 2026-05-25, 2026-07-03, 2026-09-07.
- VA-DC1-Calendar 01 - 5 Day w/holiday (No Pats Day): Mon-Fri 08:00-12:00, 13:00-17:00; Sat-Sun off. Exceptions (off unless hours are given): 2026-05-25, 2026-07-03, 2026-09-07.
- Calendar 07 - 6 Day Work Week w/o holidays - Mon-Sat: Mon-Sat 08:00-12:00, 13:00-17:00; Sun off.
- MC Calendar 02- OWNER Mondays only(NEA, PFHO): Mon 08:00-12:00, 13:00-17:00; Tue-Sun off. Exceptions (off unless hours are given): 2026-07-03.
- MC Calendar 01- OWNER Fridays only(H2C, PCO): Mon-Thu off; Fri 08:00-12:00, 13:00-17:00; Sat-Sun off. Exceptions (off unless hours are given): 2026-05-25, 2026-09-07.
- Calendar 11 - 5 day NO Holidays: Mon-Fri 08:00-12:00, 13:00-17:00; Sat-Sun off.
- Calendar 06 - 6 Day Work Week w/ Holidays: Mon-Sat 08:00-12:00, 13:00-17:00; Sun off. Exceptions (off unless hours are given): 2026-05-25, 2026-07-04, 2026-09-07.
- Calendar 18 - 5 day Work week NO HOLIDAYS: Mon-Fri 08:00-12:00, 13:00-17:00; Sat-Sun off.

## Schedule

| ID | WBS | Activity | Type | Duration | Start | Finish | Predecessors | Planned start | Planned finish | Total float | Free float | Constraint | Calendar | MSP Activity ID | 12 - GC - Export_to_Procore | 05 -GC - Building Phase | 13 -GC - MC (Systems of Work) |
| --- | --- | --- | --- | --- | --- | --- | --- | --- | --- | --- | --- | --- | --- | --- | --- | --- | --- |
|  | 1 | **VA-DC1** |  |  | 2026-05-05 | 2026-09-14 |  |  |  |  |  |  |  |  |  |  |  |
|  | 1 | **Milestones** |  |  | 2026-05-05 | 2026-09-14 |  |  |  |  |  |  |  |  |  |  |  |
| PO |  | PO | milestone | 0d | 2026-05-05 | 2026-05-05 |  | 2025-01-28 | 2025-01-28 |  |  |  |  |  |  |  |  |
| VA-DC1-COM |  | Overall Project Complete | milestone | 0d | 2026-09-14 | 2026-09-14 | ISSU26.90 FF, ISSU25.10 FF, PH04MS-10402 FF, PH03MS-10402 FF, PH02MS-10402 FF, PH01MS-10402 FF, PH08MS-1040 FF, PH07MS-1040 FF, PH06MS-1040 FF, PH05MS-1040 FF, RZ-L2-740 FF, PH01S-109 FF, ISSU12.70 FF, BTN2-1610 FF, BTN2-1600 FF, ISSU11.40 FF, ISSU16.40 FF, ISSU22.40 FF, ISSU41.30 FF, PH08DH-194 FF, PH07DH-194 FF, PH06DH-194 FF, PH05DH-194, ISSU40.110 FF, PH08ER-106 FF, PH05MS-1015 FF, PH06MS-1015 FF, PH01S-110 FF |  |  | 0d |  |  |  | 1836 | Y |  |  |
|  | 1 | **Phase 1 / CR-6 Milestones** |  |  | 2026-05-05 | 2026-07-10 |  |  |  |  |  |  |  |  |  |  |  |
| OFCECOM-10 |  | Office Area Complete | milestone | 0d | 2026-05-05 | 2026-05-05 | ISSU13.10 FF, PH01OF-125 FF | 2025-09-11 | 2025-09-11 |  |  |  |  |  |  | 1 |  |
| PH01MS-1000 |  | Build Start Work Date - PH01 (Logistict Delay / Loading Dock CR2) | milestone | 0d | 2026-05-05 | 2026-05-05 | ISSU01.10, PO SS, ISSU02.10 | 2025-03-31 | 2025-03-31 |  |  | start on or after 2025-03-24 |  |  |  | 1 | SWD |
| PH01MS-1010 |  | Fiber Early Access (FEA) - PH01 | milestone | 0d | 2026-05-05 | 2026-05-05 | PH01MS-1000 | 2025-09-02 | 2025-09-02 |  |  | start on or before 2025-06-23 |  |  |  | 1 |  |
| PH01MS-1020 |  | Network Early Access (NEA) - PH01 | milestone | 0d | 2026-05-05 | 2026-05-05 | ISSU21.30 FF, PH01DH-131 FF, PH01-PH-110 FF, PH01BMS-103 FF, PH01EPMS-103 FF | 2025-08-05 | 2025-08-05 |  |  | finish on or before 2025-07-21 |  |  |  | 1 | NEA |
| PH01MS-1030 |  | Conditional H2C - PH01 | milestone | 0d | 2026-05-05 | 2026-05-05 | ISSU32.10 FF, ISSU29.40 FF, ISSU18.1.40 FF, ISSU17.1.30 FF, ISSU12.30 FF, ISSU12.10 FF, PH01DH-132 FF, PH01MS-1000, PH01BMS-102 FF, PH01MS-1010 SF, PH01ER-117 FF, PH01EPMS-102 FF, PH01MS-1020 FF | 2025-10-04 | 2025-10-04 |  |  | finish on or before 2025-08-08 |  |  | Y | 1 | H2C |
| PH01MS-1040 |  | Conditional PFHO - PH01 | milestone | 0d | 2026-05-05 | 2026-05-05 | ISSU35.40 FF, PH01OF-129 FF, ISSU09.50 FF, ISSU31.40 FF, ISSU30.70 FF, ISSU12.40 FF, PH01OF-131 FF, ISSU28.20 FF, ISSU24.30 FF, PH01OF-128 FF, PH01OF-130 FF, RZ-L2-450 FF, RZ-L2-190 FF, PH01S-102 FF, ISSU20.40 FF, ISSU13.10 FF, ISSU10.10 FF, ISSU04.30 FF, PRMT-1050 FF, PH01MS-1030 FF, PH01OF-125 FF, PH01ER-118 FF, RZ-L2-440 FF, RZ-L2-310 FF, RZ-L2-230 FF, PH01.CX.1010 FF, ISSU39.10 FF | 2025-10-02 | 2025-10-02 |  |  | finish on or before 2025-09-01 |  |  | Y | 1 | PFHO |
| PH01MS-10302 |  | Final H2C - Power Topology - PH01 | milestone | 0d | 2026-06-25 | 2026-06-25 | BTN2-1620 FF, BTN2-1240 FF, ISSU42.10 FF |  |  | -126d | 0d | finish on or before 2026-03-06 |  |  | Y | 1 |  |
| PH01MS-10402 |  | Final PFHO / Substantial Completion - Power Topology - PH01 | milestone | 0d | 2026-07-10 | 2026-07-10 | PH01MS-1040 FF, ISSU10.20 FF, PH01.CX.1000 FF, ISSU11.27 FF |  |  | -88d | 56d | finish on or before 2026-03-30 |  |  | Y | 1 |  |
|  | 2 | **Phase 2 / CR-7 Milestones** |  |  | 2026-05-05 | 2026-07-28 |  |  |  |  |  |  |  |  |  |  |  |
| PH02MS-1000 |  | Build Start Work Date - PH02 | milestone | 0d | 2026-05-05 | 2026-05-05 | PO SS, ISSU02.10 | 2025-04-14 | 2025-04-14 |  |  | start on or after 2025-04-14 |  |  |  | 2 | SWD |
| PH02MS-1020 |  | Network Early Access (NEA) - PH02 | milestone | 0d | 2026-05-05 | 2026-05-05 | ISSU21.40 FF, PH02DH-131 FF, PH02BMS-102 FF, PH02EPMS-102 FF, PH02-PH-110 FF | 2025-09-06 | 2025-09-06 |  |  | finish on or before 2025-07-28 |  |  |  | 2 | NEA |
| PH02MS-1030 |  | Conditional H2C - PH02 | milestone | 0d | 2026-05-05 | 2026-05-05 | ISSU05.30 FF, ISSU29.40 FF, ISSU18.1.40 FF, ISSU12.30 FF, ISSU17.2.40 FF, PH02DH-119 FF, PH02DH-132 FF, PH02BMS-103 FF, PH02EPMS-103 FF, PH02MS-1020 FF, PH02ER-117 FF | 2025-10-07 | 2025-10-07 |  |  | finish on or before 2025-08-15 |  |  | Y | 2 | H2C |
| PH02MS-1040 |  | Conditional PFHO - PH02 | milestone | 0d | 2026-05-05 | 2026-05-05 | PH02ER-118 FF, PH02.CX.1010 FF, PRMT-1060 FF | 2025-12-03 | 2025-12-03 |  |  | finish on or before 2025-09-01 | Calendar 01 - 5 Day w/holidays (No Pats Day) |  | Y | 2 | PFHO |
| PH02MS-10302 |  | Final H2C - Power Topology - PH02 | milestone | 0d | 2026-07-14 | 2026-07-14 | BTN2-1670 FF, BTN2-1330 FF |  |  | -127d | 0d | finish on or before 2026-03-06 |  |  | Y | 2 |  |
| PH02MS-10402 |  | Final PFHO / Substantial Completion- Power Topology - PH02 | milestone | 0d | 2026-07-28 | 2026-07-28 | PH02MS-1040 FF, PH02.CX.1000 FF |  |  | -103d | 41d | finish on or before 2026-03-30 |  |  | Y | 2 |  |
|  | 3 | **Phase 3 / CR-2 Milestones** |  |  | 2026-05-05 | 2026-08-12 |  |  |  |  |  |  |  |  |  |  |  |
| PH03MS-1000 |  | Build Start Work Date - PH03 | milestone | 0d | 2026-05-05 | 2026-05-05 | PO SS | 2025-06-09 | 2025-06-09 |  |  | start on or after 2025-06-09 |  |  |  | 3 | SWD |
| PH03MS-1020 |  | Network Early Access (NEA) - PH03 | milestone | 0d | 2026-05-05 | 2026-05-05 | PH03DH-131 FF, PH03BMS-102 FF, PH03EPMS-102 FF, PH03-PH-110 FF, PH03ER-116 FF | 2025-10-20 | 2025-10-20 |  |  | finish on or before 2025-10-06 |  |  | Y | 3 | NEA |
| PH03MS-1030 |  | Conditional H2C - PH03 | milestone | 0d | 2026-05-05 | 2026-05-05 | ISSU29.40 FF, PH03DH-132 FF, PH03MS-1020 FF, PH03BMS-103 FF, PH03EPMS-103 FF, PH03ER-117 FF | 2025-11-06 | 2025-11-06 |  |  | finish on or before 2025-10-17 |  |  | Y | 3 | H2C |
| PH03MS-1040 |  | Conditional PFHO - PH03 | milestone | 0d | 2026-05-05 | 2026-05-05 | PH03ER-118 FF, RZ-L2-640 FF, RZ-L2-510 FF, RZ-L2-650 FF, RZ-L2-570 FF, RZ-L2-750 FF, RZ-L2-710 FF, PH03.CX.1010 FF, PH03DH-236 FF, PRMT-1070 FF | 2025-12-19 | 2025-12-19 |  |  | finish on or before 2025-11-03 |  |  | Y | 3 | PFHO |
| PH03MS-10302 |  | Final H2C - Power Topology - PH03 | milestone | 0d | 2026-07-29 | 2026-07-29 | BTN2-1630 FF, ISSU18.2.40 FF, BTN2-1380 FF |  |  | -127d | 0d | finish on or before 2026-03-20 |  |  | Y | 3 |  |
| PH03MS-10402 |  | Final PFHO / Substantial Completion - Power Topology - PH03 | milestone | 0d | 2026-08-12 | 2026-08-12 | PH03MS-1040 FF, PH03.CX.1000 FF |  |  | -110d | 28d | finish on or before 2026-04-06 |  |  | Y | 3 |  |

| ID | WBS | Activity | Type | Duration | Start | Finish | Predecessors | Planned start | Planned finish | Total float | Free float | Constraint | Calendar | 05 -GC - Building Phase | 13 -GC - MC (Systems of Work) | 12 - GC - Export_to_Procore |
| --- | --- | --- | --- | --- | --- | --- | --- | --- | --- | --- | --- | --- | --- | --- | --- | --- |
|  | 4 | **Phase 4 / CR-3 Milestones** |  |  | 2026-05-05 | 2026-08-28 |  |  |  |  |  |  |  |  |  |  |
| PH04MS-1000 |  | Build Start Work Date - PH04 | milestone | 0d | 2026-05-05 | 2026-05-05 | PO SS | 2025-06-09 | 2025-06-09 |  |  | start on or after 2025-06-09 |  | 4 | SWD |  |
| PH04MS-1020 |  | Network Early Access (NEA) - PH04 | milestone | 0d | 2026-05-05 | 2026-05-05 | PH04DH-131 FF, PH04BMS-102 FF, PH04EPMS-102 FF, PH04-PH-110 FF, PH04ER-116 FF | 2025-10-27 | 2025-10-27 |  |  | finish on or before 2025-10-08 |  | 4 | NEA | Y |
| PH04MS-1030 |  | Conditional H2C - PH04 | milestone | 0d | 2026-05-05 | 2026-05-05 | ISSU29.40 FF, PH04DH-132 FF, PH04BMS-102 FF, PH04EPMS-102 FF, PH04-PH-110 FF, PH04MS-1020 FF, PH04BMS-103 FF, PH04EPMS-103 FF, PH04ER-117 FF, ISSU37.20 FF | 2025-11-04 | 2025-11-04 |  |  | finish on or before 2025-10-17 |  | 4 | H2C | Y |
| PH04MS-1040 |  | Conditional PFHO - PH04 | milestone | 0d | 2026-05-05 | 2026-05-05 | PRMT-1080 FF, PH04ER-118 FF, RZ-L2-640 FF, RZ-L2-510 FF, RZ-L2-650 FF, RZ-L2-570 FF, PH04.CX.1010 FF, PH04DH-236 FF | 2026-01-16 | 2026-01-16 |  |  | finish on or before 2025-11-03 |  | 4 | PFHO | Y |
| PH04MS-10302 |  | Final H2C - Power Topology - PH04 | milestone | 0d | 2026-08-15 | 2026-08-15 | BTN2-1420 FF, BTN2-1700 FF, ISSU18.2.110 FF |  |  | -127d | 0d | finish on or before 2026-03-20 |  | 4 |  | Y |
| PH04MS-10402 |  | Final PFHO / Substantial Completion - Power Topology - PH04 | milestone | 0d | 2026-08-28 | 2026-08-28 | PH04MS-1040 FF, PH04.CX.1000 FF |  |  | -124d | 14d | finish on or before 2026-04-06 |  | 4 |  | Y |
|  | 5 | **Phase 5 / CR-5 Milestones** |  |  | 2026-05-05 | 2026-08-10 |  |  |  |  |  |  |  |  |  |  |
| PH05MS-1000 |  | Build Start Work Date - PH05 | milestone | 0d | 2026-05-05 | 2026-05-05 | PO SS | 2026-01-05 | 2026-01-05 |  |  | start on or after 2026-01-05 |  | 5 | SWD | Y |
| PH05MS-1020 |  | Network Early Access (NEA) - PH05 | milestone | 0d | 2026-06-01 | 2026-06-01 | PH05DH-131, PH05BMS-102, PH05EPMS-102, PH05ER-116, PH05-PH-230 FF, ISSU46.20 FF |  |  | -6d | 0d |  | MC Calendar 02- OWNER Mondays only(NEA, PFHO) | 5 | NEA | Y |
| PH05MS-1030 |  | H2C - PH05 | milestone | 0d | 2026-07-17 | 2026-07-17 | PH05DH-132 FF, PH05BMS-103 FF, PH05EPMS-103 FF, PH05ER-117 FF, PH05MS-1020 FF, ISSU18.2.30 FF, ISSU18.2.120 FF, ISSU45.30 FF |  |  | -10d | 0d | finish on or before 2026-05-08 | MC Calendar 01- OWNER Fridays only(H2C, PCO) | 5 | H2C | Y |
| PH05MS-1040 |  | PFHO / Substantial Completion - PH05 | milestone | 0d | 2026-08-10 | 2026-08-10 | PRMT-1090 FF, PH05ER-118 FF, PH05.CX.1000 FF, PH05-PH-210 FF, ISSU43.46 FF |  |  | -9d | 6d | finish on or before 2026-06-01 | MC Calendar 02- OWNER Mondays only(NEA, PFHO) | 5 | PFHO | Y |
|  | 6 | **Phase 6 / CR-8 Milestones** |  |  | 2026-05-05 | 2026-08-24 |  |  |  |  |  |  |  |  |  |  |
| PH06MS-1000 |  | Build Start Work Date - PH06 | milestone | 0d | 2026-05-05 | 2026-05-05 | PO SS | 2026-01-06 | 2026-01-06 |  |  | start on or after 2026-01-06 |  | 6 | SWD | Y |
| PH06MS-1020 |  | Network Early Access (NEA) - PH06 | milestone | 0d | 2026-06-15 | 2026-06-15 | PH06DH-131 FF, PH06EPMS-102 FF, PH06ER-116 FF, PH06-PH-220 FF, PH06BMS-102 FF |  |  | -8d | 0d | finish on 2026-06-15 | MC Calendar 02- OWNER Mondays only(NEA, PFHO) | 6 | NEA | Y |
| PH06MS-1030 |  | H2C - PH06 | milestone | 0d | 2026-07-31 | 2026-07-31 | PH06DH-132 FF, PH06BMS-103 FF, PH06EPMS-103 FF, PH06ER-117 FF, PH06MS-1000, PH06MS-1020 FF, ISSU18.2.30 FF, PH06DH-274 FF, ISSU18.2.130 FF, ISSU43.56 FF |  |  | -11d | 0d | finish on or before 2026-05-08 | MC Calendar 01- OWNER Fridays only(H2C, PCO) | 6 | H2C | Y |
| PH06MS-1040 |  | PFHO / Substantial Completion - PH06 | milestone | 0d | 2026-08-24 | 2026-08-24 | PRMT-1100 FF, PH06ER-118 FF, PH06.CX.1000 FF, PH06-PH-210 FF |  |  | -11d | 4d | finish on or before 2026-06-01 | MC Calendar 02- OWNER Mondays only(NEA, PFHO) | 6 | PFHO | Y |
|  | 7 | **Phase 7 / CR-1 Milestones** |  |  | 2026-05-05 | 2026-08-31 |  |  |  |  |  |  |  |  |  |  |
| PH07MS-1000 |  | Build Start Work Date - PH07 | milestone | 0d | 2026-05-05 | 2026-05-05 | PO SS | 2026-03-24 | 2026-03-24 |  |  | start on or after 2026-03-24 |  | 7 | SWD | Y |
| PH07MS-1020 |  | Network Early Access (NEA) - PH07 | milestone | 0d | 2026-07-13 | 2026-07-13 | PH07ER-116 FF, PH07EPMS-102 FF, PH07BMS-102 FF, PH07DH-131 FF |  |  | -4d | 0d | finish on or before 2026-07-06 | MC Calendar 02- OWNER Mondays only(NEA, PFHO) | 7 | NEA | Y |
| PH07MS-1030 |  | H2C - PH07 | milestone | 0d | 2026-08-14 | 2026-08-14 | PH07ER-117 FF, PH07EPMS-103 FF, PH07BMS-103 FF, PH07DH-132 FF, PH07MS-1020 FF, ISSU18.2.30 FF, PH07DH-274 FF, ISSU18.2.140 FF, ISSU43.66 FF |  |  | -6d | 0d | finish on or before 2026-07-17 | MC Calendar 01- OWNER Fridays only(H2C, PCO) | 7 | H2C | Y |
| PH07MS-1040 |  | PFHO / Substantial Completion - PH07 | milestone | 0d | 2026-08-31 | 2026-08-31 | PRMT-1110 FF, PH07ER-118 FF, PH07.CX.1000 FF, PH07-PH-210 FF |  |  | -3d | 3d | finish on or before 2026-08-03 | MC Calendar 02- OWNER Mondays only(NEA, PFHO) | 7 | PFHO | Y |
|  | 8 | **Phase 8 / CR-4 Milestones** |  |  | 2026-05-05 | 2026-09-14 |  |  |  |  |  |  |  |  |  |  |
| PH08MS-1000 |  | Build Start Work Date - PH08 | milestone | 0d | 2026-05-05 | 2026-05-05 | PO SS | 2026-04-06 | 2026-04-06 |  |  | start on or after 2026-04-01 |  | 8 | SWD | Y |
| PH08MS-1020 |  | Network Early Access (NEA) - PH08 | milestone | 0d | 2026-07-27 | 2026-07-27 | PH08DH-131 FF, PH08BMS-102 FF, PH08EPMS-102 FF, PH08ER-116 FF |  |  | -3d | 0d | finish on or before 2026-07-06 | MC Calendar 02- OWNER Mondays only(NEA, PFHO) | 8 | NEA | Y |
| PH08MS-1030 |  | H2C - PH08 | milestone | 0d | 2026-08-28 | 2026-08-28 | PH08DH-132 FF, PH08BMS-103 FF, PH08EPMS-103 FF, PH08ER-117, PH08MS-1020 FF, ISSU18.2.30 FF, PH08DH-274 FF, ISSU18.2.150 FF, ISSU43.76 FF |  |  | -6d | 0d | finish on or before 2026-07-17 | MC Calendar 01- OWNER Fridays only(H2C, PCO) | 8 | H2C | Y |
| PH08MS-1040 |  | PFHO / Substantial Completion - PH08 | milestone | 0d | 2026-09-14 | 2026-09-14 | PRMT-1120 FF, PH08ER-118 FF, PH08.CX.1000 FF, PH08-PH-210 FF, PH01S-106 FF |  |  | -6d | 0d | finish on or before 2026-08-03 | MC Calendar 02- OWNER Mondays only(NEA, PFHO) | 8 | PFHO | Y |

| ID | WBS | Activity | Duration | Start | Finish | Predecessors | Planned start | Planned finish | Calendar | ISSUES | 12 - GC - Export_to_Procore |
| --- | --- | --- | --- | --- | --- | --- | --- | --- | --- | --- | --- |
|  | ISSUES | **Schedule Issues** |  | 2026-05-05 | 2026-08-26 |  |  |  |  |  |  |
|  | 1 | **ISSUE #1 - Delay in Work Order/Funding** |  | 2026-05-05 | 2026-05-05 |  |  |  |  |  |  |
| ISSU01.10 |  | Issue #1 - Delay in Work Order / Funding | 32d | 2026-05-05 | 2026-05-05 | PO SS | 2025-02-03 | 2025-03-11 |  | ISSU01 |  |
|  | 2 | **ISSUE #2 - Delay in Turnover from Core & Shell** |  | 2026-05-05 | 2026-05-05 |  |  |  |  |  |  |
| ISSU02.10 |  | Issue #2 - Delay in Turnover from Core & Shell | 18d | 2026-05-05 | 2026-05-05 | PO SS | 2025-03-03 | 2025-03-22 |  | ISSU02 |  |
|  | 3 | **ISSUE #3 - Delay of Ductwork Shop Drawings** |  | 2026-05-05 | 2026-05-05 |  |  |  |  |  |  |
| ISSU03.10 |  | Issue #3 - Ductwork Shop Drawings Review Delay | 18d | 2026-05-05 | 2026-05-05 | PO SS | 2025-03-03 | 2025-03-22 |  | ISSU03 |  |
| ISSU03.20 |  | Issue #3 - Ductwork Shop Drawings Delay to Fab & Deliver | 18d | 2026-05-05 | 2026-05-05 | ISSU03.10 | 2025-03-03 | 2025-03-22 |  | ISSU03 |  |
|  | 4 | **ISSUE #4 - Drywall & CRAH Delay Due to Exterior Windows Removal** |  | 2026-05-05 | 2026-05-05 |  |  |  |  |  |  |
| ISSU04.10 |  | Issue #4 - Remove Exterior Windows For CRAH & Drywall Framing Material | 35d | 2026-05-05 | 2026-05-05 | PO SS | 2025-03-03 | 2025-04-11 |  | ISSU04 |  |
| ISSU04.20 |  | Issue #4 - CRAH & Framing Material Delivery | 0d | 2026-05-05 | 2026-05-05 | ISSU04.10 | 2025-05-07 | 2025-05-07 |  | ISSU04 |  |
| ISSU04.30 |  | Issue #4 - Reinstall Exterior Windows | 0d | 2026-05-05 | 2026-05-05 | ISSU04.20 | 2025-05-07 | 2025-05-07 |  | ISSU04 |  |
|  | 5 | **ISSUE #5 - Deliver Remaining Parts of Busduct Phase 2 & 3** |  | 2026-05-05 | 2026-05-05 |  |  |  |  |  |  |
| ISSU05.10 |  | Issue #5 - Deliver Remaining Parts of Busduct Phase 2 & 3 | 30d | 2026-05-05 | 2026-05-05 | PH01CFC-105 FF, PO SS | 2025-05-06 | 2025-06-09 |  | ISSU05 | Y |
| ISSU05.20 |  | Issue #5 - Install & Test Bus Duct Phase 2 & 3 | 3d | 2026-05-05 | 2026-05-05 | ISSU05.10 | 2025-10-01 | 2025-10-03 | Calendar 01 - 5 Day w/holidays (No Pats Day) | ISSU05 | Y |
| ISSU05.30 |  | Issue #5 - Energize Downstream Equipment Phase 2 & 3 | 1d | 2026-05-05 | 2026-05-05 | ISSU05.20 | 2025-10-06 | 2025-10-06 | Calendar 06 - 6 Day Work Week w/ Holidays | ISSU05 | Y |
|  | 6 | **ISSUE #6 - Bus Duct Delay Due Removal of Base Building Clashes** |  | 2026-05-05 | 2026-05-05 |  |  |  |  |  |  |
| ISSU06.10 |  | Issue #6 - Bus Duct Delay Due Removal of Base Building Clashes | 30d | 2026-05-05 | 2026-05-05 | PO SS | 2025-05-06 | 2025-06-09 |  | ISSU06 |  |
|  | 7 | **ISSUE #7 - Procuring Lighting Hardware - PH01 - PH04** |  | 2026-05-05 | 2026-05-05 |  |  |  |  |  |  |
| ISSU07.10 |  | Issue #7 - Procuring Lighting Hardware - PH01 - PH04 | 4d | 2026-05-05 | 2026-05-05 | PO SS | 2025-05-06 | 2025-05-09 |  | ISSU07 |  |
|  | 8 | **ISSUE #8 - Bulletin 2 - Power Topology Impact** |  | 2026-05-05 | 2026-08-15 |  |  |  |  |  |  |
|  | 1 | **Bulletin 2 - Coordination** |  | 2026-05-05 | 2026-05-05 |  |  |  |  |  |  |
| BTN2-1000 |  | Bulletin 2 Issuance | 1d | 2026-05-05 | 2026-05-05 | PO SS | 2025-05-06 | 2025-05-06 |  | ISSU08 |  |
| BTN2-1010 |  | OWNER NTP/Price & Proceed Direction | 1d | 2026-05-05 | 2026-05-05 | BTN2-1000 | 2025-05-06 | 2025-05-06 |  | ISSU08 |  |
| BTN2-1020 |  | Final Scan & Revised Revit Model | 13d | 2026-05-05 | 2026-05-05 | BTN2-1010 | 2025-05-06 | 2025-05-20 |  | ISSU08 |  |
| BTN2-1030 |  | Re-Modeling & Re-Coordination Phase 1 | 31d | 2026-05-05 | 2026-05-05 | BTN2-1020 | 2025-05-06 | 2025-06-10 |  | ISSU08 |  |
| BTN2-1040 |  | Re-Modeling & Re-Coordination Phase 2 | 50d | 2026-05-05 | 2026-05-05 | BTN2-1030 | 2025-05-06 | 2025-07-02 |  | ISSU08 |  |
| BTN2-1060 |  | Bulletin 2 Ladder Tray Procurement Phase 1 | 41d | 2026-05-05 | 2026-05-05 | BTN2-1030 | 2025-05-06 | 2025-06-21 |  | ISSU08 |  |
| BTN2-1070 |  | Bulletin 2 Ladder Tray Procurement Phase 2 | 31d | 2026-05-05 | 2026-05-05 | BTN2-1040 FF | 2025-05-15 | 2025-06-19 |  | ISSU08 |  |
| BTN2-1080 |  | Drawing Revision Review & Approval Phase 1 | 26d | 2026-05-05 | 2026-05-05 | BTN2-1030 | 2025-05-06 | 2025-06-04 |  | ISSU08 |  |
| BTN2-1100 |  | Phase 5-8 & Bulletin 2 BusDuct Coordination | 19d | 2026-05-05 | 2026-05-05 | BTN2-1640, BTN2-1080 FF, BTN2-1030 | 2025-05-09 | 2025-05-30 |  | ISSU08 | Y |
| BTN2-1120 |  | Drawing Revision Review & Approval Phase 2 | 13d | 2026-05-05 | 2026-05-05 | BTN2-1040 | 2025-05-15 | 2025-05-29 |  | ISSU08 |  |
| BTN2-1140 |  | Re-Modeling & Re-Coordination Phase 3 | 27d | 2026-05-05 | 2026-05-05 | BTN2-1120 FF, BTN2-1040 | 2025-05-15 | 2025-06-14 |  | ISSU08 |  |
| BTN2-1210 |  | Drawing Revision Review & Approval Phase 3 | 12d | 2026-05-05 | 2026-05-05 | BTN2-1140 | 2025-05-05 | 2025-05-17 |  | ISSU08 |  |
| BTN2-1230 |  | Re-Modeling & Re-Coordination Phase 4 | 25d | 2026-05-05 | 2026-05-05 | BTN2-1210 FF, BTN2-1140 | 2025-06-06 | 2025-07-04 |  | ISSU08 |  |
| BTN2-1310 |  | Drawing Revision Review & Approval Phase 4 | 12d | 2026-05-05 | 2026-05-05 | BTN2-1230 | 2025-07-07 | 2025-07-19 |  | ISSU08 |  |
| BTN2-1320 |  | Modeling & Re-Coordination Phase 5 | 26d | 2026-05-05 | 2026-05-05 | BTN2-1310 FF, BTN2-1230 | 2025-09-11 | 2025-10-10 |  | ISSU08 | Y |
| BTN2-1360 |  | Drawing Review & Approval Phase 5 | 12d | 2026-05-05 | 2026-05-05 | BTN2-1320 | 2025-10-11 | 2025-10-24 |  | ISSU08 | Y |
| BTN2-1370 |  | Modeling & Re-Coordination Phase 6 | 26d | 2026-05-05 | 2026-05-05 | BTN2-1320 | 2025-09-06 | 2025-10-06 |  | ISSU08 | Y |
| BTN2-1400 |  | Drawing Review & Approval Phase 6 | 12d | 2026-05-05 | 2026-05-05 | BTN2-1370 | 2025-08-01 | 2025-08-14 |  | ISSU08 | Y |
| BTN2-1410 |  | Modeling & Re-Coordination Phase 7 | 26d | 2026-05-05 | 2026-05-05 | BTN2-1370 | 2025-09-08 | 2025-10-07 |  | ISSU08 | Y |
| BTN2-1440 |  | Drawing Review & Approval Phase 7 | 12d | 2026-05-05 | 2026-05-05 | BTN2-1410 | 2025-12-23 | 2026-01-05 |  | ISSU08 | Y |
| BTN2-1450 |  | Modeling & Re-Coordination Phase 8 | 26d | 2026-05-05 | 2026-05-05 | BTN2-1410 | 2025-09-06 | 2025-10-06 |  | ISSU08 | Y |
| BTN2-1470 |  | Drawing Review & Approval Phase 8 | 12d | 2026-05-05 | 2026-05-05 | BTN2-1450 | 2025-12-23 | 2026-01-05 |  | ISSU08 | Y |
| BTN2-1640 |  | Phase 5-8 BusDuct Location Scanning | 19d | 2026-05-05 | 2026-05-05 | BTN2-1020 | 2025-05-09 | 2025-05-30 |  | ISSU08 |  |

| ID | WBS | Activity | Duration | Start | Finish | Predecessors | Planned start | Planned finish | Total float | Free float | Expected finish | 12 - GC - Export_to_Procore | ISSUES |
| --- | --- | --- | --- | --- | --- | --- | --- | --- | --- | --- | --- | --- | --- |
|  | 2 | **Bulletin 2 - MSB Harvesting and Feeder Install** |  | 2026-05-05 | 2026-06-12 |  |  |  |  |  |  |  |  |
| BTN2-1050 |  | MSB Harvest & Build new CCS - Phase 1 | 26d | 2026-05-05 | 2026-05-05 | BTN2-1080 FF, BTN2-1010 | 2025-11-12 | 2025-12-11 |  |  |  | Y | ISSU08 |
| BTN2-1130 |  | Phase 1 New CCS to ATS MC Feeders - Supports and Tray Install | 12d | 2026-05-05 | 2026-05-05 | BTN2-1050 | 2025-08-12 | 2025-08-25 |  |  |  | Y | ISSU08 |
| BTN2-1150 |  | MSB Harvest & Build new CCS - Phase 2 | 27d | 2026-05-05 | 2026-05-05 | BTN2-1120 FF, BTN2-1050 FF | 2025-05-15 | 2025-06-14 |  |  |  | Y | ISSU08 |
| BTN2-1190 |  | Phase 1 New CCS to ATS MC Feeders - Pull Feeders | 12d | 2026-05-05 | 2026-05-05 | BTN2-1130 | 2025-09-13 | 2025-09-26 |  |  |  | Y | ISSU08 |
| BTN2-1200 |  | MSB Harvest & Build new CCS - Phase 3 | 26d | 2026-05-05 | 2026-05-05 | BTN2-1210 FF, BTN2-1150 FF | 2025-06-30 | 2025-07-29 |  |  |  | Y | ISSU08 |
| BTN2-1220 |  | Phase 2 New CCS to ATS MC Feeders - Supports and Tray Install | 12d | 2026-05-05 | 2026-05-05 | BTN2-1150 | 2025-08-12 | 2025-08-25 |  |  |  | Y | ISSU08 |
| BTN2-1240 |  | Phase 1 New CCS to ATS MC Feeders - Terminate Feeders | 17d | 2026-05-05 | 2026-05-05 | BTN2-1190 | 2025-11-10 | 2025-11-28 |  |  |  | Y | ISSU08 |
| BTN2-1260 |  | Phase 2 New CCS to ATS MC Feeders - Pull Feeders | 12d | 2026-05-05 | 2026-05-05 | BTN2-1220 | 2025-09-13 | 2025-09-26 |  |  |  | Y | ISSU08 |
| BTN2-1270 |  | MSB Harvest & Build new CCS - Phase 4 | 12d | 2026-05-05 | 2026-05-05 | BTN2-1310 FF, BTN2-1200 FF | 2025-06-30 | 2025-07-12 |  |  |  | Y | ISSU08 |
| BTN2-1280 |  | Phase 3 New CCS to ATS MC Feeders - Supports and Tray Install | 12d | 2026-05-05 | 2026-05-05 | BTN2-1200 | 2025-08-26 | 2025-09-08 |  |  |  | Y | ISSU08 |
| BTN2-1330 |  | Phase 2 New CCS to ATS MC Feeders - Terminate Feeders | 17d | 2026-05-05 | 2026-05-05 | BTN2-1260 | 2025-11-17 | 2025-12-05 |  |  |  | Y | ISSU08 |
| BTN2-1340 |  | Phase 3 New CCS to ATS MC Feeders - Pull Feeders | 12d | 2026-05-05 | 2026-05-05 | BTN2-1280 | 2025-09-27 | 2025-10-10 |  |  |  | Y | ISSU08 |
| BTN2-1350 |  | Phase 4 New CCS to ATS MC Feeders - Supports and Tray Install | 12d | 2026-05-05 | 2026-05-05 | BTN2-1270 | 2025-08-26 | 2025-09-08 |  |  |  | Y | ISSU08 |
| BTN2-1380 |  | Phase 3 New CCS to ATS MC Feeders - Terminate Feeders | 17d | 2026-05-05 | 2026-05-05 | BTN2-1340 | 2025-11-24 | 2025-12-12 |  |  |  | Y | ISSU08 |
| BTN2-1390 |  | Phase 4 New CCS to ATS MC Feeders - Pull Feeders | 12d | 2026-05-05 | 2026-05-05 | BTN2-1350 | 2025-09-27 | 2025-10-10 |  |  |  | Y | ISSU08 |
| BTN2-1420 |  | Phase 4 New CCS to ATS MC Feeders - Terminate Feeders | 17d | 2026-05-05 | 2026-05-05 | BTN2-1390 | 2025-12-01 | 2025-12-19 |  |  |  | Y | ISSU08 |
| BTN2-1460 |  | MSB Harvest & Build New CCS - Phase 5 | 12d | 2026-05-05 | 2026-05-05 | BTN2-1360 | 2026-01-13 | 2026-01-26 |  |  |  | Y | ISSU08 |
| BTN2-1461 |  | Phase 5 New CCS to ATS MC Feeders - Pull Feeders | 12d | 2026-05-05 | 2026-05-05 | BTN2-1462 | 2026-03-20 | 2026-04-02 |  |  |  | Y | ISSU08 |
| BTN2-1462 |  | Phase 5 New CCS to ATS MC Feeders - Supports and Tray Install | 12d | 2026-05-05 | 2026-05-05 | BTN2-1460, ISSU40.10 | 2026-03-06 | 2026-03-19 |  |  |  | Y | ISSU08 |
| BTN2-1463 |  | Phase 5 New CCS to ATS MC Feeders - Terminate Feeders | 17d | 2026-05-05 | 2026-05-05 | BTN2-1461 | 2026-04-14 | 2026-05-02 | -13d | 0d | 2026-05-02 | Y | ISSU08 |
| BTN2-1480 |  | MSB Harvest & Build New CCS - Phase 6 | 12d | 2026-05-05 | 2026-05-05 | BTN2-1400 | 2026-01-13 | 2026-01-26 |  |  |  | Y | ISSU08 |
| BTN2-1481 |  | Phase 6 New CCS to ATS MC Feeders - Pull Feeders | 12d | 2026-05-05 | 2026-05-05 | BTN2-1482 | 2026-04-06 | 2026-04-18 |  |  |  | Y | ISSU08 |
| BTN2-1482 |  | Phase 6 New CCS to ATS MC Feeders - Supports and Tray Install | 12d | 2026-05-05 | 2026-05-05 | BTN2-1480, ISSU40.10 | 2026-03-11 | 2026-03-24 |  |  |  | Y | ISSU08 |
| BTN2-1483 |  | Phase 6 New CCS to ATS MC Feeders - Terminate Feeders | 17d | 2026-05-05 | 2026-05-08 | BTN2-1481 | 2026-04-20 | 2026-05-08 | -11d | 0d | 2026-05-08 | Y | ISSU08 |
| BTN2-1510 |  | MSB Harvest & Build New CCS - Phase 7 | 12d | 2026-05-05 | 2026-05-05 | BTN2-1440, BTN2-1480, ISSU40.10 | 2026-02-27 | 2026-03-12 |  |  |  | Y | ISSU08 |
| BTN2-1511 |  | Phase 7 New CCS to ATS MC Feeders - Pull Feeders | 12d | 2026-05-05 | 2026-05-14 | BTN2-1512 FF | 2026-05-01 | 2026-05-14 | 15d | 0d | 2026-05-14 | Y | ISSU08 |
| BTN2-1512 |  | Phase 7 New CCS to ATS MC Feeders - Supports and Tray Install | 12d | 2026-05-05 | 2026-05-05 | BTN2-1510 | 2026-04-20 | 2026-05-02 | 23d | 8d |  | Y | ISSU08 |
| BTN2-1590 |  | MSB Harvest & Build New CCS - Phase 8 | 12d | 2026-05-05 | 2026-05-05 | BTN2-1470, BTN2-1480, ISSU40.10 | 2026-02-27 | 2026-03-12 |  |  |  | Y | ISSU08 |
| BTN2-1592 |  | Phase 8 New CCS to ATS MC Feeders - Supports and Tray Install | 12d | 2026-05-05 | 2026-05-09 | BTN2-1590 | 2026-04-27 | 2026-05-09 | 20d | 0d | 2026-05-09 | Y | ISSU08 |
| BTN2-1591 |  | Phase 8 New CCS to ATS MC Feeders - Pull Feeders | 12d | 2026-05-11 | 2026-05-23 | BTN2-1592 |  |  | 20d | 0d |  | Y | ISSU08 |
| BTN2-1513 |  | Phase 7 New CCS to ATS MC Feeders - Terminate Feeders | 17d | 2026-05-15 | 2026-06-03 | BTN2-1511 |  |  | 15d | 51d |  | Y | ISSU08 |
| BTN2-1593 |  | Phase 8 New CCS to ATS MC Feeders - Terminate Feeders | 17d | 2026-05-25 | 2026-06-12 | BTN2-1591 |  |  | 20d | 56d |  | Y | ISSU08 |

| ID | WBS | Activity | Type | Duration | Start | Finish | Predecessors | Planned start | Planned finish | Total float | Free float | Expected finish | Calendar | 12 - GC - Export_to_Procore | ISSUES |
| --- | --- | --- | --- | --- | --- | --- | --- | --- | --- | --- | --- | --- | --- | --- | --- |
|  | 3 | **Bulletin 2 - BusDuct Fabricate & Deliver** |  |  | 2026-05-05 | 2026-05-05 |  |  |  |  |  |  |  |  |  |
| BTN2-1180 |  | New BusDuct Submittal from Vendor (4 weeks after coordination complete) |  | 24d | 2026-05-05 | 2026-05-05 | BTN2-1100 | 2025-10-11 | 2025-11-07 |  |  |  |  | Y | ISSU08 |
| BTN2-1250 |  | New BusDuct Submittal Approval |  | 1d | 2026-05-05 | 2026-05-05 | BTN2-1180 FF | 2025-10-07 | 2025-10-07 |  |  |  |  | Y | ISSU08 |
| BTN2-1290 |  | New BusDuct Release |  | 1d | 2026-05-05 | 2026-05-05 | BTN2-1250 | 2025-10-08 | 2025-10-08 |  |  |  |  | Y | ISSU08 |
| BTN2-1300 |  | BusDuct Lead Time |  | 60d | 2026-05-05 | 2026-05-05 | BTN2-1290 | 2025-10-09 | 2025-12-17 |  |  |  |  | Y | ISSU08 |
| BTN2-1430 |  | Receive New BusDuct |  | 2d | 2026-05-05 | 2026-05-05 | BTN2-1300 | 2026-01-21 | 2026-01-22 |  |  |  |  | Y | ISSU08 |
|  | 4 | **Bulletin 2 - CCS Incoming Feeder Sections Fabricate & Deliver** |  |  | 2026-05-05 | 2026-05-05 |  |  |  |  |  |  |  |  |  |
| BTN2-1090 |  | New CCS Submittal from Vendor |  | 1d | 2026-05-05 | 2026-05-05 | BTN2-1100 SS | 2025-05-09 | 2025-05-09 |  |  |  |  |  | ISSU08 |
| BTN2-1110 |  | New CCS Submittal Approval |  | 12d | 2026-05-05 | 2026-05-05 | BTN2-1090 | 2025-06-10 | 2025-06-23 |  |  |  |  |  | ISSU08 |
| BTN2-1160 |  | New CCS Release |  | 1d | 2026-05-05 | 2026-05-05 | BTN2-1110 | 2025-06-10 | 2025-06-10 |  |  |  |  |  | ISSU08 |
| BTN2-1170 |  | CCS Lead Time |  | 192d | 2026-05-05 | 2026-05-05 | BTN2-1160 | 2025-06-10 | 2026-01-19 |  |  |  |  | Y | ISSU08 |
| BTN2-1490 |  | Receive New CCS Main Sections | milestone | 0d | 2026-05-05 | 2026-05-05 | BTN2-1170 FF | 2026-01-21 | 2026-01-21 |  |  |  |  | Y | ISSU08 |
|  | 5 | **Phase 1 - 4 Completion and Commissioning** |  |  | 2026-05-05 | 2026-08-15 |  |  |  |  |  |  |  |  |  |
| BTN2-1499 |  | Phase 01-04 Busduct Missing Link Procurement |  | 18d | 2026-05-05 | 2026-05-05 | BTN2-1430, ISSU42.20 SS | 2026-01-29 | 2026-02-18 |  |  |  | Calendar 07 - 6 Day Work Week w/o holidays - Mon-Sat |  |  |
| BTN2-1500 |  | Phase 1 & 2 New CCS Completion and BusDuct Connection |  | 18d | 2026-05-05 | 2026-05-05 | BTN2-1430, BTN2-1490, BTN2-1499 FF, ISSU42.20 FF | 2026-01-29 | 2026-02-18 | -128d | 0d | 2026-02-18 |  | Y | ISSU08 |
| BTN2-1520 |  | Phase 1 & 2 BusDuct NETA Test |  | 2d | 2026-05-05 | 2026-05-06 | BTN2-1500 |  |  | -128d | 0d |  |  | Y | ISSU08 |
| BTN2-1530 |  | Phase 3 & 4 New CCS Completion and BusDuct Connection |  | 18d | 2026-05-05 | 2026-05-05 | BTN2-1500 FF | 2026-02-05 | 2026-02-25 | -73d | 0d | 2026-02-25 |  | Y | ISSU08 |
| BTN2-1560 |  | Phase 3 & 4 BusDuct NETA Test |  | 2d | 2026-05-05 | 2026-05-06 | BTN2-1530 |  |  | -73d | 0d |  |  | Y | ISSU08 |
| BTN2-1540 |  | Phase 1 New CCS Startup |  | 8d | 2026-05-07 | 2026-05-15 | BTN2-1520 |  |  | -128d | 1d |  |  | Y | ISSU08 |
| BTN2-1570 |  | Phase 3 New CCS Startup |  | 8d | 2026-05-07 | 2026-05-15 | BTN2-1560 |  |  | -73d | 1d |  |  | Y | ISSU08 |
| BTN2-1650 |  | Phase 2 New CCS Startup |  | 8d | 2026-05-07 | 2026-05-15 | BTN2-1520 |  |  | -87d | 11d |  |  | Y | ISSU08 |
| BTN2-1680 |  | Phase 4 New CCS Startup |  | 8d | 2026-05-07 | 2026-05-15 | BTN2-1560 |  |  | -57d | 11d |  |  | Y | ISSU08 |
| BTN2-1550 |  | Phase 1 Gallery ATS Startup |  | 8d | 2026-05-18 | 2026-05-28 | BTN2-1540 |  |  | -103d | 0d |  | Calendar 01 - 5 Day w/holidays (No Pats Day) | Y | ISSU08 |
| BTN2-1580 |  | Phase 3 Gallery ATS Startup |  | 8d | 2026-05-18 | 2026-05-28 | BTN2-1570 |  |  | -61d | 0d |  | Calendar 01 - 5 Day w/holidays (No Pats Day) | Y | ISSU08 |
| BTN2-1660 |  | Phase 2 Gallery ATS Startup |  | 8d | 2026-05-29 | 2026-06-09 | BTN2-1650, BTN2-1550 |  |  | -80d | 24d |  | Calendar 01 - 5 Day w/holidays (No Pats Day) | Y | ISSU08 |
| BTN2-1690 |  | Phase 4 Gallery ATS Startup |  | 8d | 2026-05-29 | 2026-06-09 | BTN2-1680, BTN2-1580 |  |  | -56d | 47d |  | Calendar 01 - 5 Day w/holidays (No Pats Day) | Y | ISSU08 |
| BTN2-1710 |  | Phase 1 Bulletin 3 RPP Startup |  | 5d | 2026-05-29 | 2026-06-04 | BTN2-1550 |  |  | -103d | 0d |  | Calendar 01 - 5 Day w/holidays (No Pats Day) | Y | ISSU08 |
| BTN2-1620 |  | Phase 1 Load Bank Mobilization |  | 6d | 2026-06-05 | 2026-06-11 | BTN2-1550, BTN2-1710 |  |  | -127d | 0d |  |  |  | ISSU08 |
| BTN2-1670 |  | Phase 2 Load Bank Mobilization |  | 3d | 2026-07-11 | 2026-07-14 | BTN2-1660 FF, PH01.CX.1000 |  |  | -127d | 0d |  | Calendar 07 - 6 Day Work Week w/o holidays - Mon-Sat |  | ISSU08 |
| BTN2-1630 |  | Phase 3 Load Bank Mobilization |  | 1d | 2026-07-29 | 2026-07-29 | BTN2-1580 FF, PH02.CX.1000 |  |  | -127d | 0d |  | Calendar 07 - 6 Day Work Week w/o holidays - Mon-Sat |  | ISSU08 |
| BTN2-1700 |  | Phase 4 Load Bank Mobilization |  | 3d | 2026-08-13 | 2026-08-15 | BTN2-1690 FF, PH03.CX.1000 |  |  | -127d | 0d |  | Calendar 07 - 6 Day Work Week w/o holidays - Mon-Sat |  | ISSU08 |

| ID | WBS | Activity | Duration | Start | Finish | Predecessors | Planned start | Planned finish | Calendar | ISSUES | 12 - GC - Export_to_Procore |
| --- | --- | --- | --- | --- | --- | --- | --- | --- | --- | --- | --- |
|  | 9 | **ISSUE #9 - RFI#63 Wood Slat Ceiling** |  | 2026-05-05 | 2026-05-05 |  |  |  |  |  |  |
| ISSU09.20 |  | Issue #9 - RFI#63 - Scope Clarification | 76d | 2026-05-05 | 2026-05-05 | PH01MS-1000 SS | 2025-03-25 | 2025-07-10 | Calendar 01 - 5 Day w/holidays (No Pats Day) | ISSU09 |  |
| ISSU09.30 |  | Issue #9 - RFI#63 - Submittal & Approval | 9d | 2026-05-05 | 2026-05-05 | ISSU09.20 | 2025-07-10 | 2025-07-22 | Calendar 01 - 5 Day w/holidays (No Pats Day) | ISSU09 |  |
| ISSU09.40 |  | Issue #9 - RFI#63 - Procurement & Delivery of Wood Slat Ceiling | 44d | 2026-05-05 | 2026-05-05 | ISSU09.30 | 2025-07-22 | 2025-09-22 | Calendar 01 - 5 Day w/holidays (No Pats Day) | ISSU09 |  |
| ISSU09.50 |  | Issue #9 - RFI#63 - Material Installation | 10d | 2026-05-05 | 2026-05-05 | ISSU09.40 | 2025-09-15 | 2025-09-26 | Calendar 01 - 5 Day w/holidays (No Pats Day) | ISSU09 |  |
|  | 10 | **ISSUE #10 - RFI#148 - Guard Booth Underground Design Details & Location** |  | 2026-05-05 | 2026-05-05 |  |  |  |  |  |  |
| ISSU10.10 |  | Issue #10 - RFI#148 - Guard Booth Underground Design Details & Location | 100d | 2026-05-05 | 2026-05-05 | PO SS | 2025-06-03 | 2025-09-26 |  | ISSU10 |  |
| ISSU10.20 |  | Issue #10 - RFI#148 - Concrete Subcontracting | 46d | 2026-05-05 | 2026-05-05 | ISSU10.10 | 2025-05-29 | 2025-08-01 | Calendar 01 - 5 Day w/holidays (No Pats Day) | ISSU10 | Y |
|  | 11 | **ISSUE #11 - RFI#108 - Cable Tray Penetration at Penthouse Electrical Room** |  | 2026-05-05 | 2026-05-05 |  |  |  |  |  |  |
| ISSU11.10 |  | Issue #11 - RFI-108 - Cable Tray Penetration at Penthouse Electrical Room | 60d | 2026-05-05 | 2026-05-05 | PO SS | 2025-06-03 | 2025-08-11 |  | ISSU11 |  |
| ISSU11.15 |  | Issue #11 - RFI-108 - Pricing, Procurement, and Execute CO - East Side | 30d | 2026-05-05 | 2026-05-05 | ISSU11.10 | 2025-07-16 | 2025-08-26 | Calendar 01 - 5 Day w/holidays (No Pats Day) | ISSU11 | Y |
| ISSU11.25 |  | Issue #11 - RFI-108 - Contracting - East Side | 36d | 2026-05-05 | 2026-05-05 | ISSU11.15 | 2025-10-17 | 2025-12-09 | Calendar 01 - 5 Day w/holidays (No Pats Day) | ISSU11 |  |
| ISSU11.26 |  | Issue #11 - RFI-108 - Field Measure & Fabrication - East Side | 20d | 2026-05-05 | 2026-05-05 | ISSU11.25 | 2025-12-10 | 2026-01-08 | Calendar 01 - 5 Day w/holidays (No Pats Day) | ISSU11 |  |
| ISSU11.27 |  | Issue #11 - RFI-108 - Rebar Forming and Infills - East Side | 30d | 2026-05-05 | 2026-05-05 | ISSU11.26 | 2026-02-24 | 2026-04-06 | Calendar 01 - 5 Day w/holidays (No Pats Day) | ISSU11 |  |
|  | 12 | **ISSUE #12 - RFI#166 Updated Whip Testing Requirements** |  | 2026-05-05 | 2026-05-05 |  |  |  |  |  |  |
| ISSU12.10 |  | Issue #12 - RFI-166 - Updated Whip Testing Requirements Pricing | 10d | 2026-05-05 | 2026-05-05 | PO SS | 2025-07-23 | 2025-08-05 | Calendar 01 - 5 Day w/holidays (No Pats Day) | ISSU12 |  |
| ISSU12.20 |  | Issue #12 - RFI-166 RPP Whip - OWNER Review and Issuance of Work Order | 20d | 2026-05-05 | 2026-05-05 | ISSU12.10 | 2025-08-08 | 2025-09-05 | Calendar 01 - 5 Day w/holidays (No Pats Day) | ISSU12 |  |
| ISSU12.30 |  | Issue #12 - RFI-166 - Material Procurement | 10d | 2026-05-05 | 2026-05-05 | ISSU12.20 | 2025-09-02 | 2025-09-15 | Calendar 01 - 5 Day w/holidays (No Pats Day) | ISSU12 |  |
| ISSU12.40 |  | Issue #12 - RPP Whip Testing PH01 | 10d | 2026-05-05 | 2026-05-05 | ISSU12.30 | 2025-09-11 | 2025-09-24 | Calendar 01 - 5 Day w/holidays (No Pats Day) | ISSU12 |  |
| ISSU12.50 |  | Issue #12 - RPP Whip Testing PH02 | 10d | 2026-05-05 | 2026-05-05 | ISSU12.30 | 2025-10-20 | 2025-10-31 | Calendar 01 - 5 Day w/holidays (No Pats Day) | ISSU12 | Y |
| ISSU12.60 |  | Issue #12 - RPP Whip Testing PH03 | 10d | 2026-05-05 | 2026-05-05 | ISSU12.50, ISSU12.40, ISSU12.30 | 2025-12-02 | 2025-12-15 | Calendar 01 - 5 Day w/holidays (No Pats Day) | ISSU12 | Y |
| ISSU12.70 |  | Issue #12 - RPP Whip Testing PH04 | 10d | 2026-05-05 | 2026-05-05 | ISSU12.50, ISSU12.40, ISSU12.30, ISSU12.60 | 2025-12-16 | 2025-12-30 | Calendar 01 - 5 Day w/holidays (No Pats Day) | ISSU12 | Y |
|  | 13 | **ISSUE #13 - RFI#64 Office Area's Shade Pockets** |  | 2026-05-05 | 2026-05-05 |  |  |  |  |  |  |
| ISSU13.10 |  | Issue #13 - RFI-64 - Office Area's Shade Pockets | 80d | 2026-05-05 | 2026-05-05 | PO SS | 2025-06-17 | 2025-09-17 |  | ISSU13 |  |
| ISSU13.20 |  | Issue #13 - Upper Pocket Framing Office Area's Shade Pockets | 10d | 2026-05-05 | 2026-05-05 | ISSU13.10 | 2025-07-22 | 2025-08-01 |  | ISSU13 |  |
| ISSU13.21 |  | Issue #13 - Upper Pocket Hang Drywall Office Area's Shade Pockets | 5d | 2026-05-05 | 2026-05-05 | ISSU13.30 | 2025-08-12 | 2025-08-16 |  | ISSU13 |  |
| ISSU13.22 |  | Issue #13 - Upper Pocket Prime & Paint Office Area's Shade Pockets | 5d | 2026-05-05 | 2026-05-05 | ISSU13.40 | 2025-07-31 | 2025-08-05 |  | ISSU13 |  |
| ISSU13.30 |  | Issue #13 - MEP Rough-in Office Area's Shade Pockets | 5d | 2026-05-05 | 2026-05-05 | ISSU13.20 FF | 2025-07-22 | 2025-07-26 |  | ISSU13 |  |
| ISSU13.40 |  | Issue #13 - Lower Pocket Framing Office Area's Shade Pockets | 5d | 2026-05-05 | 2026-05-05 | ISSU13.30 | 2025-07-28 | 2025-08-01 |  | ISSU13 |  |
| ISSU13.50 |  | Issue #13 - Hang & Finish Drywall Office Area's Shade Pockets | 7d | 2026-05-05 | 2026-05-05 | ISSU13.40 | 2025-08-05 | 2025-08-12 |  | ISSU13 |  |
| ISSU13.60 |  | Issue #13 - Install Window Shade Office Area's Shade Pockets | 3d | 2026-05-05 | 2026-05-05 | ISSU13.21, ISSU13.22 | 2025-08-26 | 2025-08-28 |  | ISSU13 |  |
| ISSU13.70 |  | Issue #13 - Prime & Paint Office Area's Shade Pockets | 5d | 2026-05-05 | 2026-05-05 | ISSU13.22, ISSU13.50 | 2025-08-13 | 2025-08-18 |  | ISSU13 |  |
| ISSU13.80 |  | Issue #13 - Install Ceiling Grid Office Area's Shade Pockets | 5d | 2026-05-05 | 2026-05-05 | ISSU13.60, ISSU13.70 FF | 2025-09-05 | 2025-09-10 |  | ISSU13 |  |

| ID | WBS | Activity | Duration | Start | Finish | Predecessors | Planned start | Planned finish | Calendar | ISSUES | 12 - GC - Export_to_Procore |
| --- | --- | --- | --- | --- | --- | --- | --- | --- | --- | --- | --- |
|  | 14 | **ISSUE #14 - AHJ Review of Architectural Bulletin 2 DWG** |  | 2026-05-05 | 2026-05-05 |  |  |  |  |  |  |
| ISSU14.10 |  | Issue#14: AHJ Review of Architectural Bulletin 2 DWG | 90d | 2026-05-05 | 2026-05-05 | PO SS | 2025-06-17 | 2025-09-29 |  | ISSU14 |  |
| ISSU14.20 |  | Issue#14: Building Electrical Room As Per Approved Bulletin 2 DWG | 30d | 2026-05-05 | 2026-05-05 | ISSU14.10 | 2025-06-28 | 2025-08-01 |  | ISSU14 |  |
|  | 15 | **ISSUE #15 - RFI#104 - Added CP Panels** |  | 2026-05-05 | 2026-05-05 |  |  |  |  |  |  |
| ISSU15.10 |  | Issue #15: RFI#104 Added CP Panels | 58d | 2026-05-05 | 2026-05-05 | PO SS | 2025-05-30 | 2025-08-20 | Calendar 01 - 5 Day w/holidays (No Pats Day) | ISSU15 |  |
|  | 17 | **ISSUE #17 - Missing Gallery SEL Relays** |  | 2026-05-05 | 2026-05-05 |  |  |  |  |  |  |
|  | 1 | **ISSUE #17.1 - MOXA Panel PH01** |  | 2026-05-05 | 2026-05-05 |  |  |  |  |  |  |
| ISSU17.1.10 |  | Issue #17.1 - OWNER MOXA Material Procurement | 9d | 2026-05-05 | 2026-05-05 | PH01MS-1000 SS | 2025-08-28 | 2025-09-10 | Calendar 01 - 5 Day w/holidays (No Pats Day) | ISSU17 |  |
| ISSU17.1.20 |  | Issue #17.1 - MOXA Cabinet Install | 5d | 2026-05-05 | 2026-05-05 | ISSU17.1.10 | 2025-09-12 | 2025-09-18 | Calendar 01 - 5 Day w/holidays (No Pats Day) | ISSU17 |  |
| ISSU17.1.30 |  | Issue #17.1 - MOXA Cabinet Programming by OWNER | 1d | 2026-05-05 | 2026-05-05 | ISSU17.1.20 | 2025-09-19 | 2025-09-19 | Calendar 01 - 5 Day w/holidays (No Pats Day) | ISSU17 |  |
|  | 2 | **ISSUE #17.2 - Missing Gallery SEL Relays PH02-08** |  | 2026-05-05 | 2026-05-05 |  |  |  |  |  |  |
| ISSU17.2.10 |  | Issue #17.2 - SEL Relays Receiving Pricing for the missing SEL Relays | 10d | 2026-05-05 | 2026-05-05 | PO SS | 2025-07-29 | 2025-08-11 | Calendar 01 - 5 Day w/holidays (No Pats Day) | ISSU17 |  |
| ISSU17.2.20 |  | Issue #17.2 - SEL Relays OWNER Review and Issuance of Work Order | 15d | 2026-05-05 | 2026-05-05 | ISSU17.2.10 | 2025-08-22 | 2025-09-12 | Calendar 01 - 5 Day w/holidays (No Pats Day) | ISSU17 |  |
| ISSU17.2.30 |  | Issue #17.2 - SEL Relays Material Procurement | 30d | 2026-05-05 | 2026-05-05 | ISSU17.2.20 | 2025-08-26 | 2025-10-07 | Calendar 01 - 5 Day w/holidays (No Pats Day) | ISSU17 | Y |
| ISSU17.2.40 |  | Issue #17.2 - SEL Programming by OWNER | 1d | 2026-05-05 | 2026-05-05 | ISSU17.2.50 | 2025-10-06 | 2025-10-06 | Calendar 01 - 5 Day w/holidays (No Pats Day) | ISSU17 | Y |
| ISSU17.2.50 |  | Issue #17.2 - Install SEL Relays Phase 2 | 5d | 2026-05-05 | 2026-05-05 | ISSU17.2.30 | 2025-10-01 | 2025-10-07 | Calendar 01 - 5 Day w/holidays (No Pats Day) | ISSU17 | Y |
|  | 18 | **ISSUE #18 - Juniper Switches** |  | 2026-05-05 | 2026-07-09 |  |  |  |  |  |  |
|  | 1 | **ISSUE #18.1 - Juniper Switches PH01-02** |  | 2026-05-05 | 2026-05-05 |  |  |  |  |  |  |
| ISSU18.1.10 |  | Issue #18.1 - Pricing Added Juniper Switches | 10d | 2026-05-05 | 2026-05-05 | PH01MS-1000 SS | 2025-07-25 | 2025-08-07 | Calendar 01 - 5 Day w/holidays (No Pats Day) | ISSU18 |  |
| ISSU18.1.20 |  | Issue #18.1 - Juniper Switches OWNER Review and Issuance of Work Order | 20d | 2026-05-05 | 2026-05-05 | ISSU18.1.10 | 2025-08-22 | 2025-09-19 | Calendar 01 - 5 Day w/holidays (No Pats Day) | ISSU18 |  |
| ISSU18.1.25 |  | Issue #18.1 - Juniper Switches RFI#261 Power Modification Response | 10d | 2026-05-05 | 2026-05-05 | ISSU18.1.20 | 2025-08-28 | 2025-09-11 | Calendar 01 - 5 Day w/holidays (No Pats Day) | ISSU18 |  |
| ISSU18.1.26 |  | Issue #18.1 - Juniper Switches RFI#261 Implementation | 2d | 2026-05-05 | 2026-05-05 | ISSU18.1.25 | 2025-09-11 | 2025-09-12 | Calendar 01 - 5 Day w/holidays (No Pats Day) | ISSU18 |  |
| ISSU18.1.30 |  | Issue #18.1 - Juniper Switches Material Procurement by OWNER | 15d | 2026-05-05 | 2026-05-05 | ISSU18.1.10 SS | 2025-07-25 | 2025-08-14 | Calendar 01 - 5 Day w/holidays (No Pats Day) | ISSU18 |  |
| ISSU18.1.40 |  | Issue #18.1 - Juniper Switches Programming | 5d | 2026-05-05 | 2026-05-05 | ISSU18.1.26 FF, ISSU18.1.50, ISSU18.1.30, ISSU18.1.20 | 2025-09-11 | 2025-09-17 | Calendar 01 - 5 Day w/holidays (No Pats Day) | ISSU18 |  |
| ISSU18.1.50 |  | Issue #18.1 - Juniper Switches Install | 4d | 2026-05-05 | 2026-05-05 | ISSU18.1.30 | 2025-09-02 | 2025-09-05 | Calendar 01 - 5 Day w/holidays (No Pats Day) | ISSU18 |  |

| ID | WBS | Activity | Duration | Start | Finish | Predecessors | Planned start | Planned finish | Total float | Free float | Calendar | ISSUES | 12 - GC - Export_to_Procore |
| --- | --- | --- | --- | --- | --- | --- | --- | --- | --- | --- | --- | --- | --- |
|  | 2 | **ISSUE #18.2 - Juniper Switches PH03-08** |  | 2026-05-05 | 2026-07-09 |  |  |  |  |  |  |  |  |
| ISSU18.2.10 |  | Issue #18.2 - Juniper Switches Pricing Added Juniper Switches | 10d | 2026-05-05 | 2026-05-05 | PH03MS-1000 SS | 2025-08-06 | 2025-08-19 |  |  | Calendar 01 - 5 Day w/holidays (No Pats Day) | ISSU18 |  |
| ISSU18.2.110 |  | Issue #18.2 - Juniper Switches Programming by OWNER - PH04 | 4d | 2026-05-05 | 2026-05-05 | ISSU18.2.60 | 2025-10-23 | 2025-10-28 |  |  | Calendar 01 - 5 Day w/holidays (No Pats Day) | ISSU18 | Y |
| ISSU18.2.120 |  | Issue #18.2 - Juniper Switches Programming by OWNER - PH05 | 4d | 2026-05-05 | 2026-05-08 | ISSU18.2.70 |  |  | -5d | 47d | Calendar 01 - 5 Day w/holidays (No Pats Day) | ISSU18 | Y |
| ISSU18.2.20 |  | Issue #18.2 - Juniper Switches OWNER Review and Issuance of Work Order | 20d | 2026-05-05 | 2026-05-05 | ISSU18.2.10 | 2025-08-22 | 2025-09-19 |  |  | Calendar 01 - 5 Day w/holidays (No Pats Day) | ISSU18 |  |
| ISSU18.2.25 |  | Issue #18.2 - Juniper Switches Material Procurement PH03-04 | 1d | 2026-05-05 | 2026-05-05 | ISSU18.2.20 | 2025-09-30 | 2025-09-30 |  |  | Calendar 01 - 5 Day w/holidays (No Pats Day) | ISSU18 | Y |
| ISSU18.2.30 |  | Issue #18.2 - Juniper Switches Material Procurement PH05-08 | 60d | 2026-05-05 | 2026-05-05 | ISSU18.2.20 | 2025-09-30 | 2025-12-26 |  |  | Calendar 01 - 5 Day w/holidays (No Pats Day) | ISSU18 | Y |
| ISSU18.2.40 |  | Issue #18.2 - Juniper Switches Programming by OWNER - PH03 | 4d | 2026-05-05 | 2026-05-05 | ISSU18.2.20, ISSU18.2.50 | 2025-10-16 | 2025-10-21 |  |  | Calendar 01 - 5 Day w/holidays (No Pats Day) | ISSU18 | Y |
| ISSU18.2.50 |  | Issue #18.2 - Juniper Switches Install - PH03 | 1d | 2026-05-05 | 2026-05-05 | ISSU18.2.25, PH01EPMS-103 | 2025-10-15 | 2025-10-15 |  |  | Calendar 01 - 5 Day w/holidays (No Pats Day) | ISSU18 | Y |
| ISSU18.2.60 |  | Issue #18.2 - Juniper Switches Install - PH04 | 1d | 2026-05-05 | 2026-05-05 | PH04EPMS-102, ISSU18.2.25 | 2025-10-16 | 2025-10-16 |  |  | Calendar 01 - 5 Day w/holidays (No Pats Day) | ISSU18 | Y |
| ISSU18.2.70 |  | Issue #18.2 - Juniper Switches Install - PH05 | 1d | 2026-05-05 | 2026-05-05 | PH05EPMS-102, ISSU18.2.30 | 2026-05-01 | 2026-05-01 |  |  | Calendar 01 - 5 Day w/holidays (No Pats Day) | ISSU18 | Y |
| ISSU18.2.80 |  | Issue #18.2 - Juniper Switches Install - PH06 | 1d | 2026-05-26 | 2026-05-26 | PH06EPMS-102, ISSU18.2.30 |  |  | -15d | 0d | Calendar 01 - 5 Day w/holidays (No Pats Day) | ISSU18 | Y |
| ISSU18.2.130 |  | Issue #18.2 - Juniper Switches Programming by OWNER - PH06 | 4d | 2026-05-27 | 2026-06-01 | ISSU18.2.80 |  |  | -15d | 42d | Calendar 01 - 5 Day w/holidays (No Pats Day) | ISSU18 | Y |
| ISSU18.2.90 |  | Issue #18.2 - Juniper Switches Install - PH07 | 1d | 2026-06-11 | 2026-06-11 | PH07EPMS-102, ISSU18.2.30 |  |  | 11d | 0d | Calendar 01 - 5 Day w/holidays (No Pats Day) | ISSU18 | Y |
| ISSU18.2.140 |  | Issue #18.2 - Juniper Switches Programming by OWNER - PH07 | 4d | 2026-06-12 | 2026-06-17 | ISSU18.2.90 |  |  | 11d | 41d | Calendar 01 - 5 Day w/holidays (No Pats Day) | ISSU18 | Y |
| ISSU18.2.100 |  | Issue #18.2 - Juniper Switches Install - PH08 | 1d | 2026-07-02 | 2026-07-02 | PH08EPMS-102, ISSU18.2.30 |  |  | 6d | 0d | Calendar 01 - 5 Day w/holidays (No Pats Day) | ISSU18 | Y |
| ISSU18.2.150 |  | Issue #18.2 - Juniper Switches Programming by OWNER - PH08 | 4d | 2026-07-06 | 2026-07-09 | ISSU18.2.100 |  |  | 6d | 36d | Calendar 01 - 5 Day w/holidays (No Pats Day) | ISSU18 | Y |
|  | 19 | **ISSUE #19 - Building Chiller System Filtration** |  | 2026-05-05 | 2026-05-05 |  |  |  |  |  |  |  |  |
| ISSU19.10 |  | Issue #19 - Building Chiller System Filtration | 18d | 2026-05-05 | 2026-05-05 | PO SS | 2025-07-29 | 2025-08-21 |  |  | Calendar 01 - 5 Day w/holidays (No Pats Day) | ISSU19 |  |
| ISSU19.20 |  | Issue #19 - Building Chiller System Filtration - Basebuild IST Completion | 9d | 2026-05-05 | 2026-05-05 | ISSU19.10 | 2025-08-11 | 2025-08-21 |  |  | Calendar 01 - 5 Day w/holidays (No Pats Day) | ISSU19 |  |
|  | 20 | **ISSUE #20 - RFI#200 - MDF/DECOM Power Requirements** |  | 2026-05-05 | 2026-05-05 |  |  |  |  |  |  |  |  |
| ISSU20.10 |  | Issue #20 - RFI#200 - Pricing RFI | 10d | 2026-05-05 | 2026-05-05 | PO SS | 2025-07-11 | 2025-07-24 |  |  | Calendar 01 - 5 Day w/holidays (No Pats Day) | ISSU20 |  |
| ISSU20.20 |  | Issue #20 - RFI#200 - OWNER Review & Issuance of Work Order | 15d | 2026-05-05 | 2026-05-05 | ISSU20.10 | 2025-08-04 | 2025-08-22 |  |  | Calendar 01 - 5 Day w/holidays (No Pats Day) | ISSU20 |  |
| ISSU20.30 |  | Issue #20 - RFI#200 - Procurement | 10d | 2026-05-05 | 2026-05-05 | ISSU20.20 | 2025-09-11 | 2025-09-24 |  |  | Calendar 01 - 5 Day w/holidays (No Pats Day) | ISSU20 |  |
| ISSU20.40 |  | Issue #20 - RFI#200 - Install | 10d | 2026-05-05 | 2026-05-05 | ISSU20.30 | 2025-09-25 | 2025-10-08 |  |  | Calendar 01 - 5 Day w/holidays (No Pats Day) | ISSU20 |  |

| ID | WBS | Activity | Duration | Start | Finish | Predecessors | Planned start | Planned finish | Total float | Free float | Expected finish | Calendar | ISSUES | 12 - GC - Export_to_Procore |
| --- | --- | --- | --- | --- | --- | --- | --- | --- | --- | --- | --- | --- | --- | --- |
|  | 21 | **ISSUE #21 - RFI#178 - Redefine Perfect Positioning (PP)** |  | 2026-05-05 | 2026-05-05 |  |  |  |  |  |  |  |  |  |
| ISSU21.10 |  | Issue #21 - RFI#178 - Redefine Perfect Positioning (PP) | 5d | 2026-05-05 | 2026-05-05 | ISSU21.20 | 2025-07-28 | 2025-08-01 |  |  |  | Calendar 01 - 5 Day w/holidays (No Pats Day) | ISSU21 |  |
| ISSU21.20 |  | Issue #21 - RFI#178 - Response | 1d | 2026-05-05 | 2026-05-05 | PO SS | 2025-06-18 | 2025-06-18 |  |  |  | Calendar 01 - 5 Day w/holidays (No Pats Day) | ISSU21 |  |
| ISSU21.30 |  | Issue #21 - RFI#178 - Rework Required - Positioning layout 6 (CR-6) | 1d | 2026-05-05 | 2026-05-05 | ISSU21.20 | 2025-07-18 | 2025-07-18 |  |  |  | Calendar 01 - 5 Day w/holidays (No Pats Day) | ISSU21 |  |
| ISSU21.40 |  | Issue #21 - RFI#178 - Positioning Layout 7 (CR-7) | 5d | 2026-05-05 | 2026-05-05 | ISSU21.20 | 2025-07-28 | 2025-08-01 |  |  |  | Calendar 01 - 5 Day w/holidays (No Pats Day) | ISSU21 |  |
|  | 23 | **ISSUE #23 - Bulletin 6 - Phase 5-8 ATS Procurement** |  | 2026-05-05 | 2026-07-30 |  |  |  |  |  |  |  |  |  |
| ISSU23.10 |  | Issue #23 - Bulletin 6 - Phase 5-8 ATS Procurement - Design | 10d | 2026-05-05 | 2026-05-05 | PO SS | 2025-07-01 | 2025-07-15 |  |  |  | Calendar 01 - 5 Day w/holidays (No Pats Day) | ISSU23 | Y |
| ISSU23.20 |  | Issue #23 - Bulletin 6 - Phase 5-8 ATS Procurement - Approved Work Order & Release | 5d | 2026-05-05 | 2026-05-05 | ISSU23.10, ISSU23.34 | 2025-12-03 | 2025-12-09 |  |  |  | Calendar 01 - 5 Day w/holidays (No Pats Day) | ISSU23 | Y |
| ISSU23.25 |  | Issue #23 - Bulletin 6 - Phase 5-8 ATS Procurement - OWNER Issues Test Scripts for FWT | 5d | 2026-05-05 | 2026-05-05 | ISSU23.30 | 2025-11-12 | 2025-11-18 |  |  |  | Calendar 01 - 5 Day w/holidays (No Pats Day) | ISSU23 | Y |
| ISSU23.26 |  | Issue #23 - Bulletin 6 - Phase 5-8 ATS Procurement - Prep for FWT | 10d | 2026-05-05 | 2026-05-05 | ISSU23.25 | 2026-01-22 | 2026-02-04 |  |  |  | Calendar 01 - 5 Day w/holidays (No Pats Day) | ISSU23 | Y |
| ISSU23.27 |  | Issue #23 - Bulletin 6 - Phase 5-8 ATS Procurement - Redesign and Additional Vendor Questions (RFI-334) | 15d | 2026-05-05 | 2026-05-05 | ISSU23.26 SS | 2026-02-17 | 2026-03-09 |  |  |  | Calendar 01 - 5 Day w/holidays (No Pats Day) | ISSU23 | Y |
| ISSU23.28 |  | Issue #23 - Bulletin 6 - Phase 5-8 ATS Procurement - Final/Actual FWT | 1d | 2026-05-05 | 2026-05-05 | ISSU23.27 FF, ISSU23.35 FF, ISSU23.29 | 2026-03-25 | 2026-03-25 |  |  |  | Calendar 01 - 5 Day w/holidays (No Pats Day) | ISSU23 | Y |
| ISSU23.29 |  | Issue #23 - Bulletin 6 - Phase 5-8 ATS Procurement - FWT Prep and Coordination with OWNER | 1d | 2026-05-05 | 2026-05-05 | ISSU23.27 | 2026-03-10 | 2026-03-10 |  |  |  | Calendar 01 - 5 Day w/holidays (No Pats Day) | ISSU23 | Y |
| ISSU23.30 |  | Issue #23 - Bulletin 6 - Phase 5-8 ATS Procurement - Submittal & Approval | 5d | 2026-05-05 | 2026-05-05 | ISSU23.10 | 2025-10-30 | 2025-11-05 |  |  |  | Calendar 01 - 5 Day w/holidays (No Pats Day) | ISSU23 | Y |
| ISSU23.33 |  | Issue #23 - Bulletin 6 - Phase 5-8 ATS Procurement - Bulletin / Prototype Info Received | 5d | 2026-05-05 | 2026-05-05 | ISSU23.30 | 2025-11-12 | 2025-11-18 |  |  |  | Calendar 01 - 5 Day w/holidays (No Pats Day) | ISSU23 | Y |
| ISSU23.34 |  | Issue #23 - Bulletin 6 - Phase 5-8 ATS Procurement - PCL Submitted | 5d | 2026-05-05 | 2026-05-05 | ISSU23.33 | 2025-11-12 | 2025-11-18 |  |  |  | Calendar 01 - 5 Day w/holidays (No Pats Day) | ISSU23 | Y |
| ISSU23.35 |  | Issue #23 - Bulletin 6 - Phase 5-8 ATS Procurement - Prototype Build and Factory Witness Test | 48d | 2026-05-05 | 2026-05-05 | ISSU23.30 | 2025-12-09 | 2026-02-18 |  |  |  | Calendar 01 - 5 Day w/holidays (No Pats Day) | ISSU23 |  |
| ISSU23.36 |  | Issue #23 - Bulletin 6 - Phase 5-8 ATS Procurement - OWNER Review and Approval of Prototype | 2d | 2026-05-05 | 2026-05-05 | ISSU23.35, ISSU23.20, ISSU23.28 | 2026-03-26 | 2026-03-27 |  |  |  | Calendar 18 - 5 day Work week NO HOLIDAYS | ISSU23 | Y |
| ISSU23.40 |  | Issue #23 - Bulletin 6 - Phase 5-8 ATS Procurement - Phase 5-8 ATS Fabrication | 44d | 2026-05-05 | 2026-05-29 | ISSU23.30, ISSU23.36 | 2026-03-30 | 2026-05-29 | -58d | 0d | 2026-05-29 | Calendar 01 - 5 Day w/holidays (No Pats Day) | ISSU23 | Y |
| ISSU23.50 |  | Issue #23 - Bulletin 6 - Phase 5-8 ATS Procurement - Phase 5 - Shipment and Delivery | 11d | 2026-06-01 | 2026-06-15 | ISSU23.40 |  |  | -59d | 0d |  | Calendar 11 - 5 day NO Holidays | ISSU23 | Y |
| ISSU23.60 |  | Issue #23 - Bulletin 6 - Phase 5-8 ATS Procurement - Phase 6 - Shipment and Delivery | 11d | 2026-06-16 | 2026-06-30 | ISSU23.50 |  |  | -59d | 0d |  | Calendar 11 - 5 day NO Holidays | ISSU23 | Y |
| ISSU23.70 |  | Issue #23 - Bulletin 6 - Phase 5-8 ATS Procurement - Phase 7 - Shipment and Delivery | 11d | 2026-07-01 | 2026-07-15 | ISSU23.60 |  |  | -30d | 0d |  | Calendar 11 - 5 day NO Holidays | ISSU23 | Y |
| ISSU23.80 |  | Issue #23 - Bulletin 6 - Phase 5-8 ATS Procurement - Phase 8 - Shipment and Delivery | 11d | 2026-07-16 | 2026-07-30 | ISSU23.70 |  |  | -30d | 0d |  | Calendar 11 - 5 day NO Holidays | ISSU23 | Y |
|  | 24 | **ISSUE #24 - RFI#215 - Exterior Fence Layout Clarification** |  | 2026-05-05 | 2026-05-05 |  |  |  |  |  |  |  |  |  |
| ISSU24.10 |  | Issue #24 - RFI#215 - Response | 7d | 2026-05-05 | 2026-05-05 | PH01MS-1000 SS | 2025-07-16 | 2025-07-24 |  |  |  | Calendar 01 - 5 Day w/holidays (No Pats Day) | ISSU24 |  |
| ISSU24.20 |  | Issue #24 - RFI#215 - Cost Review and Approval | 20d | 2026-05-05 | 2026-05-05 | ISSU24.10 | 2025-07-28 | 2025-08-22 |  |  |  | Calendar 01 - 5 Day w/holidays (No Pats Day) | ISSU24 |  |
| ISSU24.30 |  | Issue #24 - RFI#215 - Hydrovac and Install Fence | 20d | 2026-05-05 | 2026-05-05 | ISSU24.20 | 2025-08-15 | 2025-09-12 |  |  |  | Calendar 01 - 5 Day w/holidays (No Pats Day) | ISSU24 |  |

| ID | WBS | Activity | Duration | Start | Finish | Predecessors | Planned start | Planned finish | Calendar | ISSUES |
| --- | --- | --- | --- | --- | --- | --- | --- | --- | --- | --- |
|  | 25 | **ISSUE #25 - CICO Room Logisitcs Change Order - ON HOLD** |  | 2026-05-05 | 2026-05-05 |  |  |  |  |  |
| ISSU25.10 |  | Issue #25 - CICO Room Logistics - Pricing Approval and Change Order (Not Accepted) | 30d | 2026-05-05 | 2026-05-05 | PO SS | 2025-09-02 | 2025-10-14 | Calendar 01 - 5 Day w/holidays (No Pats Day) | ISSU25 |
|  | 27 | **ISSUE #27 - RFI#241 - Perimeter Gate Size per Bulletin 4** |  | 2026-05-05 | 2026-05-05 |  |  |  |  |  |
| ISSU27.10 |  | Issue #27 - RFI#241 - Response | 15d | 2026-05-05 | 2026-05-05 | PH01MS-1000 SS | 2025-08-11 | 2025-08-29 | Calendar 01 - 5 Day w/holidays (No Pats Day) | ISSU27 |
|  | 28 | **ISSUE #28 - RFI#55 - Mesh Wall at MMR/MDF** |  | 2026-05-05 | 2026-05-05 |  |  |  |  |  |
| ISSU28.10 |  | Issue #28 - RFI#55 - Response | 50d | 2026-05-05 | 2026-05-05 | PH01MS-1000 SS | 2025-03-19 | 2025-05-28 | Calendar 01 - 5 Day w/holidays (No Pats Day) | ISSU28 |
| ISSU28.20 |  | Issue #28 - RFI#55 - Material Release & Fabrication | 80d | 2026-05-05 | 2026-05-05 | ISSU28.10 | 2025-05-29 | 2025-09-19 | Calendar 01 - 5 Day w/holidays (No Pats Day) | ISSU28 |
|  | 29 | **ISSUE #29 - RFI#260 - EPMS/BMS Power Requirements** |  | 2026-05-05 | 2026-05-05 |  |  |  |  |  |
| ISSU29.10 |  | Issue #29 - RFI#260 - Response | 10d | 2026-05-05 | 2026-05-05 | PH01MS-1000 SS | 2025-08-21 | 2025-09-04 | Calendar 01 - 5 Day w/holidays (No Pats Day) | ISSU29 |
| ISSU29.20 |  | Issue #29 - RFI#260 - Pricing | 10d | 2026-05-05 | 2026-05-05 | ISSU29.10 | 2025-09-08 | 2025-09-19 | Calendar 01 - 5 Day w/holidays (No Pats Day) | ISSU29 |
| ISSU29.25 |  | Issue #29 - RFI#260 - OWNER Change Order | 5d | 2026-05-05 | 2026-05-05 | ISSU29.20 | 2025-09-11 | 2025-09-17 | Calendar 01 - 5 Day w/holidays (No Pats Day) | ISSU29 |
| ISSU29.30 |  | Issue #29 - RFI#260 - Implementation | 8d | 2026-05-05 | 2026-05-05 | ISSU29.25 | 2025-09-18 | 2025-09-29 | Calendar 01 - 5 Day w/holidays (No Pats Day) | ISSU29 |
| ISSU29.40 |  | Issue #29 - RFI#260 - EMPS/BMS Test & Checks (OWNER) | 5d | 2026-05-05 | 2026-05-05 | ISSU29.30 | 2025-09-30 | 2025-10-06 | Calendar 01 - 5 Day w/holidays (No Pats Day) | ISSU29 |
|  | 30 | **ISSUE #30 - RFI#157 - Max Cool CRAH Command Terminations** |  | 2026-05-05 | 2026-05-05 |  |  |  |  |  |
| ISSU30.10 |  | Issue #30 - RFI#157 - Response | 1d | 2026-05-05 | 2026-05-05 | PH01MS-1000 SS | 2025-05-30 | 2025-05-30 | Calendar 01 - 5 Day w/holidays (No Pats Day) | ISSU30 |
| ISSU30.20 |  | Issue #30 - RFI#157 - Pricing | 7d | 2026-05-05 | 2026-05-05 | ISSU30.10 | 2025-06-18 | 2025-06-26 | Calendar 01 - 5 Day w/holidays (No Pats Day) | ISSU30 |
| ISSU30.30 |  | Issue #30 - RFI#157 - OWNER Review & Issuance of Change Order | 1d | 2026-05-05 | 2026-05-05 | ISSU30.20 | 2025-06-26 | 2025-06-26 | Calendar 01 - 5 Day w/holidays (No Pats Day) | ISSU30 |
| ISSU30.40 |  | Issue #30 - RFI#157 - Material Procurement & Crew Availability | 1d | 2026-05-05 | 2026-05-05 | ISSU30.30 | 2025-08-11 | 2025-08-11 | Calendar 01 - 5 Day w/holidays (No Pats Day) | ISSU30 |
| ISSU30.50 |  | Issue #30 - RFI#157 - Material Install & Wiring - PH01 | 8d | 2026-05-05 | 2026-05-05 | ISSU30.40 | 2025-09-15 | 2025-09-24 | Calendar 01 - 5 Day w/holidays (No Pats Day) | ISSU30 |
| ISSU30.60 |  | Issue #30 - RFI#157 - BMS Integration | 2d | 2026-05-05 | 2026-05-05 | ISSU30.50 | 2025-09-25 | 2025-09-26 | Calendar 01 - 5 Day w/holidays (No Pats Day) | ISSU30 |
| ISSU30.70 |  | Issue #30 - RFI#157 - Commissioning | 5d | 2026-05-05 | 2026-05-05 | ISSU30.60 | 2025-09-29 | 2025-10-03 | Calendar 01 - 5 Day w/holidays (No Pats Day) | ISSU30 |
|  | 31 | **ISSUE #31 - RFI#262 - Exhaust Fan Above Cafe Power** |  | 2026-05-05 | 2026-05-05 |  |  |  |  |  |
| ISSU31.10 |  | Issue #31 - RFI#262 - Response | 10d | 2026-05-05 | 2026-05-05 | PH01MS-1000 SS | 2025-08-28 | 2025-09-11 | Calendar 01 - 5 Day w/holidays (No Pats Day) | ISSU31 |
| ISSU31.20 |  | Issue #31 - RFI#262 - Pricing | 10d | 2026-05-05 | 2026-05-05 | ISSU31.10 | 2025-09-04 | 2025-09-17 | Calendar 01 - 5 Day w/holidays (No Pats Day) | ISSU31 |
| ISSU31.30 |  | Issue #31 - RFI#262 - OWNER Review & Issuance of Change Order | 5d | 2026-05-05 | 2026-05-05 | ISSU31.20 | 2025-09-18 | 2025-09-24 | Calendar 01 - 5 Day w/holidays (No Pats Day) | ISSU31 |
| ISSU31.40 |  | Issue #31 - RFI#262 - Implementation of the Work | 10d | 2026-05-05 | 2026-05-05 | ISSU31.30 | 2025-09-25 | 2025-10-08 | Calendar 01 - 5 Day w/holidays (No Pats Day) | ISSU31 |

| ID | WBS | Activity | Duration | Start | Finish | Predecessors | Planned start | Planned finish | Total float | Free float | Expected finish | Calendar | ISSUES | 12 - GC - Export_to_Procore |
| --- | --- | --- | --- | --- | --- | --- | --- | --- | --- | --- | --- | --- | --- | --- |
|  | 32 | **ISSUE #32 - Repair Cut Fiber** |  | 2026-05-05 | 2026-05-05 |  |  |  |  |  |  |  |  |  |
| ISSU32.10 |  | Issue #32 - Repair Cut Fiber | 3d | 2026-05-05 | 2026-05-05 | PH01MS-1000 SS | 2025-09-10 | 2025-09-12 |  |  |  | Calendar 01 - 5 Day w/holidays (No Pats Day) | ISSU32 |  |
|  | 33 | **ISSUE #33 - Reissuance of Permits PH01-08** |  | 2026-05-05 | 2026-05-05 |  |  |  |  |  |  |  |  |  |
| ISSU33.10 |  | Issue #33 - Reissuance of Permits PH01-08 | 15d | 2026-05-05 | 2026-05-05 | PH01MS-1000 SS | 2025-09-08 | 2025-09-26 |  |  |  | Calendar 01 - 5 Day w/holidays (No Pats Day) | ISSU33 | Y |
|  | 34 | **ISSUE #34 - Bulletin 7 - Site Work Security Pathways** |  | 2026-05-05 | 2026-08-26 |  |  |  |  |  |  |  |  |  |
| ISSU34.10 |  | Issue #34 - Bulletin 7 - RFI#222 Response - Base Build Design/As-built Coordination | 15d | 2026-05-05 | 2026-05-05 | PH01MS-1000 SS | 2025-07-21 | 2025-08-08 |  |  |  | Calendar 01 - 5 Day w/holidays (No Pats Day) | ISSU34 |  |
| ISSU34.11 |  | Issue #34 - Bulletin 7 - RFI#222 Response - Electrical Design Provided | 15d | 2026-05-05 | 2026-05-05 | ISSU34.10 | 2025-07-21 | 2025-08-08 |  |  |  | Calendar 01 - 5 Day w/holidays (No Pats Day) | ISSU34 |  |
| ISSU34.12 |  | Issue #34 - Bulletin 7 - RFI#222 Response - Security Design Adds/Clarifications | 20d | 2026-05-05 | 2026-05-05 | ISSU34.11 | 2025-07-21 | 2025-08-15 |  |  |  | Calendar 01 - 5 Day w/holidays (No Pats Day) | ISSU34 |  |
| ISSU34.13 |  | Issue #34 - Bulletin 7 - RFI#222 Response - Misc Coordination and Design Items | 30d | 2026-05-05 | 2026-05-05 | ISSU34.12 | 2025-07-21 | 2025-08-29 |  |  |  | Calendar 01 - 5 Day w/holidays (No Pats Day) | ISSU34 |  |
| ISSU34.14 |  | Issue #34 - Bulletin 7 - Development and Issuance of Bulletin #7 as comprehensive response to RFI #222 | 30d | 2026-05-05 | 2026-05-05 | ISSU34.13 | 2025-07-21 | 2025-08-29 |  |  |  | Calendar 01 - 5 Day w/holidays (No Pats Day) | ISSU34 |  |
| ISSU34.15 |  | Issue #34 - Bulletin 7 - Issuance and Clarifications | 33d | 2026-05-05 | 2026-05-05 | ISSU34.14 | 2026-02-13 | 2026-04-01 | 12d | 0d | 2026-04-01 | Calendar 01 - 5 Day w/holidays (No Pats Day) | ISSU34 |  |
| ISSU34.20 |  | Issue #34 - Bulletin 7 - Pricing | 10d | 2026-05-05 | 2026-05-08 | ISSU34.15 FF, ISSU34.14 | 2026-04-27 | 2026-05-08 | 18d | 0d | 2026-05-08 | Calendar 01 - 5 Day w/holidays (No Pats Day) | ISSU34 | Y |
| ISSU34.40 |  | Issue #34 - Bulletin 7 - Permit | 20d | 2026-05-05 | 2026-06-02 | ISSU34.15 |  |  | 12d | 0d |  | Calendar 01 - 5 Day w/holidays (No Pats Day) | ISSU34 | Y |
| ISSU34.30 |  | Issue #34 - Bulletin 7 - OWNER Review & Issuance of Change Order | 10d | 2026-05-11 | 2026-05-22 | ISSU34.20 |  |  | 18d | 0d |  | Calendar 01 - 5 Day w/holidays (No Pats Day) | ISSU34 | Y |
| ISSU34.50 |  | Issue #34 - Bulletin 7 - Completion of Work (TBD) | 60d | 2026-06-03 | 2026-08-26 | ISSU34.30, ISSU34.40 |  |  | 12d |  |  | Calendar 01 - 5 Day w/holidays (No Pats Day) | ISSU34 |  |
|  | 35 | **ISSUE #35 - Added CICO Security Rough-In** |  | 2026-05-05 | 2026-05-05 |  |  |  |  |  |  |  |  |  |
| ISSU35.10 |  | Issue #35 - Added CICO - RFI#256 Response | 9d | 2026-05-05 | 2026-05-05 | PH01MS-1000 SS | 2025-08-26 | 2025-09-08 |  |  |  | Calendar 01 - 5 Day w/holidays (No Pats Day) | ISSU35 |  |
| ISSU35.20 |  | Issue #35 - Added CICO - Pricing | 10d | 2026-05-05 | 2026-05-05 | ISSU35.10 | 2025-09-02 | 2025-09-15 |  |  |  | Calendar 01 - 5 Day w/holidays (No Pats Day) | ISSU35 |  |
| ISSU35.30 |  | Issue #35 - Added CICO - OWNER Review & Issuance of Change Order | 5d | 2026-05-05 | 2026-05-05 | ISSU35.20 | 2025-09-23 | 2025-09-29 |  |  |  | Calendar 01 - 5 Day w/holidays (No Pats Day) | ISSU35 |  |
| ISSU35.40 |  | Issue #35 - Added CICO - Execution | 10d | 2026-05-05 | 2026-05-05 | ISSU35.30 | 2025-09-30 | 2025-10-14 |  |  |  | Calendar 01 - 5 Day w/holidays (No Pats Day) | ISSU35 |  |
|  | 36 | **ISSUE #36 - OWNER CX Schedule/Resources Delay** |  | 2026-05-05 | 2026-05-05 |  |  |  |  |  |  |  |  |  |
| ISSU36.10 |  | Issue #36 - OWNER CX Schedule/Resources Delay - PH02 | 5d | 2026-05-05 | 2026-05-05 | PH02MS-1030 FS-5d | 2025-09-26 | 2025-10-02 |  |  |  | Calendar 01 - 5 Day w/holidays (No Pats Day) | ISSU36 |  |
| ISSU36.20 |  | Issue #36 - OWNER CX Schedule/Resources Delay - PH03 | 5d | 2026-05-05 | 2026-05-05 | PH03MS-1030 FS-5d | 2025-10-10 | 2025-10-17 |  |  |  | Calendar 01 - 5 Day w/holidays (No Pats Day) | ISSU36 |  |
| ISSU36.30 |  | Issue #36 - OWNER CX Schedule/Resources Delay - PH04 | 5d | 2026-05-05 | 2026-05-05 | PH04MS-1030 | 2025-11-04 | 2025-11-10 |  |  |  | Calendar 01 - 5 Day w/holidays (No Pats Day) | ISSU36 |  |

| ID | WBS | Activity | Duration | Start | Finish | Predecessors | Planned start | Planned finish | Total float | Free float | Expected finish | Calendar | ISSUES | 12 - GC - Export_to_Procore |
| --- | --- | --- | --- | --- | --- | --- | --- | --- | --- | --- | --- | --- | --- | --- |
|  | 37 | **ISSUE #37 - CRAH-CR3-19 Fan Motor Issues** |  | 2026-05-05 | 2026-05-05 |  |  |  |  |  |  |  |  |  |
| ISSU37.10 |  | Issue #37 - CRAH-CR3-19 Fan Motor Issues - Identification and Repair | 9d | 2026-05-05 | 2026-05-05 | PH04MS-1000 SS | 2025-10-16 | 2025-10-28 |  |  |  | Calendar 01 - 5 Day w/holidays (No Pats Day) | ISSU37 |  |
| ISSU37.20 |  | Issue #37 - CRAH-CR3-19 Fan Motor Issues - Re-TAB CR3 Data Hall | 1d | 2026-05-05 | 2026-05-05 | ISSU37.10 | 2025-10-27 | 2025-10-27 |  |  |  | Calendar 01 - 5 Day w/holidays (No Pats Day) | ISSU37 |  |
|  | 38 | **ISSUE #38 - RFI#222 - Sidewalk Pathways Design and Permitting** |  |  |  |  |  |  |  |  |  |  |  |  |
|  | 39 | **ISSUE #39 - Red Zone Certification Requests (CR-6 Whip Shield, Basebuild Doors, RPP Alarms)** |  | 2026-05-05 | 2026-05-05 |  |  |  |  |  |  |  |  |  |
| ISSU39.10 |  | Issue #39 - Red Zone Certification Requests (CR-6 Whip Shield, Basebuild Doors, RPP Alarms) | 5d | 2026-05-05 | 2026-05-05 | OFCECOM-10 | 2025-09-29 | 2025-10-03 |  |  |  | Calendar 01 - 5 Day w/holidays (No Pats Day) | ISSU39 |  |
|  | 40 | **ISSUE #40 - Change in Security Access in Penthouse** |  | 2026-05-05 | 2026-05-05 |  |  |  |  |  |  |  |  |  |
| ISSU40.10 |  | Issue #40 - Change in PH Security Access - OWNER Notification of Penthouse Badging Requirements and Subsequent Delay | 5d | 2026-05-05 | 2026-05-05 | PH05MS-1000 SS | 2026-01-13 | 2026-01-17 |  |  |  | Calendar 07 - 6 Day Work Week w/o holidays - Mon-Sat | ISSU40 |  |
| ISSU40.20 |  | Issue #40 - Change in PH Security Access - Phase 05 Added Duration - Hangers | 6d | 2026-05-05 | 2026-05-05 | ISSU40.10 | 2026-02-13 | 2026-02-19 |  |  |  | Calendar 07 - 6 Day Work Week w/o holidays - Mon-Sat | ISSU40 |  |
| ISSU40.30 |  | Issue #40 - Change in PH Security Access - Phase 05 Added Duration - Cable Tray | 6d | 2026-05-05 | 2026-05-05 | ISSU40.10 | 2026-02-23 | 2026-02-28 |  |  |  | Calendar 07 - 6 Day Work Week w/o holidays - Mon-Sat | ISSU40 |  |
| ISSU40.40 |  | DELETE - Issue #40 - Change in PH Security Access - Phase 05 Added Duration - Pull Feeders | 0d | 2026-05-05 | 2026-05-05 | PH05-PH-155 | 2026-03-20 | 2026-03-20 |  |  |  | Calendar 07 - 6 Day Work Week w/o holidays - Mon-Sat | ISSU40 |  |
| ISSU40.60 |  | Issue #40 - Change in PH Security Access - Phase 06 Added Duration - Hangers | 6d | 2026-05-05 | 2026-05-05 | ISSU40.10 | 2026-02-27 | 2026-03-05 |  |  |  | Calendar 07 - 6 Day Work Week w/o holidays - Mon-Sat | ISSU40 |  |
| ISSU40.70 |  | Issue #40 - Change in PH Security Access - Phase 06 Added Duration - Cable Tray | 6d | 2026-05-05 | 2026-05-05 | ISSU40.10 | 2026-03-10 | 2026-03-16 |  |  |  | Calendar 07 - 6 Day Work Week w/o holidays - Mon-Sat | ISSU40 |  |
|  | 41 | **ISSUE #41 - Storage Room 176, 276 and 242 - Base Build Adiabatic System Clash with Cable Tray** |  | 2026-05-05 | 2026-05-05 |  |  |  |  |  |  |  |  |  |
| ISSU41.10 |  | Issue #41 - Adiabatic System Clash - Rescan and Recoordinate Cable Tray Pathways | 7d | 2026-05-05 | 2026-05-05 | PO SS | 2026-01-20 | 2026-01-28 |  |  |  | Calendar 01 - 5 Day w/holidays (No Pats Day) | ISSU41 |  |
| ISSU41.20 |  | Issue #41 - Adiabatic System Clash - Pricing | 10d | 2026-05-05 | 2026-05-05 | ISSU41.10 | 2026-02-12 | 2026-02-26 |  |  |  | Calendar 01 - 5 Day w/holidays (No Pats Day) | ISSU41 |  |
| ISSU41.30 |  | Issue #41 - Adiabatic System Clash - OWNER Review & Issuance of Work Order | 10d | 2026-05-05 | 2026-05-05 | ISSU41.20 | 2026-03-19 | 2026-04-01 | 92d | 0d | 2026-04-01 | Calendar 01 - 5 Day w/holidays (No Pats Day) | ISSU41 |  |
|  | 42 | **ISSUE #42 - OWNER Direction DCEO Donor Power Source Requirements (Unresolved)** |  | 2026-05-05 | 2026-06-25 |  |  |  |  |  |  |  |  |  |
| ISSU42.20 |  | Issue #42 - Donor Power Source Requirements - MCM Approval on Hold due to Donor Power. | 1d | 2026-05-05 | 2026-05-05 | BTN2-1490 | 2026-02-09 | 2026-02-09 | -102d | 0d | 2026-02-09 | Calendar 01 - 5 Day w/holidays (No Pats Day) |  |  |
| ISSU42.10 |  | Issue #42 - Donor Power Source Requirements - OWNER Direction to push Load Banks Procurement | 10d | 2026-06-12 | 2026-06-25 | BTN2-1620 |  |  | -103d | 0d |  | Calendar 01 - 5 Day w/holidays (No Pats Day) |  |  |
|  | 43 | **ISSUE #43 - RFI-334 Added Janitza Meters** |  | 2026-05-05 | 2026-08-05 |  |  |  |  |  |  |  |  |  |
| ISSU43.10 |  | Issue #43 - RFI-334 Added Janitza Meters - RFI Response | 10d | 2026-05-05 | 2026-05-05 | PH05MS-1000 SS | 2026-03-02 | 2026-03-13 |  |  |  | Calendar 01 - 5 Day w/holidays (No Pats Day) | ISSU43 | Y |
| ISSU43.20 |  | Issue #43 - RFI-334 Added Janitza Meters - PCL Creation and CO Issuance | 5d | 2026-05-05 | 2026-05-05 | PH05MS-1000 SS | 2026-03-19 | 2026-03-25 |  |  |  | Calendar 01 - 5 Day w/holidays (No Pats Day) | ISSU43 | Y |
| ISSU43.30 |  | Issue #43 - RFI-334 Added Janitza Meters - Procurement of Meters | 60d | 2026-05-05 | 2026-06-16 | ISSU43.20 | 2026-03-24 | 2026-06-16 | -51d | 0d | 2026-06-16 | Calendar 01 - 5 Day w/holidays (No Pats Day) | ISSU43 | Y |
| ISSU43.40 |  | Issue #43 - RFI-334 Added Janitza Meters - Phase 5 - Factory Build-out | 10d | 2026-06-17 | 2026-06-30 | ISSU43.30, ISSU43.10 |  |  | -51d | 0d |  | Calendar 01 - 5 Day w/holidays (No Pats Day) | ISSU43 | Y |
| ISSU43.45 |  | Issue #43 - RFI-334 Added Janitza Meters - Phase 5 - Shipment | 5d | 2026-07-01 | 2026-07-08 | ISSU43.40 |  |  | -31d | 0d |  | Calendar 01 - 5 Day w/holidays (No Pats Day) | ISSU43 | Y |
| ISSU43.50 |  | Issue #43 - RFI-334 Added Janitza Meters - Phase 6 - Factory Build-out | 5d | 2026-07-01 | 2026-07-08 | ISSU43.40 |  |  | -51d | 0d |  | Calendar 01 - 5 Day w/holidays (No Pats Day) | ISSU43 | Y |
| ISSU43.46 |  | Issue #43 - RFI-334 Added Janitza Meters - Phase 5 - Field Install | 5d | 2026-07-09 | 2026-07-15 | ISSU43.45 |  |  | -31d | 17d |  | Calendar 01 - 5 Day w/holidays (No Pats Day) | ISSU43 | Y |
| ISSU43.55 |  | Issue #43 - RFI-334 Added Janitza Meters - Phase 6 - Shipment | 5d | 2026-07-09 | 2026-07-15 | ISSU43.50 |  |  | -51d | 0d |  | Calendar 01 - 5 Day w/holidays (No Pats Day) | ISSU43 | Y |
| ISSU43.60 |  | Issue #43 - RFI-334 Added Janitza Meters - Phase 7 - Factory Build-out | 5d | 2026-07-09 | 2026-07-15 | ISSU43.50 |  |  | -18d | 0d |  | Calendar 01 - 5 Day w/holidays (No Pats Day) | ISSU43 | Y |
| ISSU43.56 |  | Issue #43 - RFI-334 Added Janitza Meters - Phase 6 - Field Install | 5d | 2026-07-16 | 2026-07-22 | ISSU43.55 |  |  | -51d | 6d |  | Calendar 01 - 5 Day w/holidays (No Pats Day) | ISSU43 | Y |
| ISSU43.65 |  | Issue #43 - RFI-334 Added Janitza Meters - Phase 7 - Shipment | 5d | 2026-07-16 | 2026-07-22 | ISSU43.60 |  |  | -18d | 0d |  | Calendar 01 - 5 Day w/holidays (No Pats Day) | ISSU43 | Y |
| ISSU43.70 |  | Issue #43 - RFI-334 Added Janitza Meters - Phase 8 - Factory Build-out | 5d | 2026-07-16 | 2026-07-22 | ISSU43.60 |  |  | -13d | 0d |  | Calendar 01 - 5 Day w/holidays (No Pats Day) | ISSU43 | Y |
| ISSU43.66 |  | Issue #43 - RFI-334 Added Janitza Meters - Phase 7 - Field Install | 5d | 2026-07-23 | 2026-07-29 | ISSU43.65 |  |  | -18d | 12d |  | Calendar 01 - 5 Day w/holidays (No Pats Day) | ISSU43 | Y |
| ISSU43.75 |  | Issue #43 - RFI-334 Added Janitza Meters - Phase 8 - Shipment | 5d | 2026-07-23 | 2026-07-29 | ISSU43.70 |  |  | -13d | 0d |  | Calendar 01 - 5 Day w/holidays (No Pats Day) | ISSU43 | Y |
| ISSU43.76 |  | Issue #43 - RFI-334 Added Janitza Meters - Phase 8 - Field Install | 5d | 2026-07-30 | 2026-08-05 | ISSU43.75 |  |  | -13d | 17d |  | Calendar 01 - 5 Day w/holidays (No Pats Day) | ISSU43 | Y |

| ID | WBS | Activity | Duration | Start | Finish | Predecessors | Planned start | Planned finish | Total float | Free float | Constraint | Expected finish | Calendar | 12 - GC - Export_to_Procore | ISSUES |
| --- | --- | --- | --- | --- | --- | --- | --- | --- | --- | --- | --- | --- | --- | --- | --- |
|  | 44 | **ISSUE #44 - MSB A14 Energization** |  | 2026-05-05 | 2026-07-09 |  |  |  |  |  |  |  |  |  |  |
| ISSU44.10 |  | Issue #44 - MSB A14 Energization - Phase 05 - MOP/MCM Creation and Submission | 2d | 2026-05-05 | 2026-05-05 | PH05MS-1000 SS | 2026-03-31 | 2026-04-01 |  |  |  |  | Calendar 01 - 5 Day w/holidays (No Pats Day) | Y | ISSU44 |
| ISSU44.20 |  | Issue #44 - MSB A14 Energization - Phase 05 - MOP/MCM Review and Approval | 32d | 2026-05-05 | 2026-05-14 | ISSU44.10 | 2026-04-01 | 2026-05-14 | -34d | 0d |  | 2026-05-14 | Calendar 01 - 5 Day w/holidays (No Pats Day) | Y | ISSU44 |
| ISSU44.50 |  | Issue #44 - MSB A14 Energization - Phase 07 - MOP/MCM Creation and Submission | 2d | 2026-05-07 | 2026-05-08 | ISSU44.10 |  |  | -18d | 0d | start on or after 2026-05-07 |  | Calendar 01 - 5 Day w/holidays (No Pats Day) | Y | ISSU44 |
| ISSU44.60 |  | Issue #44 - MSB A14 Energization - Phase 07 - MOP/MCM Review and Approval | 32d | 2026-05-11 | 2026-06-24 | ISSU44.50 |  |  | -18d | 0d |  |  | Calendar 01 - 5 Day w/holidays (No Pats Day) | Y | ISSU44 |
| ISSU44.30 |  | Issue #44 - MSB A14 Energization - Phase 05 - MOP/MCM Implementation | 5d | 2026-05-15 | 2026-05-21 | ISSU44.20 |  |  | -34d | 0d |  |  | Calendar 01 - 5 Day w/holidays (No Pats Day) | Y | ISSU44 |
| ISSU44.40 |  | Issue #44 - MSB A14 Energization - Phase 05 - Equipment Start-up and Troubleshooting | 5d | 2026-05-22 | 2026-05-29 | ISSU44.30 |  |  | -34d | 0d |  |  | Calendar 01 - 5 Day w/holidays (No Pats Day) | Y | ISSU44 |
| ISSU44.70 |  | Issue #44 - MSB A14 Energization - Phase 07 - MOP/MCM Implementation | 5d | 2026-06-25 | 2026-07-01 | ISSU44.60 |  |  | -18d | 0d |  |  | Calendar 01 - 5 Day w/holidays (No Pats Day) | Y | ISSU44 |
| ISSU44.80 |  | Issue #44 - MSB A14 Energization - Phase 07 - Equipment Start-up and Troubleshooting | 5d | 2026-07-02 | 2026-07-09 | ISSU44.70 |  |  | -18d | 1d |  |  | Calendar 01 - 5 Day w/holidays (No Pats Day) | Y | ISSU44 |
|  | 45 | **ISSUE #45 - OFCI DLB Panel Procurement** |  | 2026-05-05 | 2026-07-16 |  |  |  |  |  |  |  |  |  |  |
| ISSU45.10 |  | Issue #45 - OFCI DLB Panel Procurement - Fabrication | 46d | 2026-05-05 | 2026-06-16 | ISSU23.20 | 2026-04-13 | 2026-06-16 | -52d | 0d |  | 2026-06-16 | Calendar 01 - 5 Day w/holidays (No Pats Day) | Y | ISSU45 |
| ISSU45.20 |  | Issue #45 - OFCI DLB Panel Procurement - DLB Shipment | 11d | 2026-06-17 | 2026-07-01 | ISSU45.10 |  |  | -52d | 0d |  |  | Calendar 01 - 5 Day w/holidays (No Pats Day) | Y | ISSU45 |
| ISSU45.30 |  | Issue #45 - OFCI DLB Panel Procurement - DLB Panel Install | 10d | 2026-07-02 | 2026-07-16 | ISSU45.20 |  |  | -52d | 0d |  |  | Calendar 01 - 5 Day w/holidays (No Pats Day) | Y | ISSU45 |
|  | 46 | **ISSUE #46 Tranche #2 Power Delay** |  | 2026-05-05 | 2026-05-28 |  |  |  |  |  |  |  |  |  |  |
| ISSU46.10 |  | Issue #46 - Tranche #2 Power Delay - OWNER Notification | 10d | 2026-05-05 | 2026-05-05 | PH05MS-1000 SS | 2026-04-22 | 2026-05-05 |  |  |  |  | Calendar 01 - 5 Day w/holidays (No Pats Day) | Y | ISSU46 |
| ISSU46.20 |  | Issue #46 - Tranche #2 Power Delay - Utility Power Delivery Delay | 17d | 2026-05-05 | 2026-05-28 | ISSU46.10 |  |  | -32d | 1d |  |  | Calendar 01 - 5 Day w/holidays (No Pats Day) | Y | ISSU46 |
|  | 2 | **Procurement** |  | 2026-05-05 | 2026-06-09 |  |  |  |  |  |  |  |  |  |  |
|  | 1 | **CFCI Equipment On-site** |  | 2026-05-05 | 2026-06-09 |  |  |  |  |  |  |  |  |  |  |
|  | 1 | **Phase 1 / CR-6 CFCI Equipment On-site** |  | 2026-05-05 | 2026-05-05 |  |  |  |  |  |  |  |  |  |  |
| PH01CFC-100 |  | HVAC units - PH01 | 33d | 2026-05-05 | 2026-05-05 | PO SS | 2025-01-29 | 2025-03-07 |  |  |  |  |  |  |  |
| PH01CFC-105 |  | Bus Duct - PH01 | 79d | 2026-05-05 | 2026-05-05 | PO SS | 2025-01-29 | 2025-04-30 |  |  |  |  |  |  |  |
| PH01CFC-110 |  | RPP - PH01 | 37d | 2026-05-05 | 2026-05-05 | PO SS | 2025-01-29 | 2025-03-12 |  |  |  |  |  |  |  |
| PH01CFC-115 |  | ATS - PH01 | 60d | 2026-05-05 | 2026-05-05 | PO SS | 2025-01-29 | 2025-04-08 |  |  |  |  |  |  |  |
| PH01CFC-120 |  | LLE - CFCI Hot aisle On-site Date - PH01 | 10d | 2026-05-05 | 2026-05-05 | PH01MS-1000 SS | 2025-03-27 | 2025-04-07 |  |  |  |  |  |  |  |
| PH01CFC-125 |  | LLE - CFCI Equipment On-site Date - PH01 | 10d | 2026-05-05 | 2026-05-05 | PH01MS-1000, PH01CFC-100, PH01CFC-115 | 2025-04-09 | 2025-04-19 |  |  |  |  |  |  |  |
| PH01CFC-130 |  | LLE - CFCI RPP Whips On-site Date - PH01 | 10d | 2026-05-05 | 2026-05-05 | PH01CFC-110 FF | 2025-04-09 | 2025-04-19 |  |  |  |  |  |  |  |
| PH01CFC-140 |  | CFCI Lighting Onsite - PH01 - PH04 | 53d | 2026-05-05 | 2026-05-05 | PO SS | 2025-03-03 | 2025-05-02 |  |  |  |  |  |  |  |
| PH01CFC-150 |  | CFCI VAVs - PH01 | 36d | 2026-05-05 | 2026-05-05 | PO SS, PRMT-1040 | 2025-02-26 | 2025-04-08 |  |  |  |  |  |  |  |

| ID | WBS | Activity | Type | Duration | Start | Finish | Predecessors | Planned start | Planned finish | 12 - GC - Export_to_Procore |
| --- | --- | --- | --- | --- | --- | --- | --- | --- | --- | --- |
|  | 2 | **Phase 2 / CR-7 CFCI Equipment On-site** |  |  | 2026-05-05 | 2026-05-05 |  |  |  |  |
| PH02CFC-105 |  | Bus Duct - PH02 |  | 79d | 2026-05-05 | 2026-05-05 | PO SS | 2025-01-29 | 2025-04-30 |  |
| PH02CFC-110 |  | RPP - PH02 |  | 42d | 2026-05-05 | 2026-05-05 | PO SS | 2025-02-24 | 2025-04-12 |  |
| PH02CFC-115 |  | ATS - PH02 |  | 60d | 2026-05-05 | 2026-05-05 | PO SS | 2025-01-29 | 2025-04-08 |  |
| PH02CFC-120 |  | LLE - CFCI Hot aisle On-site Date - PH02 |  | 10d | 2026-05-05 | 2026-05-05 | PH02MS-1000 SS | 2025-04-14 | 2025-04-24 |  |
| PH02CFC-125 |  | LLE - CFCI Equipment On-site Date - PH02 |  | 10d | 2026-05-05 | 2026-05-05 | PH02CFC-115, PH02CFC-120, PH02MS-1000 SS | 2025-05-24 | 2025-06-04 |  |
| PH02CFC-130 |  | LLE - CFCI RPP Whips On-site Date - PH02 |  | 10d | 2026-05-05 | 2026-05-05 | PH02CFC-110, PH02MS-1000 SS | 2025-04-14 | 2025-04-24 |  |
|  | 3 | **Phase 3 / CR-2 CFCI Equipment On-site** |  |  | 2026-05-05 | 2026-05-05 |  |  |  |  |
| PH03CFC-105 |  | Bus Duct - PH03 |  | 79d | 2026-05-05 | 2026-05-05 | PO SS | 2025-01-29 | 2025-04-30 |  |
| PH03CFC-110 |  | RPP - PH03 |  | 42d | 2026-05-05 | 2026-05-05 | PO SS | 2025-03-27 | 2025-05-14 |  |
| PH03CFC-115 |  | ATS - PH03 |  | 60d | 2026-05-05 | 2026-05-05 | PO SS | 2025-01-29 | 2025-04-08 |  |
| PH03CFC-120 |  | LLE - CFCI Hot aisle On-site Date - PH03 |  | 10d | 2026-05-05 | 2026-05-05 | PH03MS-1000 SS | 2025-08-05 | 2025-08-15 |  |
| PH03CFC-125 |  | LLE - CFCI Equipment On-site Date - PH03 |  | 10d | 2026-05-05 | 2026-05-05 | PH03CFC-115, PH03CFC-120, PH03MS-1000 SS | 2025-09-11 | 2025-09-22 |  |
| PH03CFC-130 |  | LLE - CFCI RPP Whips On-site Date - PH03 |  | 10d | 2026-05-05 | 2026-05-05 | PH03CFC-110, PH03MS-1000 SS | 2025-06-09 | 2025-06-19 |  |
|  | 4 | **Phase 4 / CR-3 CFCI Equipment On-site** |  |  | 2026-05-05 | 2026-05-05 |  |  |  |  |
| PH04CFC-105 |  | Bus Duct - PH04 |  | 79d | 2026-05-05 | 2026-05-05 | PO SS | 2025-01-29 | 2025-04-30 |  |
| PH04CFC-110 |  | RPP - PH04 |  | 42d | 2026-05-05 | 2026-05-05 | PO SS | 2025-03-27 | 2025-05-14 |  |
| PH04CFC-115 |  | ATS - PH04 |  | 60d | 2026-05-05 | 2026-05-05 | PO SS | 2025-01-29 | 2025-04-08 |  |
| PH04CFC-120 |  | LLE - CFCI Hot aisle On-site Date - PH04 |  | 10d | 2026-05-05 | 2026-05-05 | PH04MS-1000 SS | 2025-08-04 | 2025-08-14 |  |
| PH04CFC-125 |  | LLE - CFCI Equipment On-site Date - PH04 |  | 10d | 2026-05-05 | 2026-05-05 | PH04CFC-115, PH04CFC-120, PH04MS-1000 SS | 2025-09-11 | 2025-09-22 |  |
| PH04CFC-130 |  | LLE - CFCI RPP Whips On-site Date - PH04 |  | 10d | 2026-05-05 | 2026-05-05 | PH04CFC-110, PH04MS-1000 SS | 2025-08-15 | 2025-08-26 |  |
|  | 5 | **Phase 5 / CR-5 CFCI Equipment On-site** |  |  | 2026-05-05 | 2026-05-05 |  |  |  |  |
| PH05CFC-105 |  | Bus Duct - PH05 |  | 80d | 2026-05-05 | 2026-05-05 | PO SS | 2025-10-29 | 2026-01-29 | Y |
| PH05CFC-115 |  | ATS - PH05 |  | 60d | 2026-05-05 | 2026-05-05 | PO SS | 2025-07-09 | 2025-09-16 | Y |
| PH05CFC-120 |  | LLE - CFCI Hot aisle On-site Date - PH05 | milestone | 0d | 2026-05-05 | 2026-05-05 | PH05MS-1000 SF | 2026-03-06 | 2026-03-06 | Y |
| PH05CFC-125 |  | LLE - CFCI Equipment (2 CCSs) On-site Date - PH05 | milestone | 0d | 2026-05-05 | 2026-05-05 | PH05MS-1000 SF | 2026-03-30 | 2026-03-30 | Y |
| PH05CFC-140 |  | CFCI Lighting Onsite - PH05 - PH08 | milestone | 0d | 2026-05-05 | 2026-05-05 | PH05DH-106 FF | 2026-03-02 | 2026-03-02 | Y |

| ID | WBS | Activity | Type | Duration | Start | Finish | Predecessors | Planned start | Planned finish | Total float | Free float | 12 - GC - Export_to_Procore |
| --- | --- | --- | --- | --- | --- | --- | --- | --- | --- | --- | --- | --- |
|  | 6 | **Phase 6 / CR-8 CFCI Equipment On-site** |  |  | 2026-05-05 | 2026-05-05 |  |  |  |  |  |  |
| PH06CFC-105 |  | Bus Duct - PH06 |  | 80d | 2026-05-05 | 2026-05-05 | PO SS, PH05CFC-105 SS | 2025-10-29 | 2026-01-29 |  |  | Y |
| PH06CFC-115 |  | ATS - PH06 |  | 55d | 2026-05-05 | 2026-05-05 | PO SS | 2025-07-09 | 2025-09-10 |  |  | Y |
| PH06CFC-120 |  | LLE - CFCI Hot aisle On-site Date - PH06 | milestone | 0d | 2026-05-05 | 2026-05-05 | PH06MS-1000 SF | 2026-03-13 | 2026-03-13 |  |  | Y |
| PH06CFC-125 |  | LLE - CFCI Equipment (2 CCSs) On-site Date - PH06 | milestone | 0d | 2026-05-05 | 2026-05-05 | PH06MS-1000 SF | 2026-03-30 | 2026-03-30 |  |  | Y |
|  | 7 | **Phase 7 / CR-1 CFCI Equipment On-site** |  |  | 2026-05-05 | 2026-05-26 |  |  |  |  |  |  |
| PH07CFC-105 |  | Bus Duct - PH07 |  | 80d | 2026-05-05 | 2026-05-05 | PO SS, PH06CFC-105 SS | 2025-10-29 | 2026-01-29 |  |  | Y |
| PH07CFC-115 |  | ATS - PH07 |  | 60d | 2026-05-05 | 2026-05-05 | PO SS | 2025-07-09 | 2025-09-16 |  |  | Y |
| PH07CFC-120 |  | LLE - CFCI Hot aisle On-site Date - PH07 | milestone | 0d | 2026-05-26 | 2026-05-26 | PH07DH-126 FF |  |  | 2d | 0d | Y |
| PH07CFC-125 |  | LLE - CFCI Equipment (2 CCSs) On-site Date - PH07 | milestone | 0d | 2026-05-26 | 2026-05-26 | PH07DH-127 FF |  |  | -18d | 0d | Y |
|  | 8 | **Phase 8 / CR-4 CFCI Equipment On-site** |  |  | 2026-05-05 | 2026-06-09 |  |  |  |  |  |  |
| PH08CFC-105 |  | Bus Duct - PH08 |  | 80d | 2026-05-05 | 2026-05-05 | PO SS, PH07CFC-105 SS | 2025-10-29 | 2026-01-29 |  |  | Y |
| PH08CFC-115 |  | ATS - PH08 |  | 60d | 2026-05-05 | 2026-05-05 | PO SS | 2025-07-09 | 2025-09-16 |  |  | Y |
| PH08CFC-120 |  | LLE - CFCI Hot aisle On-site Date - PH08 | milestone | 0d | 2026-05-26 | 2026-05-26 | PH08DH-126 FF |  |  | 14d | 0d | Y |
| PH08CFC-125 |  | LLE - CFCI Equipment (2 CCSs) On-site Date - PH08 | milestone | 0d | 2026-06-09 | 2026-06-09 | PH08DH-127 FF |  |  | -14d | 0d | Y |
|  | 2 | **OFCI** |  |  | 2026-05-05 | 2026-05-05 |  |  |  |  |  |  |
|  | 1 | **Phase 1 / CR-6 OFCI** |  |  |  |  |  |  |  |  |  |  |
|  | 2 | **Phase 2 / CR-7 OFCI** |  |  |  |  |  |  |  |  |  |  |
|  | 3 | **Phase 3 / CR-2 OFCI** |  |  |  |  |  |  |  |  |  |  |
|  | 4 | **Phase 4 / CR-3 OFCI** |  |  |  |  |  |  |  |  |  |  |
|  | 5 | **Phase 5 / CR-5 OFCI** |  |  | 2026-05-05 | 2026-05-05 |  |  |  |  |  |  |
| PH05CFC-110 |  | OFCI PDC - PH05 |  | 45d | 2026-05-05 | 2026-05-05 | PO SS | 2025-10-29 | 2025-12-19 |  |  | Y |
| PH05CFC-130 |  | LLE - OFCI PDC Whips On-site Date - PH05 |  | 10d | 2026-05-05 | 2026-05-05 | PH05CFC-110 FF, PH04MS-1000 SS | 2025-12-30 | 2026-01-09 |  |  | Y |
|  | 6 | **Phase 6 / CR-8 OFCI** |  |  | 2026-05-05 | 2026-05-05 |  |  |  |  |  |  |
| PH06CFC-110 |  | OFCI PDC - PH06 |  | 45d | 2026-05-05 | 2026-05-05 | PO SS | 2025-10-29 | 2025-12-19 |  |  | Y |
| PH06CFC-130 |  | LLE - OFCI PDC Whips On-site Date - PH06 |  | 10d | 2026-05-05 | 2026-05-05 | PH06CFC-110 FF, PH06MS-1000 SS | 2026-01-06 | 2026-01-16 |  |  | Y |

| ID | WBS | Activity | Type | Duration | Start | Finish | Predecessors | Planned start | Planned finish | Calendar | 12 - GC - Export_to_Procore |
| --- | --- | --- | --- | --- | --- | --- | --- | --- | --- | --- | --- |
|  | 7 | **Phase 7 / CR-1 OFCI** |  |  | 2026-05-05 | 2026-05-05 |  |  |  |  |  |
| PH07CFC-110 |  | OFCI PDC - PH07 |  | 45d | 2026-05-05 | 2026-05-05 | PO SS | 2025-10-29 | 2025-12-19 |  | Y |
| PH07CFC-130 |  | LLE - OFCI PDC Whips On-site Date - PH07 | milestone | 0d | 2026-05-05 | 2026-05-05 | PH07CFC-110 FF | 2026-03-27 | 2026-03-27 |  | Y |
|  | 8 | **Phase 8 / CR-4 OFCI** |  |  | 2026-05-05 | 2026-05-05 |  |  |  |  |  |
| PH08CFC-110 |  | OFCI PDC - PH08 |  | 45d | 2026-05-05 | 2026-05-05 | PO SS | 2025-10-29 | 2025-12-19 |  | Y |
| PH08CFC-130 |  | LLE - OFCI PDC Whips On-site Date - PH08 | milestone | 0d | 2026-05-05 | 2026-05-05 | PH08CFC-110 FF | 2026-03-30 | 2026-03-30 |  | Y |
|  | PRMT+DSGN | **Permits & Design** |  |  | 2026-05-05 | 2026-05-05 |  |  |  |  |  |
| PRMT-1000 |  | Prepare & Submit Fire Suppression Permit Package |  | 30d | 2026-05-05 | 2026-05-05 | PO SS | 2025-01-29 | 2025-03-04 |  |  |
| PRMT-1010 |  | AHJ / County Review Fire Suppression Permit Package |  | 30d | 2026-05-05 | 2026-05-05 | PRMT-1000 | 2025-03-05 | 2025-04-15 | VA-DC1-Calendar 01 - 5 Day w/holiday (No Pats Day) |  |
| PRMT-1020 |  | Fire Suppression Permit Issued | milestone | 0d | 2026-05-05 | 2026-05-05 | PRMT-1010 FF | 2025-04-08 | 2025-04-08 | VA-DC1-Calendar 01 - 5 Day w/holiday (No Pats Day) |  |
| PRMT-1030 |  | Develope VAV Shop Drawings |  | 12d | 2026-05-05 | 2026-05-05 | PO SS | 2025-01-29 | 2025-02-11 |  |  |
| PRMT-1040 |  | Approve VAV Shop Drawings |  | 12d | 2026-05-05 | 2026-05-05 | PRMT-1030 | 2025-02-12 | 2025-02-28 | VA-DC1-Calendar 01 - 5 Day w/holiday (No Pats Day) |  |
|  | CONSTRUCTION | **Construction** |  |  | 2026-05-05 | 2026-08-28 |  |  |  |  |  |
|  | Red Zone Area | **Red Zone Area** |  |  | 2026-05-05 | 2026-05-05 |  |  |  |  |  |
|  | RZL2 | **Red Zone Walls - 2nd Floor** |  |  | 2026-05-05 | 2026-05-05 |  |  |  |  |  |
|  | DF | **Red Zone Door Frames** |  |  | 2026-05-05 | 2026-05-05 |  |  |  |  |  |
| RZ-L2-100 |  | Install Door Frames Room # 238B, 238C, 239, 240A, 240B |  | 3d | 2026-05-05 | 2026-05-05 | PH01MS-1000 SS | 2025-09-02 | 2025-09-04 |  |  |
| RZ-L2-130 |  | Install Door Frame #238D |  | 1d | 2026-05-05 | 2026-05-05 | RZ-L2-140 | 2025-09-13 | 2025-09-13 |  |  |
| RZ-L2-770 |  | CFCI - Red Zone Door Frames + Doors + Door Hardware |  | 4d | 2026-05-05 | 2026-05-05 | PH01MS-1000 SS | 2025-06-17 | 2025-06-20 |  |  |
|  | RM238S | **Room #238 South** |  |  | 2026-05-05 | 2026-05-05 |  |  |  |  |  |
| RZ-L2-140 |  | Frame Walls Room #238 South |  | 2d | 2026-05-05 | 2026-05-05 | RZ-L2-100 SS | 2025-09-02 | 2025-09-03 |  |  |
| RZ-L2-150 |  | Close-in Walls Room #238 South |  | 5d | 2026-05-05 | 2026-05-05 | RZ-L2-280, RZ-L2-260, RZ-L2-130, RZ-L2-140 | 2025-09-15 | 2025-09-19 |  |  |
| RZ-L2-160 |  | Hang Drywall Room #238 South |  | 3d | 2026-05-05 | 2026-05-05 | RZ-L2-150 | 2025-09-20 | 2025-09-23 |  |  |
| RZ-L2-170 |  | Finish Drywall Room #238 South |  | 3d | 2026-05-05 | 2026-05-05 | RZ-L2-160 | 2025-09-24 | 2025-09-26 |  |  |
| RZ-L2-180 |  | Rough-in Ceiling Room #238 South |  | 3d | 2026-05-05 | 2026-05-05 | RZ-L2-300, RZ-L2-170 | 2025-09-30 | 2025-10-02 |  |  |
| RZ-L2-190 |  | Install Lights Room #238 South |  | 3d | 2026-05-05 | 2026-05-05 | RZ-L2-180 | 2025-10-03 | 2025-10-06 |  |  |
| RZ-L2-260 |  | Security Rough-in Room #238 South |  | 3d | 2026-05-05 | 2026-05-05 | RZ-L2-280 SS, RZ-L2-140 SS | 2025-09-04 | 2025-09-06 |  |  |
| RZ-L2-280 |  | Rough-in Walls Room #238 South |  | 3d | 2026-05-05 | 2026-05-05 | RZ-L2-140 FF | 2025-09-04 | 2025-09-06 |  |  |
| RZ-L2-300 |  | Paint Walls Room #238 South |  | 2d | 2026-05-05 | 2026-05-05 | RZ-L2-170, RZ-L2-160 | 2025-09-27 | 2025-09-29 |  |  |

| ID | WBS | Activity | Duration | Start | Finish | Predecessors | Planned start | Planned finish | 12 - GC - Export_to_Procore |
| --- | --- | --- | --- | --- | --- | --- | --- | --- | --- |
|  | RM235 | **Room #235** |  | 2026-05-05 | 2026-05-05 |  |  |  |  |
| RZ-L2-200 |  | Rough-in Walls Room #235 | 3d | 2026-05-05 | 2026-05-05 | RZ-L2-290 | 2025-09-15 | 2025-09-17 |  |
| RZ-L2-210 |  | Close-in Walls Room #235 | 5d | 2026-05-05 | 2026-05-05 | RZ-L2-290, RZ-L2-270, RZ-L2-200 | 2025-09-18 | 2025-09-23 |  |
| RZ-L2-220 |  | Hang Drywall Room #235 | 3d | 2026-05-05 | 2026-05-05 | RZ-L2-210 | 2025-09-24 | 2025-09-26 |  |
| RZ-L2-230 |  | Finish Drywall Room #235 | 3d | 2026-05-05 | 2026-05-05 | RZ-L2-220 | 2025-09-27 | 2025-09-30 |  |
| RZ-L2-270 |  | Security Rough-in Room #235 | 3d | 2026-05-05 | 2026-05-05 | RZ-L2-290 | 2025-09-15 | 2025-09-17 |  |
| RZ-L2-290 |  | Frame Walls Room #235 | 2d | 2026-05-05 | 2026-05-05 | RZ-L2-100 SS | 2025-09-04 | 2025-09-05 |  |
| RZ-L2-310 |  | Paint Walls Room #235 | 3d | 2026-05-05 | 2026-05-05 | RZ-L2-230, RZ-L2-220 | 2025-10-01 | 2025-10-03 |  |
|  | RM_240A | **Room #240 A & B** |  | 2026-05-05 | 2026-05-05 |  |  |  |  |
| RZ-L2-320 |  | Frame Ceiling Rooms #240A & 240B | 2d | 2026-05-05 | 2026-05-05 | PH01MS-1000 SS | 2025-07-24 | 2025-07-25 |  |
| RZ-L2-340 |  | Hang Ceiling Drywall Rooms #240A & 240B | 3d | 2026-05-05 | 2026-05-05 | RZ-L2-360, RZ-L2-320 | 2025-08-13 | 2025-08-15 |  |
| RZ-L2-350 |  | Finish Drywall Rooms #240A & 240B | 3d | 2026-05-05 | 2026-05-05 | RZ-L2-340 | 2025-08-15 | 2025-08-18 |  |
| RZ-L2-360 |  | Rough-in Ceiling Rooms #240A & 240B | 3d | 2026-05-05 | 2026-05-05 | RZ-L2-320 | 2025-07-23 | 2025-07-25 |  |
| RZ-L2-370 |  | Install Lights Rooms #240A & 240B | 3d | 2026-05-05 | 2026-05-05 | RZ-L2-360 | 2025-07-22 | 2025-07-24 |  |
| RZ-L2-400 |  | Paint Ceiling Rooms #240A & 240B | 2d | 2026-05-05 | 2026-05-05 | RZ-L2-350, RZ-L2-340 | 2025-08-16 | 2025-08-18 |  |
| RZ-L2-410 |  | Re-Frame Doors Rooms #240A & 240B | 2d | 2026-05-05 | 2026-05-05 | RZ-L2-370 SS, RZ-L2-770 | 2025-07-22 | 2025-07-23 |  |
| RZ-L2-420 |  | Install Ceramic Tile Walls + Floors Rooms #240A & 240B | 7d | 2026-05-05 | 2026-05-05 | RZ-L2-350 | 2025-08-27 | 2025-09-03 |  |
| RZ-L2-430 |  | Plumbing Fixtures Rooms #240A & 240B | 3d | 2026-05-05 | 2026-05-05 | RZ-L2-400, RZ-L2-420 FF, RZ-L2-420 | 2025-09-11 | 2025-09-13 |  |
| RZ-L2-440 |  | Bathroom Accessories Rooms #240A & 240B | 3d | 2026-05-05 | 2026-05-05 | RZ-L2-430 | 2025-09-15 | 2025-09-17 |  |
| RZ-L2-450 |  | Hang Doors Rooms #240A & 240B | 3d | 2026-05-05 | 2026-05-05 | RZ-L2-410 | 2025-09-03 | 2025-09-05 |  |
|  | RZL1 | **Red Zone Walls - 1st Floor** |  | 2026-05-05 | 2026-05-05 |  |  |  |  |
|  | DF | **Red Zone Door Frames** |  | 2026-05-05 | 2026-05-05 |  |  |  |  |
| RZ-L2-460 |  | Install Door Frames Room # 138B, 138C, 139, 140A, 140B | 3d | 2026-05-05 | 2026-05-05 | RZ-L2-770, PH04DH-119 | 2025-10-23 | 2025-10-25 | Y |
| RZ-L2-470 |  | Install Door Frame #138D | 1d | 2026-05-05 | 2026-05-05 | RZ-L2-480 | 2025-11-21 | 2025-11-21 | Y |

| ID | WBS | Activity | Duration | Start | Finish | Predecessors | Planned start | Planned finish | 12 - GC - Export_to_Procore |
| --- | --- | --- | --- | --- | --- | --- | --- | --- | --- |
|  | RM138S | **Room #138 South** |  | 2026-05-05 | 2026-05-05 |  |  |  |  |
| RZ-L2-480 |  | Frame Walls Room #138 South | 2d | 2026-05-05 | 2026-05-05 | RZ-L2-460 SS, PH03DH-131 | 2025-10-06 | 2025-10-07 | Y |
| RZ-L2-490 |  | Close-in Walls Room #138 South | 5d | 2026-05-05 | 2026-05-05 | RZ-L2-620, RZ-L2-600, RZ-L2-470, RZ-L2-480, ISSU33.10 | 2025-11-15 | 2025-11-20 | Y |
| RZ-L2-500 |  | Hang Drywall Room #138 South | 3d | 2026-05-05 | 2026-05-05 | RZ-L2-490 | 2025-11-20 | 2025-11-22 | Y |
| RZ-L2-510 |  | Finish Drywall Room #138 South | 3d | 2026-05-05 | 2026-05-05 | RZ-L2-500 | 2025-11-21 | 2025-11-24 | Y |
| RZ-L2-600 |  | Security Rough-in Room #138 South | 3d | 2026-05-05 | 2026-05-05 | RZ-L2-480 SS | 2025-10-23 | 2025-10-25 | Y |
| RZ-L2-620 |  | Rough-in Walls Room #138 South | 3d | 2026-05-05 | 2026-05-05 | RZ-L2-480 | 2025-11-17 | 2025-11-19 | Y |
| RZ-L2-640 |  | Paint Walls Room #138 South | 2d | 2026-05-05 | 2026-05-05 | RZ-L2-510, RZ-L2-500 | 2025-11-24 | 2025-11-25 | Y |
|  | RM135N | **Room #135 North** |  | 2026-05-05 | 2026-05-05 |  |  |  |  |
| RZ-L2-540 |  | Rough-in Walls Room #135 North | 3d | 2026-05-05 | 2026-05-05 | RZ-L2-630 | 2025-11-17 | 2025-11-19 | Y |
| RZ-L2-550 |  | Close-in Walls Room #135 North | 5d | 2026-05-05 | 2026-05-05 | RZ-L2-630, RZ-L2-610, RZ-L2-540 | 2025-11-15 | 2025-11-20 | Y |
| RZ-L2-560 |  | Hang Drywall Room #135 North | 3d | 2026-05-05 | 2026-05-05 | RZ-L2-550 | 2025-11-20 | 2025-11-22 | Y |
| RZ-L2-570 |  | Finish Drywall Room #135 North | 3d | 2026-05-05 | 2026-05-05 | RZ-L2-560 | 2025-11-21 | 2025-11-24 | Y |
| RZ-L2-610 |  | Security Rough-in Room #135 North | 3d | 2026-05-05 | 2026-05-05 | RZ-L2-630 | 2025-10-23 | 2025-10-25 | Y |
| RZ-L2-630 |  | Frame Walls Room #135 North | 2d | 2026-05-05 | 2026-05-05 | RZ-L2-460 SS, PH03DH-131 | 2025-10-06 | 2025-10-07 | Y |
| RZ-L2-650 |  | Paint Walls Room #135 North | 2d | 2026-05-05 | 2026-05-05 | RZ-L2-570, RZ-L2-560 | 2025-11-24 | 2025-11-25 | Y |
|  | RM_140A+B | **Room #140 A & B** |  | 2026-05-05 | 2026-05-05 |  |  |  |  |
| RZ-L2-660 |  | Frame Ceiling Rooms #140A & 140B | 2d | 2026-05-05 | 2026-05-05 | RZ-L2-770 | 2025-07-23 | 2025-07-24 |  |
| RZ-L2-670 |  | Hang Ceiling Drywall Rooms #140A & 140B | 3d | 2026-05-05 | 2026-05-05 | RZ-L2-720, RZ-L2-690, RZ-L2-660 | 2025-09-17 | 2025-09-19 |  |
| RZ-L2-680 |  | Finish Drywall Rooms #140A & 140B | 3d | 2026-05-05 | 2026-05-05 | RZ-L2-670 FF, RZ-L2-760 | 2025-10-02 | 2025-10-04 | Y |
| RZ-L2-690 |  | Rough-in Ceiling Rooms #140A & 140B | 3d | 2026-05-05 | 2026-05-05 | RZ-L2-660 | 2025-09-13 | 2025-09-16 |  |
| RZ-L2-700 |  | Install Lights Rooms #140A & 140B | 3d | 2026-05-05 | 2026-05-05 | RZ-L2-690 | 2025-09-17 | 2025-09-19 | Y |
| RZ-L2-710 |  | Paint Ceiling Rooms #140A & 140B | 2d | 2026-05-05 | 2026-05-05 | RZ-L2-670, RZ-L2-680 | 2025-10-20 | 2025-10-21 | Y |
| RZ-L2-720 |  | Re-Frame Doors Rooms #140A & 140B | 2d | 2026-05-05 | 2026-05-05 | RZ-L2-660 | 2025-07-23 | 2025-07-24 |  |
| RZ-L2-730 |  | Install Ceramic Tile Walls + Floors Rooms #140A & 140B | 7d | 2026-05-05 | 2026-05-05 | RZ-L2-670 | 2025-09-15 | 2025-09-22 |  |
| RZ-L2-740 |  | Plumbing Fixtures Rooms #140A & 140B | 3d | 2026-05-05 | 2026-05-05 | RZ-L2-730 FF, RZ-L2-730 | 2025-10-08 | 2025-10-10 | Y |
| RZ-L2-750 |  | Bathroom Accessories Rooms #140A & 140B | 5d | 2026-05-05 | 2026-05-05 | RZ-L2-700 SS | 2025-10-06 | 2025-10-10 | Y |
| RZ-L2-760 |  | Hang Doors Rooms #140A & 140B | 3d | 2026-05-05 | 2026-05-05 | RZ-L2-730 | 2025-10-06 | 2025-10-08 | Y |

| ID | WBS | Activity | Type | Duration | Start | Finish | Predecessors | Planned start | Planned finish | Calendar |
| --- | --- | --- | --- | --- | --- | --- | --- | --- | --- | --- |
|  | PH1 | **Phase 1 / CR-6** |  |  | 2026-05-05 | 2026-06-10 |  |  |  |  |
|  | 1.17.1 | **Office Area - Phase 1 / CR-6** |  |  | 2026-05-05 | 2026-05-05 |  |  |  |  |
| PH01OF-100 |  | Layout Walls |  | 3d | 2026-05-05 | 2026-05-05 | PH01MS-1000 SS | 2025-03-24 | 2025-03-26 |  |
| PH01OF-101 |  | Demolition |  | 3d | 2026-05-05 | 2026-05-05 | PH01MS-1000 SS | 2025-03-27 | 2025-03-29 |  |
| PH01OF-102 |  | Frame walls |  | 2d | 2026-05-05 | 2026-05-05 | ISSU04.20, PH01OF-101, PH01OF-100, PH01MS-1000 SS | 2025-05-07 | 2025-05-08 |  |
| PH01OF-103 |  | Overhead Electrical Rough-in |  | 15d | 2026-05-05 | 2026-05-05 | PH01OF-100 | 2025-04-02 | 2025-04-18 |  |
| PH01OF-104 |  | Sprinkler Work |  | 15d | 2026-05-05 | 2026-05-05 | PRMT-1020 | 2025-04-19 | 2025-05-06 |  |
| PH01OF-105 |  | Rough-in walls |  | 10d | 2026-05-05 | 2026-05-05 | PH01OF-135 FF, PH01OF-100, PH01OF-102 SS | 2025-05-07 | 2025-05-17 |  |
| PH01OF-106 |  | Wall Close-in Inspections |  | 2d | 2026-05-05 | 2026-05-05 | PH01OF-105 FF | 2025-06-19 | 2025-06-20 | VA-DC1-Calendar 01 - 5 Day w/holiday (No Pats Day) |
| PH01OF-107 |  | Install drywall |  | 15d | 2026-05-05 | 2026-05-05 | PH01OF-105 FF, PH01OF-106 FF | 2025-06-12 | 2025-06-28 |  |
| PH01OF-108 |  | Finishes drywall |  | 7d | 2026-05-05 | 2026-05-05 | PH01OF-107 FF | 2025-07-07 | 2025-07-14 |  |
| PH01OF-109 |  | Painting 1st coat |  | 5d | 2026-05-05 | 2026-05-05 | PH01OF-110 FF | 2025-07-03 | 2025-07-08 |  |
| PH01OF-110 |  | Install ACT Ceilling Grid |  | 3d | 2026-05-05 | 2026-05-05 | PH01OF-155, PH01OF-165 | 2025-08-11 | 2025-08-13 |  |
| PH01OF-111 |  | Install Security Turnstile |  | 5d | 2026-05-05 | 2026-05-05 | PH01OF-110 FF | 2025-07-17 | 2025-07-22 |  |
| PH01OF-112 |  | Install Wall Devices |  | 7d | 2026-05-05 | 2026-05-05 | PH01OF-106 | 2025-08-13 | 2025-08-20 |  |
| PH01OF-113 |  | Install Lights |  | 5d | 2026-05-05 | 2026-05-05 | ISSU07.10, PH01OF-110, PH01CFC-140 | 2025-08-20 | 2025-08-25 |  |
| PH01OF-114 |  | Sprinkler Heads in ACT Tile Area |  | 5d | 2026-05-05 | 2026-05-05 | PRMT-1020 | 2025-08-13 | 2025-08-18 |  |
| PH01OF-115 |  | Ceiling Close-in Inspections |  | 2d | 2026-05-05 | 2026-05-05 | PH01OF-155, PH01OF-145, PH01OF-155 FF | 2025-08-28 | 2025-08-29 | VA-DC1-Calendar 01 - 5 Day w/holiday (No Pats Day) |
| PH01OF-116 |  | Install ACT tile |  | 3d | 2026-05-05 | 2026-05-05 | PH01OF-104 | 2025-08-28 | 2025-08-30 |  |
| PH01OF-117 |  | Security/Power for Turnstile |  | 8d | 2026-05-05 | 2026-05-05 | PH01OF-111 FF | 2025-08-26 | 2025-09-05 | Calendar 01 - 5 Day w/holidays (No Pats Day) |
| PH01OF-118 |  | Install mill work / countertop |  | 5d | 2026-05-05 | 2026-05-05 | PH01OF-108, PH01OF-114 FF, PH01OF-175 FF, PH01OF-116 FF | 2025-09-03 | 2025-09-08 |  |
| PH01OF-119 |  | Electrical trim out |  | 3d | 2026-05-05 | 2026-05-05 | PH01OF-103, PH01OF-113 FF, PH01OF-122, PH01OF-118, PH01OF-112 | 2025-09-15 | 2025-09-17 |  |
| PH01OF-120 |  | Plumbing top out |  | 1d | 2026-05-05 | 2026-05-05 | PH01OF-118 FF | 2025-09-11 | 2025-09-11 |  |
| PH01OF-121 |  | HVAC Top out |  | 1d | 2026-05-05 | 2026-05-05 | PH01OF-118 FF | 2025-09-11 | 2025-09-11 |  |
| PH01OF-122 |  | Painting 2 nd coat |  | 5d | 2026-05-05 | 2026-05-05 | PH01OF-185 FF, PH01OF-175 FF, PH01OF-121 FF, PH01OF-120 FF, PH01OF-116 FF | 2025-09-06 | 2025-09-11 |  |
| PH01OF-123 |  | Flooring install |  | 5d | 2026-05-05 | 2026-05-05 | PH01OF-122 FF, PH01OF-185 FF, PH01OF-118 FF | 2025-09-11 | 2025-09-16 |  |
| PH01OF-124 |  | Furniture install |  | 5d | 2026-05-05 | 2026-05-05 | PH01OF-122, PH01OF-123 SS | 2025-09-12 | 2025-09-17 |  |
| PH01OF-125 |  | Electrical hook up of furniture |  | 5d | 2026-05-05 | 2026-05-05 | PH01OF-124 SS | 2025-09-12 | 2025-09-17 |  |
| PH01OF-130 |  | Complete and Test Turnstile |  | 3d | 2026-05-05 | 2026-05-05 | ISSU13.80, PH01OF-117 | 2025-09-11 | 2025-09-15 | Calendar 01 - 5 Day w/holidays (No Pats Day) |
| PH01OF-132 |  | Inspection Finals |  | 1d | 2026-05-05 | 2026-05-05 | PH01OF-125 | 2025-09-19 | 2025-09-19 | Calendar 01 - 5 Day w/holidays (No Pats Day) |
| PH01OF-135 |  | CRAH Delivery | milestone | 0d | 2026-05-05 | 2026-05-05 | ISSU04.20 FF, PH01CFC-125 FF | 2025-05-13 | 2025-05-13 |  |
| PH01OF-145 |  | Duct Work Rough-in 1st Floor |  | 5d | 2026-05-05 | 2026-05-05 | ISSU03.20, PH01OF-104 FF | 2025-06-10 | 2025-06-14 |  |
| PH01OF-155 |  | Duct Work Rough-in 2nd Floor |  | 12d | 2026-05-05 | 2026-05-05 | PH01OF-100 | 2025-05-20 | 2025-06-02 |  |
| PH01OF-165 |  | Install VAVs |  | 12d | 2026-05-05 | 2026-05-05 | PH01OF-155 SS, PH01CFC-150 | 2025-05-20 | 2025-06-02 |  |
| PH01OF-175 |  | Install Hanging Light Fixtures |  | 12d | 2026-05-05 | 2026-05-05 | PH01OF-155 FF, PH01CFC-140 | 2025-05-17 | 2025-05-30 |  |
| PH01OF-185 |  | Install Storefront |  | 5d | 2026-05-05 | 2026-05-05 | PH01OF-106 | 2025-08-13 | 2025-08-18 |  |

| ID | WBS | Activity | Duration | Start | Finish | Predecessors | Planned start | Planned finish | Calendar |
| --- | --- | --- | --- | --- | --- | --- | --- | --- | --- |
|  | 1 | **MDF Room 249** |  | 2026-05-05 | 2026-05-05 |  |  |  |  |
| PH01OF-126 |  | CRAH unit connection to chilled water | 3d | 2026-05-05 | 2026-05-05 | PH01OF-109 | 2025-08-27 | 2025-08-29 | Calendar 01 - 5 Day w/holidays (No Pats Day) |
| PH01OF-127 |  | CRAH Electrical Startup | 2d | 2026-05-05 | 2026-05-05 | PH01OF-126 | 2025-09-02 | 2025-09-03 | Calendar 01 - 5 Day w/holidays (No Pats Day) |
| PH01OF-128 |  | CRAH Mechanical Startup | 2d | 2026-05-05 | 2026-05-05 | ISSU19.20, PH01OF-127 FF | 2025-09-04 | 2025-09-05 | Calendar 01 - 5 Day w/holidays (No Pats Day) |
| PH01OF-131 |  | Turnover of MDF Room | 1d | 2026-05-05 | 2026-05-05 | PH01OF-132, ISSU28.20 | 2025-09-22 | 2025-09-22 | Calendar 01 - 5 Day w/holidays (No Pats Day) |
|  | Battery Room 130 | **Battery Room 130** |  | 2026-05-05 | 2026-05-05 |  |  |  |  |
| PH01OF-129 |  | Battery Room Completion | 1d | 2026-05-05 | 2026-05-05 | PH01OF-132, PH01OF-115 | 2025-09-22 | 2025-09-22 | Calendar 01 - 5 Day w/holidays (No Pats Day) |
|  | 1.17.2 | **BMS - Phase 1 / CR-6** |  | 2026-05-05 | 2026-05-05 |  |  |  |  |
| PH01BMS-100 |  | Rough-in - BMS | 15d | 2026-05-05 | 2026-05-05 | PH01OF-135, PH01DH-123 SS, PH01MS-1000 SS | 2025-05-27 | 2025-06-12 |  |
| PH01BMS-101 |  | Install Wiring/Terminate - BMS | 15d | 2026-05-05 | 2026-05-05 | PH01BMS-100 | 2025-06-13 | 2025-06-30 |  |
| PH01BMS-102 |  | BMS Ready for H2C | 1d | 2026-05-05 | 2026-05-05 | PH01BMS-101, PH01BMS-103 | 2025-09-02 | 2025-09-02 |  |
| PH01BMS-103 |  | BMS Ready for (NEA) | 1d | 2026-05-05 | 2026-05-05 | PH01BMS-101 | 2025-08-05 | 2025-08-05 |  |
|  | 1.17.3 | **EPMS - Phase 1 / CR-6** |  | 2026-05-05 | 2026-05-05 |  |  |  |  |
| PH01EPMS-100 |  | Rough-in - EPMS | 15d | 2026-05-05 | 2026-05-05 | PH01DH-123, PH01ER-149 FF, PH01MS-1000 SS | 2025-04-17 | 2025-05-03 |  |
| PH01EPMS-101 |  | Install Wiring/Terminate - EPMS | 15d | 2026-05-05 | 2026-05-05 | PH01EPMS-100 | 2025-05-14 | 2025-05-30 |  |
| PH01EPMS-102 |  | EPMS Ready for H2C | 1d | 2026-05-05 | 2026-05-05 | PH01EPMS-103 | 2025-09-02 | 2025-09-02 |  |
| PH01EPMS-103 |  | EPMS Ready for (NEA) | 1d | 2026-05-05 | 2026-05-05 | PH01EPMS-101 | 2025-08-05 | 2025-08-05 |  |
|  | 1.17.4 | **Data Hall - Phase 1 / CR-6** |  | 2026-05-05 | 2026-05-05 |  |  |  |  |
| BLTN02 |  | Install Bulletin 2 Electrical Rough-in Above Ceiling CR6 | 5d | 2026-05-05 | 2026-05-05 | BTN2-1060 | 2025-05-20 | 2025-05-24 |  |
| PH01DH-100 |  | Demo Mobilization | 4d | 2026-05-05 | 2026-05-05 | PH01DH-254 | 2025-03-24 | 2025-03-27 |  |
| PH01DH-102 |  | Install Existing Equipment Protection | 5d | 2026-05-05 | 2026-05-05 | PH01DH-254 | 2025-03-15 | 2025-03-20 |  |
| PH01DH-103 |  | LOTO - Start | 1d | 2026-05-05 | 2026-05-05 | PH01DH-104 SS, PH01MS-1000 SS | 2025-03-24 | 2025-03-24 |  |
| PH01DH-104 |  | Surgical Demo Ceiling - Section A | 5d | 2026-05-05 | 2026-05-05 | PH01ER-169 FF, PH01DH-100 FF, PH01DH-102 FF | 2025-03-24 | 2025-03-28 |  |
| PH01DH-105 |  | Re-install Ceiling Grid - Section A | 4d | 2026-05-05 | 2026-05-05 | PH01DH-106, PH01DH-103, PH01DH-104, PH01DH-144, PH01DH-194 | 2025-04-07 | 2025-04-10 |  |
| PH01DH-106 |  | Install Electrical Rough-in Above Ceiling - Section A | 10d | 2026-05-05 | 2026-05-05 | PH01DH-103 SS, PH01DH-104, PH01DH-154 FF, PH01DH-144 SS | 2025-03-26 | 2025-04-05 |  |
| PH01DH-107 |  | Fire protection drops Relocation - Section A | 6d | 2026-05-05 | 2026-05-05 | PH01DH-105 FF, PH01DH-104 SS, PH01DH-105 SS, PRMT-1020, PH01DH-105 | 2025-04-29 | 2025-05-05 |  |
| PH01DH-108 |  | Install Cable Tray Below Grid - Section A | 7d | 2026-05-05 | 2026-05-05 | PH01DH-106 SS, PH01DH-105 SS | 2025-04-11 | 2025-04-18 |  |
| PH01DH-109 |  | Surgical Demo Ceiling - Section B | 5d | 2026-05-05 | 2026-05-05 | PH01DH-104 | 2025-03-24 | 2025-03-28 |  |
| PH01DH-110 |  | Re-install Ceiling Grid - Section B | 5d | 2026-05-05 | 2026-05-05 | PH01DH-111, PH01DH-105 | 2025-04-15 | 2025-04-19 |  |
| PH01DH-111 |  | Install Electrical Rough-in Above Ceiling - Section B | 10d | 2026-05-05 | 2026-05-05 | PH01DH-106, PH01DH-164, PH01DH-174 | 2025-04-09 | 2025-04-19 |  |
| PH01DH-112 |  | Fire protection drops Relocation - Section B | 15d | 2026-05-05 | 2026-05-05 | PH01DH-107, PRMT-1020, PH01DH-110 | 2025-05-06 | 2025-05-22 |  |
| PH01DH-113 |  | Surgical Demo Ceiling - Section C | 5d | 2026-05-05 | 2026-05-05 | PH01DH-109 | 2025-03-31 | 2025-04-04 |  |
| PH01DH-114 |  | Re-install Ceiling Grid - Section C | 5d | 2026-05-05 | 2026-05-05 | PH01DH-115 FF, PH01DH-110 | 2025-04-22 | 2025-04-26 |  |
| PH01DH-115 |  | Install Electrical Rough-in Above Ceiling - Section C | 9d | 2026-05-05 | 2026-05-05 | PH01DH-111, PH01DH-184, PH01DH-244 | 2025-04-15 | 2025-04-24 |  |
| PH01DH-117 |  | Fire protection drops Relocation - Section C | 15d | 2026-05-05 | 2026-05-05 | PH01DH-112, PH01DH-114 FF, PRMT-1020, PH01DH-114 | 2025-05-06 | 2025-05-22 |  |
| PH01DH-118 |  | Install Lighting - Section C | 10d | 2026-05-05 | 2026-05-05 | ISSU07.10, PH01DH-115, PH01DH-133, PH01CFC-140, PH01DH-224 | 2025-06-10 | 2025-06-20 |  |
| PH01DH-119 |  | Install HAC | 10d | 2026-05-05 | 2026-05-05 | PH01DH-105, PH01DH-114, PH01CFC-120 | 2025-05-15 | 2025-05-26 |  |
| PH01DH-120 |  | Rough-in Light Fixtures and Lighting Controls | 10d | 2026-05-05 | 2026-05-05 | PH01DH-105 FF, PH01DH-114 | 2025-04-29 | 2025-05-09 |  |
| PH01DH-123 |  | Install RPP's | 12d | 2026-05-05 | 2026-05-05 | PH01CFC-130, PH01DH-105 SS | 2025-04-07 | 2025-04-19 |  |
| PH01DH-124 |  | Install ACT Ceiling Tile | 5d | 2026-05-05 | 2026-05-05 | PH01DH-117, PH01DH-118, PH01DH-120, PH01DH-234 | 2025-07-25 | 2025-07-30 |  |
| PH01DH-125 |  | Install Vesda | 5d | 2026-05-05 | 2026-05-05 | PH01DH-118, PH01DH-105, PH01DH-114 | 2025-06-03 | 2025-06-07 |  |
| PH01DH-126 |  | Pull MC Feeders* | 15d | 2026-05-05 | 2026-05-05 | PH01DH-105, PH01DH-110, PH01ER-149 | 2025-05-30 | 2025-06-16 |  |
| PH01DH-127 |  | Terminate MC Feeders | 15d | 2026-05-05 | 2026-05-05 | PH01DH-123, PH01DH-126 FF, PH01ER-149 | 2025-05-20 | 2025-06-05 |  |
| PH01DH-128 |  | Server Rack Whip Install | 15d | 2026-05-05 | 2026-05-05 | PH01DH-105, PH01DH-114, PH01DH-224, PH01DH-123, PH01CFC-130 | 2025-05-06 | 2025-05-22 |  |
| PH01DH-129 |  | LOTO - Finish | 1d | 2026-05-05 | 2026-05-05 | PH01DH-130 SS, PH01DH-124 | 2025-09-11 | 2025-09-11 |  |
| PH01DH-130 |  | Energization of Equipment | 20d | 2026-05-05 | 2026-05-05 | ISSU11.10 FF, PH01DH-128, PH01DH-127, PH01DH-120, PH01DH-125, PH01DH-126 | 2025-06-10 | 2025-07-02 |  |
| PH01DH-131 |  | Data Hall Ready for (NEA) | 1d | 2026-05-05 | 2026-05-05 | PH01DH-254.1 | 2025-08-05 | 2025-08-05 |  |
| PH01DH-132 |  | Data Hall Ready for H2C | 0d | 2026-05-05 | 2026-05-05 | ISSU15.10, PH01DH-129, PH01DH-130 | 2025-09-16 | 2025-09-16 |  |
| PH01DH-133 |  | Install Lighting - Section B | 10d | 2026-05-05 | 2026-05-05 | ISSU07.10, PH01DH-111, PH01DH-134, PH01CFC-140 | 2025-05-29 | 2025-06-09 |  |
| PH01DH-134 |  | Install Lighting - Section A | 10d | 2026-05-05 | 2026-05-05 | ISSU07.10 FF, PH01DH-105 SS, PH01DH-114, PH01CFC-140 | 2025-05-17 | 2025-05-28 |  |
| PH01DH-144 |  | Demo Drywall & Mesh for Cable Tray - Section A | 3d | 2026-05-05 | 2026-05-05 | PH01DH-104 FF, PH01ER-169 FF | 2025-03-24 | 2025-03-26 |  |
| PH01DH-154 |  | Removal of Electrical+Firesupression Clashes - Section A | 4d | 2026-05-05 | 2026-05-05 | PH01DH-104 SS | 2025-03-22 | 2025-03-26 |  |
| PH01DH-164 |  | Removal of Electrical+Firesupression Clashes - Section B | 4d | 2026-05-05 | 2026-05-05 | PH01DH-109 | 2025-03-31 | 2025-04-03 |  |
| PH01DH-174 |  | Demo Mesh for Cable Tray - Section B | 3d | 2026-05-05 | 2026-05-05 | PH01DH-109 FF | 2025-03-29 | 2025-04-01 |  |
| PH01DH-184 |  | Demo Drywall & Mesh for Cable Tray - Section C | 3d | 2026-05-05 | 2026-05-05 | PH01DH-113, PH01DH-174 | 2025-04-05 | 2025-04-08 |  |
| PH01DH-194 |  | Concrete Demo For Walls + Floors Data Hall | 6d | 2026-05-05 | 2026-05-05 | PH01DH-104 SS | 2025-03-27 | 2025-04-02 |  |
| PH01DH-214 |  | Install Cable Tray Below Grid - Section B | 7d | 2026-05-05 | 2026-05-05 | PH01DH-106 SS, PH01DH-105 SS, PH01DH-108 | 2025-04-19 | 2025-04-26 |  |
| PH01DH-224 |  | Install Cable Tray Below Grid - Section C | 7d | 2026-05-05 | 2026-05-05 | PH01DH-106 SS, PH01DH-105 SS, PH01DH-214 | 2025-04-22 | 2025-04-29 |  |
| PH01DH-234 |  | Ceiling Close-in Inspection | 8d | 2026-05-05 | 2026-05-05 | ISSU11.10 FF, BLTN02, PH01DH-115, PH01DH-111, PH01DH-133, PH01DH-118, PH01DH-110, PH01DH-134, PH01DH-120, PH01DH-117, PH01DH-114, PH01DH-107, PH01DH-112, PH01DH-125 | 2025-07-01 | 2025-07-11 | VA-DC1-Calendar 01 - 5 Day w/holiday (No Pats Day) |
| PH01DH-244 |  | Removal of Electrical+Firesupression Clashes - Section C | 2d | 2026-05-05 | 2026-05-05 | PH01DH-113 | 2025-04-05 | 2025-04-07 |  |
| PH01DH-254 |  | Early Access Data Hall | 5d | 2026-05-05 | 2026-05-05 | PO SS | 2025-03-10 | 2025-03-14 |  |
| PH01DH-254.1 |  | Perfect Positioning | 0d | 2026-05-05 | 2026-05-05 | ISSU21.10 FF, PH01DH-234, PH01DH-119 FF, PH01DH-105, PH01DH-114, PH01CFC-120 | 2025-07-28 | 2025-07-28 |  |

| ID | WBS | Activity | Duration | Start | Finish | Predecessors | Planned start | Planned finish |
| --- | --- | --- | --- | --- | --- | --- | --- | --- |
|  | 1.17.5 | **Electrical Rooms - Phase 1 / CR-6** |  | 2026-05-05 | 2026-05-05 |  |  |  |
| PH01ER-100 |  | Mobilization | 1d | 2026-05-05 | 2026-05-05 | PH01DH-254 | 2025-03-24 | 2025-03-24 |
| PH01ER-101 |  | MEP Layout | 4d | 2026-05-05 | 2026-05-05 | PH01MS-1000, PH01ER-169 SS | 2025-03-27 | 2025-03-31 |
| PH01ER-103 |  | LOTO Start | 1d | 2026-05-05 | 2026-05-05 | PH01ER-100, PH01MS-1000 | 2025-03-24 | 2025-03-24 |
| PH01ER-105 |  | Install Electrical Hangers | 5d | 2026-05-05 | 2026-05-05 | PH01ER-101 SS, PH01ER-103 | 2025-03-28 | 2025-04-02 |
| PH01ER-107 |  | Install Electrical Tray | 15d | 2026-05-05 | 2026-05-05 | PH01ER-105 SS, PH01ER-179 | 2025-04-01 | 2025-04-17 |
| PH01ER-111 |  | Install Electrical Equipment (CCS's, MSB Breakers) | 15d | 2026-05-05 | 2026-05-05 | PH01ER-107 FF, PH01CFC-125 FF | 2025-04-22 | 2025-05-08 |
| PH01ER-112 |  | Pull MC Feeders A | 15d | 2026-05-05 | 2026-05-05 | PH01ER-107 FF, PH01ER-204 FF, PH01ER-149 FF | 2025-04-18 | 2025-05-05 |
| PH01ER-114 |  | Terminate MC Feeders A | 15d | 2026-05-05 | 2026-05-05 | PH01ER-112, PH01ER-149 | 2025-05-06 | 2025-05-22 |
| PH01ER-115 |  | Energization of Equipment | 20d | 2026-05-05 | 2026-05-05 | ISSU11.10 FF, PH01ER-114, PH01ER-119 FF, PH01ER-139 FF | 2025-06-26 | 2025-07-18 |
| PH01ER-116 |  | Electrical Rooms Ready for (NEA) | 1d | 2026-05-05 | 2026-05-05 | PH01MS-1000 | 2025-08-05 | 2025-08-05 |
| PH01ER-117 |  | Electrical Rooms Ready for H2C | 1d | 2026-05-05 | 2026-05-05 | PH01ER-115, PH01ER-116 | 2025-10-01 | 2025-10-01 |
| PH01ER-118 |  | Electrical Rooms Ready for PHFO | 1d | 2026-05-05 | 2026-05-05 | PH01OF-119, PH01ER-116 | 2025-09-18 | 2025-09-18 |
| PH01ER-119 |  | LOTO Finish | 1d | 2026-05-05 | 2026-05-05 | PH01ER-114, PH01ER-139, PH01ER-111, PH01ER-159 FF | 2025-09-30 | 2025-09-30 |
| PH01ER-129 |  | Pull MC Feeders B | 15d | 2026-05-05 | 2026-05-05 | PH01ER-107, PH01ER-204, PH01ER-112 | 2025-05-23 | 2025-06-09 |
| PH01ER-139 |  | Terminate MC Feeders B | 15d | 2026-05-05 | 2026-05-05 | PH01ER-129 | 2025-06-09 | 2025-06-25 |
| PH01ER-149 |  | Install Electrical ATS | 5d | 2026-05-05 | 2026-05-05 | PH01CFC-115 | 2025-04-15 | 2025-04-19 |
| PH01ER-159 |  | Install Electrical Bus Duct | 10d | 2026-05-05 | 2026-05-05 | PH01CFC-105 FF | 2025-06-14 | 2025-06-25 |
| PH01ER-169 |  | Temporary Power | 3d | 2026-05-05 | 2026-05-05 | PH01ER-100 | 2025-03-24 | 2025-03-26 |
| PH01ER-179 |  | Demo Wall Penetrations | 3d | 2026-05-05 | 2026-05-05 | PH01ER-169 SS | 2025-03-20 | 2025-03-22 |
| PH01ER-204 |  | Concrete Demo For Walls + Floors Electrical Rooms | 6d | 2026-05-05 | 2026-05-05 | PH01DH-194 | 2025-04-03 | 2025-04-09 |
|  | 1 | **Penthouse - Phase 1 / CR-6** |  | 2026-05-05 | 2026-05-05 |  |  |  |
| PH01-PH-100 |  | Pull Feeders Phase 1 | 10d | 2026-05-05 | 2026-05-05 | PH01MS-1000 SS, PRMT-1020 | 2025-04-09 | 2025-04-19 |
| PH01-PH-110 |  | Terminate Feeders Phase 1 | 15d | 2026-05-05 | 2026-05-05 | PH01-PH-100 | 2025-04-25 | 2025-05-12 |

| ID | WBS | Activity | Duration | Start | Finish | Predecessors | Planned start | Planned finish | Total float | Free float | Calendar | 12 - GC - Export_to_Procore |
| --- | --- | --- | --- | --- | --- | --- | --- | --- | --- | --- | --- | --- |
|  | 1.17.6 | **Site Security - Phase 1 / CR-6** |  | 2026-05-05 | 2026-06-10 |  |  |  |  |  |  |  |
| PH01S-100 |  | Fencing Delivery | 1d | 2026-05-05 | 2026-05-05 | PO SS | 2025-07-07 | 2025-07-07 |  |  | Calendar 01 - 5 Day w/holidays (No Pats Day) |  |
| PH01S-101 |  | Stakeout | 5d | 2026-05-05 | 2026-05-05 | PH01S-100 | 2025-07-22 | 2025-07-28 |  |  | Calendar 01 - 5 Day w/holidays (No Pats Day) |  |
| PH01S-102 |  | Install Fence | 40d | 2026-05-05 | 2026-05-05 | ISSU24.20 FF, PH01S-104 FF, PH01S-101 | 2025-07-25 | 2025-09-19 |  |  | Calendar 01 - 5 Day w/holidays (No Pats Day) |  |
| PH01S-104 |  | Gates Delivery | 90d | 2026-05-05 | 2026-05-05 | PO SS | 2025-04-30 | 2025-09-05 |  |  | Calendar 01 - 5 Day w/holidays (No Pats Day) |  |
| PH01S-107 |  | Gates Stakeout | 5d | 2026-05-05 | 2026-05-05 | ISSU27.10 | 2025-10-08 | 2025-10-15 |  |  | Calendar 01 - 5 Day w/holidays (No Pats Day) |  |
| PH01S-108 |  | Gates Foundations | 15d | 2026-05-05 | 2026-05-26 | PH01S-107 |  |  | 77d | 0d | Calendar 01 - 5 Day w/holidays (No Pats Day) | Y |
| PH01S-109 |  | Install Gates | 10d | 2026-05-05 | 2026-05-18 | PH01S-108 SS |  |  | 82d |  | Calendar 01 - 5 Day w/holidays (No Pats Day) | Y |
| PH01S-105 |  | Guard Booth Concrete Pad | 10d | 2026-05-26 | 2026-06-08 | PH01S-107, ISSU34.30 |  |  | 37d | 0d | Calendar 01 - 5 Day w/holidays (No Pats Day) | Y |
| PH01S-106 |  | Install Guard Booth | 2d | 2026-06-09 | 2026-06-10 | PH01S-105 |  |  | 37d | 66d | Calendar 01 - 5 Day w/holidays (No Pats Day) | Y |
|  | PH2 | **Phase 2 / CR-7** |  | 2026-05-05 | 2026-05-05 |  |  |  |  |  |  |  |
|  | 1.18.3 | **Data Hall - Phase 2 / CR-7** |  | 2026-05-05 | 2026-05-05 |  |  |  |  |  |  |  |
| BLTN02.2 |  | Install Bulletin 2 Electrical Rough-in Above Ceiling CR7 | 5d | 2026-05-05 | 2026-05-05 | BTN2-1070 | 2025-05-20 | 2025-05-24 |  |  |  |  |
| PH02DH-100 |  | Demo Mobilization | 5d | 2026-05-05 | 2026-05-05 | PH02MS-1000 SS | 2025-04-14 | 2025-04-18 |  |  |  |  |
| PH02DH-102 |  | Install Existing Equipment Protection | 5d | 2026-05-05 | 2026-05-05 | PH01DH-102, PO SS | 2025-03-22 | 2025-03-27 |  |  |  |  |
| PH02DH-103 |  | LOTO - Start | 1d | 2026-05-05 | 2026-05-05 | PH02MS-1000 SS, PH02DH-104 SS | 2025-04-14 | 2025-04-14 |  |  |  |  |
| PH02DH-104 |  | Surgical Demo Ceiling - Section A | 5d | 2026-05-05 | 2026-05-05 | PH02ER-169 SS, PH02DH-100 FF, PH02DH-102 | 2025-04-14 | 2025-04-18 |  |  |  |  |
| PH02DH-105 |  | Re-install Ceiling Grid - Section A | 2d | 2026-05-05 | 2026-05-05 | PH02DH-106, PH02DH-103, PH02DH-104, PH02DH-144, PH02DH-194 | 2025-05-13 | 2025-05-14 |  |  |  |  |
| PH02DH-106 |  | Install Electrical Rough-in Above Ceiling - Section A | 10d | 2026-05-05 | 2026-05-05 | PH02DH-103 SS, PH02DH-104 SS, PH02DH-154 SS, PH02DH-144 SS, PH02DH-194 SS | 2025-04-15 | 2025-04-25 |  |  |  |  |
| PH02DH-107 |  | Fire protection drops Relocation - Section A | 6d | 2026-05-05 | 2026-05-05 | PH02DH-104 SS, PRMT-1020 | 2025-05-13 | 2025-05-19 |  |  |  |  |
| PH02DH-108 |  | Install Cable Tray Below Grid - Section A | 7d | 2026-05-05 | 2026-05-05 | PH02DH-106 SS | 2025-05-14 | 2025-05-21 |  |  |  |  |
| PH02DH-109 |  | Surgical Demo Ceiling - Section B | 5d | 2026-05-05 | 2026-05-05 | PH02DH-104 | 2025-04-15 | 2025-04-19 |  |  |  |  |
| PH02DH-110 |  | Re-install Ceiling Grid - Section B | 5d | 2026-05-05 | 2026-05-05 | PH02DH-111 FF, PH02DH-105 | 2025-05-15 | 2025-05-20 |  |  |  |  |
| PH02DH-111 |  | Install Electrical Rough-in Above Ceiling - Section B | 10d | 2026-05-05 | 2026-05-05 | PH02DH-106 FF, PH02DH-164, PH02DH-174 | 2025-04-26 | 2025-05-07 |  |  |  |  |
| PH02DH-112 |  | Fire protection drops Relocation - Section B | 15d | 2026-05-05 | 2026-05-05 | PH02DH-107, PRMT-1020 | 2025-05-20 | 2025-06-05 |  |  |  |  |
| PH02DH-113 |  | Surgical Demo Ceiling - Section C | 5d | 2026-05-05 | 2026-05-05 | PH02DH-109 | 2025-04-21 | 2025-04-25 |  |  |  |  |
| PH02DH-114 |  | Re-install Ceiling Grid - Section C | 5d | 2026-05-05 | 2026-05-05 | PH02DH-115 FF, PH02DH-110 | 2025-05-21 | 2025-05-26 |  |  |  |  |
| PH02DH-115 |  | Install Electrical Rough-in Above Ceiling - Section C | 9d | 2026-05-05 | 2026-05-05 | PH02DH-111, PH02DH-184, PH02DH-244 | 2025-05-09 | 2025-05-19 |  |  |  |  |
| PH02DH-117 |  | Fire protection drops Relocation - Section C | 15d | 2026-05-05 | 2026-05-05 | PH02DH-112, PH02DH-114 FF, PRMT-1020, PH02DH-114 | 2025-06-03 | 2025-06-19 |  |  |  |  |
| PH02DH-118 |  | Install Lighting - Section C | 10d | 2026-05-05 | 2026-05-05 | BLTN02.2, ISSU07.10, PH02DH-115, PH02DH-133, PH01CFC-140, PH02DH-224 | 2025-07-08 | 2025-07-18 |  |  |  |  |
| PH02DH-119 |  | Install HAC | 10d | 2026-05-05 | 2026-05-05 | PH02DH-128, PH02CFC-120, PH02DH-105, PH02DH-114 | 2025-07-02 | 2025-07-12 |  |  |  |  |
| PH02DH-120 |  | Rough-in Light Fixtures and Lighting Controls | 10d | 2026-05-05 | 2026-05-05 | PH02DH-105 FF, PH02DH-114 | 2025-05-20 | 2025-05-30 |  |  |  |  |
| PH02DH-123 |  | Install RPP's | 12d | 2026-05-05 | 2026-05-05 | PH02CFC-130, PH02DH-105 FF | 2025-05-03 | 2025-05-16 |  |  |  |  |
| PH02DH-124 |  | Install ACT Ceiling Tile | 5d | 2026-05-05 | 2026-05-05 | PH02DH-117, PH02DH-118, PH02DH-120, PH02DH-234 | 2025-08-09 | 2025-08-14 |  |  |  |  |
| PH02DH-125 |  | Install Vesda | 5d | 2026-05-05 | 2026-05-05 | PH02DH-118, PH02DH-105, PH02DH-114 | 2025-07-22 | 2025-07-26 |  |  |  |  |
| PH02DH-126 |  | Pull MC Feeders | 15d | 2026-05-05 | 2026-05-05 | BLTN02.2 FF, PH02ER-149, PH02DH-105, PH02DH-110 | 2025-06-03 | 2025-06-19 |  |  |  |  |
| PH02DH-127 |  | Terminate MC Feeders | 10d | 2026-05-05 | 2026-05-05 | PH02ER-149, PH02DH-123, PH02DH-126 FF | 2025-06-17 | 2025-06-27 |  |  |  |  |
| PH02DH-128 |  | Server Rack Whip Install | 15d | 2026-05-05 | 2026-05-05 | PH02CFC-130, PH02DH-105, PH02DH-114, PH02DH-224, PH02DH-123 | 2025-06-07 | 2025-06-24 |  |  |  |  |
| PH02DH-129 |  | LOTO - Finish | 1d | 2026-05-05 | 2026-05-05 | PH02DH-130 SS, PH02DH-124 | 2025-09-11 | 2025-09-11 |  |  |  |  |
| PH02DH-130 |  | Energization of Equipment | 24d | 2026-05-05 | 2026-05-05 | PH02DH-128, PH02DH-127, PH02DH-120, PH02DH-126 | 2025-07-18 | 2025-08-14 |  |  |  |  |
| PH02DH-131 |  | Data Hall Ready for (NEA) | 1d | 2026-05-05 | 2026-05-05 | PH02DH-254 | 2025-09-02 | 2025-09-02 |  |  |  |  |
| PH02DH-132 |  | Data Hall Ready for H2C | 1d | 2026-05-05 | 2026-05-05 | PH02DH-129, PH02DH-130 | 2025-09-13 | 2025-09-13 |  |  |  |  |
| PH02DH-133 |  | Install Lighting - Section B | 10d | 2026-05-05 | 2026-05-05 | ISSU07.10, PH02DH-111, PH02DH-134, PH01CFC-140 | 2025-06-30 | 2025-07-10 |  |  |  |  |
| PH02DH-134 |  | Install Lighting - Section A | 10d | 2026-05-05 | 2026-05-05 | ISSU07.10, PH02DH-105 SS, PH02DH-114, PH01CFC-140 | 2025-06-03 | 2025-06-13 |  |  |  |  |
| PH02DH-144 |  | Demo Drywall & Mesh for Cable Tray - Section A | 5d | 2026-05-05 | 2026-05-05 | PH02ER-169, PH02DH-104 SS | 2025-04-15 | 2025-04-19 |  |  |  |  |
| PH02DH-154 |  | Removal of Electrical+Firesupression Clashes - Section A | 4d | 2026-05-05 | 2026-05-05 | PH02DH-104 SS | 2025-04-14 | 2025-04-17 |  |  |  |  |
| PH02DH-164 |  | Removal of Electrical+Firesupression Clashes - Section B | 4d | 2026-05-05 | 2026-05-05 | PH02DH-109 FF | 2025-04-17 | 2025-04-21 |  |  |  |  |
| PH02DH-174 |  | Demo Mesh for Cable Tray - Section B | 3d | 2026-05-05 | 2026-05-05 | PH02DH-109 | 2025-04-21 | 2025-04-23 |  |  |  |  |
| PH02DH-184 |  | Demo Drywall & Mesh for Cable Tray - Section C | 3d | 2026-05-05 | 2026-05-05 | PH02DH-113, PH02DH-174 | 2025-04-22 | 2025-04-24 |  |  |  |  |
| PH02DH-194 |  | Concrete Demo For Walls + Floors Data Hall | 6d | 2026-05-05 | 2026-05-05 | PH02DH-104 SS | 2025-04-14 | 2025-04-19 |  |  |  |  |
| PH02DH-214 |  | Install Cable Tray Below Grid - Section B | 7d | 2026-05-05 | 2026-05-05 | PH02DH-106 SS, PH02DH-105 SS, PH02DH-108 | 2025-05-17 | 2025-05-24 |  |  |  |  |
| PH02DH-224 |  | Install Cable Tray Below Grid - Section C | 7d | 2026-05-05 | 2026-05-05 | PH02DH-106 SS, PH02DH-105 SS, PH02DH-214 | 2025-05-20 | 2025-05-27 |  |  |  |  |
| PH02DH-234 |  | Ceiling Close-in Inspection | 2d | 2026-05-05 | 2026-05-05 | BLTN02.2, PH02DH-115, PH02DH-111, PH02DH-133, PH02DH-118, PH02DH-110, PH02DH-134, PH02DH-120, PH02DH-117, PH02DH-114, PH02DH-107, PH02DH-112, PH02DH-125 | 2025-08-08 | 2025-08-11 |  |  | VA-DC1-Calendar 01 - 5 Day w/holiday (No Pats Day) |  |
| PH02DH-244 |  | Removal of Electrical+Firesupression Clashes - Section C | 2d | 2026-05-05 | 2026-05-05 | PH02DH-113 | 2025-04-29 | 2025-04-30 |  |  |  |  |
| PH02DH-254 |  | Perfect Positioning | 4d | 2026-05-05 | 2026-05-05 | PH01DH-254.1, PH02DH-119, PH02DH-105, PH02DH-114 | 2025-08-02 | 2025-08-06 |  |  |  |  |

| ID | WBS | Activity | Duration | Start | Finish | Predecessors | Planned start | Planned finish | Calendar | 12 - GC - Export_to_Procore |
| --- | --- | --- | --- | --- | --- | --- | --- | --- | --- | --- |
|  | 1.18.1 | **BMS - Phase 2 / CR-7** |  | 2026-05-05 | 2026-05-05 |  |  |  |  |  |
| PH02BMS-100 |  | Rough-in - BMS | 15d | 2026-05-05 | 2026-05-05 | PH02DH-123, PH02MS-1000 SS | 2025-06-10 | 2025-06-26 |  |  |
| PH02BMS-101 |  | Install Wiring/Terminate - BMS | 15d | 2026-05-05 | 2026-05-05 | PH02BMS-100 | 2025-07-02 | 2025-07-18 |  |  |
| PH02BMS-102 |  | BMS Ready for (NEA) | 1d | 2026-05-05 | 2026-05-05 | PH02BMS-101 | 2025-08-09 | 2025-08-09 |  |  |
| PH02BMS-103 |  | BMS Ready for H2C | 1d | 2026-05-05 | 2026-05-05 | PH02BMS-102 FF | 2025-09-02 | 2025-09-02 |  |  |
|  | 1.18.2 | **EPMS - Phase 2 / CR-7** |  | 2026-05-05 | 2026-05-05 |  |  |  |  |  |
| PH02EPMS-100 |  | Rough-in - EPMS | 15d | 2026-05-05 | 2026-05-05 | PH02DH-123, PH02ER-149 FF, PH02MS-1000 SS | 2025-07-02 | 2025-07-18 |  |  |
| PH02EPMS-101 |  | Install Wiring/Terminate | 15d | 2026-05-05 | 2026-05-05 | PH02EPMS-100 | 2025-07-18 | 2025-08-04 |  |  |
| PH02EPMS-102 |  | EPMS Ready for (NEA) | 1d | 2026-05-05 | 2026-05-05 | PH02EPMS-101 | 2025-08-09 | 2025-08-09 |  |  |
| PH02EPMS-103 |  | EPMS Ready for H2C | 1d | 2026-05-05 | 2026-05-05 | PH02EPMS-102 | 2025-09-02 | 2025-09-02 |  |  |
|  | 1.17.5 | **Electrical Rooms - Phase 2 / CR-7** |  | 2026-05-05 | 2026-05-05 |  |  |  |  |  |
| PH02ER-100 |  | Mobilization | 1d | 2026-05-05 | 2026-05-05 | PH02MS-1000 SF, PH02MS-1000 SS | 2025-04-14 | 2025-04-14 |  |  |
| PH02ER-101 |  | MEP Layout | 4d | 2026-05-05 | 2026-05-05 | PH02ER-169 SS, PH02MS-1000 SS | 2025-04-16 | 2025-04-19 |  |  |
| PH02ER-103 |  | LOTO Start | 1d | 2026-05-05 | 2026-05-05 | PH02ER-100, PH02MS-1000 SS | 2025-04-15 | 2025-04-15 |  |  |
| PH02ER-105 |  | Install Electrical Hangers | 5d | 2026-05-05 | 2026-05-05 | PH02ER-101, PH02ER-103 SS | 2025-04-21 | 2025-04-25 |  |  |
| PH02ER-106 |  | Electrical / FA / Sec. Rough-in Walls | 7d | 2026-05-05 | 2026-05-05 | PH02MS-1000 SS | 2025-04-14 | 2025-04-21 |  |  |
| PH02ER-107 |  | Install Electrical Tray | 6d | 2026-05-05 | 2026-05-05 | PH02ER-105, PH02ER-179 | 2025-05-13 | 2025-05-19 |  |  |
| PH02ER-108 |  | Inspections Walls | 2d | 2026-05-05 | 2026-05-05 | PH02ER-106 | 2025-04-22 | 2025-04-23 | VA-DC1-Calendar 01 - 5 Day w/holiday (No Pats Day) |  |
| PH02ER-111 |  | Install Electrical Equipment (CCS's, MSB Breakers) | 15d | 2026-05-05 | 2026-05-05 | PH02ER-107, PH02CFC-125 | 2025-06-21 | 2025-07-08 |  |  |
| PH02ER-112 |  | Pull MC Feeders A | 10d | 2026-05-05 | 2026-05-05 | PH02ER-107 FF, PH02ER-204, PH02ER-149 | 2025-05-13 | 2025-05-23 |  |  |
| PH02ER-114 |  | Terminate MC Feeders A | 13d | 2026-05-05 | 2026-05-05 | PH02ER-112, PH02ER-149 | 2025-06-24 | 2025-07-08 |  |  |
| PH02ER-115 |  | Energization of Equipment | 20d | 2026-05-05 | 2026-05-05 | PH02ER-114, PH02ER-119 FF, PH02ER-139 | 2025-07-01 | 2025-07-23 |  | Y |
| PH02ER-116 |  | Electrical Rooms Ready for (NEA) | 1d | 2026-05-05 | 2026-05-05 | PH02ER-115 FF, PH02ER-108 | 2025-10-07 | 2025-10-07 |  | Y |
| PH02ER-117 |  | Electrical Rooms Ready for H2C | 1d | 2026-05-05 | 2026-05-05 | PH02ER-115 FF, PH02ER-116 FF | 2025-10-07 | 2025-10-07 |  | Y |
| PH02ER-118 |  | Electrical Rooms Ready for PFHO | 1d | 2026-05-05 | 2026-05-05 | PH02ER-116 | 2025-10-03 | 2025-10-03 |  | Y |
| PH02ER-119 |  | LOTO Finish | 1d | 2026-05-05 | 2026-05-05 | PH02ER-114, PH02ER-139 FF, PH02ER-111, PH02ER-159 | 2025-10-07 | 2025-10-07 |  | Y |
| PH02ER-129 |  | Pull MC Feeders B | 15d | 2026-05-05 | 2026-05-05 | PH02ER-107 FF, PH02ER-204, PH02ER-112 FF | 2025-06-03 | 2025-06-19 |  |  |
| PH02ER-139 |  | Terminate MC Feeders B | 15d | 2026-05-05 | 2026-05-05 | PH02ER-129, PH02ER-114 SS | 2025-06-25 | 2025-07-11 |  |  |
| PH02ER-149 |  | Install Electrical ATS | 5d | 2026-05-05 | 2026-05-05 | PH02ER-100, PH02CFC-115 | 2025-04-22 | 2025-04-26 |  |  |
| PH02ER-159 |  | Install Electrical Bus Duct | 10d | 2026-05-05 | 2026-05-05 | ISSU05.10 FF, PH02CFC-105 FF | 2025-06-21 | 2025-07-02 |  | Y |
| PH02ER-169 |  | Temporary Power | 3d | 2026-05-05 | 2026-05-05 | PH02MS-1000 SS | 2025-04-14 | 2025-04-16 |  |  |
| PH02ER-179 |  | Demo Wall Penetrations | 3d | 2026-05-05 | 2026-05-05 | PH02ER-169 | 2025-04-15 | 2025-04-17 |  |  |
| PH02ER-204 |  | Concrete Demo For Walls + Floors Electrical Rooms | 6d | 2026-05-05 | 2026-05-05 | PH02DH-194 FF | 2025-04-21 | 2025-04-26 |  |  |

| ID | WBS | Activity | Duration | Start | Finish | Predecessors | Planned start | Planned finish | Calendar | 12 - GC - Export_to_Procore |
| --- | --- | --- | --- | --- | --- | --- | --- | --- | --- | --- |
|  | 1 | **Penthouse - Phase 2 / CR-7** |  | 2026-05-05 | 2026-05-05 |  |  |  |  |  |
| PH02-PH-100 |  | Pull Feeders Phase 2 | 10d | 2026-05-05 | 2026-05-05 | PH02MS-1000 SS | 2025-05-13 | 2025-05-23 |  |  |
| PH02-PH-110 |  | Terminate Feeders Phase 2 | 15d | 2026-05-05 | 2026-05-05 | PH02-PH-100 | 2025-06-03 | 2025-06-19 |  |  |
|  | PH3 | **Phase 3 / CR-2** |  | 2026-05-05 | 2026-05-05 |  |  |  |  |  |
|  | 1.18.3 | **Data Hall - Phase 3 / CR-2** |  | 2026-05-05 | 2026-05-05 |  |  |  |  |  |
| PH03DH-100 |  | Demo Mobilization | 5d | 2026-05-05 | 2026-05-05 | PH02DH-100 | 2025-06-09 | 2025-06-13 |  |  |
| PH03DH-102 |  | Install Existing Equipment Protection | 5d | 2026-05-05 | 2026-05-05 | PH02DH-102, PO SS | 2025-06-09 | 2025-06-13 |  |  |
| PH03DH-103 |  | LOTO - Start | 1d | 2026-05-05 | 2026-05-05 | PH02MS-1000 SS, PH03DH-104 SS | 2025-06-12 | 2025-06-12 |  |  |
| PH03DH-104 |  | Surgical Demo Ceiling - Section A | 5d | 2026-05-05 | 2026-05-05 | PH03ER-169, PH03DH-100 FF, PH03DH-102 | 2025-06-12 | 2025-06-17 |  |  |
| PH03DH-105 |  | Re-install Ceiling Grid - Section A | 4d | 2026-05-05 | 2026-05-05 | PH03DH-106, PH03DH-103, PH03DH-104, PH03DH-144, PH03DH-194 | 2025-06-23 | 2025-06-26 |  |  |
| PH03DH-106 |  | Install Electrical Rough-in Above Ceiling - Section A | 10d | 2026-05-05 | 2026-05-05 | PH03DH-103 SS, PH03DH-104 SS, PH03DH-154 SS, PH03DH-144 SS, PH03DH-194 SS | 2025-06-11 | 2025-06-21 |  |  |
| PH03DH-107 |  | Fire protection drops Relocation - Section A | 6d | 2026-05-05 | 2026-05-05 | PH03DH-105 FF, PH03DH-104 SS, PH03DH-105 SS, PRMT-1020, PH03DH-105 | 2025-07-01 | 2025-07-07 |  |  |
| PH03DH-108 |  | Install Cable Tray Below Grid - Section A | 7d | 2026-05-05 | 2026-05-05 | PH03DH-106 SS, PH03DH-105 SS | 2025-07-01 | 2025-07-08 |  |  |
| PH03DH-109 |  | Surgical Demo Ceiling - Section B | 5d | 2026-05-05 | 2026-05-05 | PH03DH-104 | 2025-06-17 | 2025-06-21 |  |  |
| PH03DH-110 |  | Re-install Ceiling Grid - Section B | 5d | 2026-05-05 | 2026-05-05 | PH03DH-111 FF, PH03DH-105 | 2025-07-09 | 2025-07-14 |  |  |
| PH03DH-111 |  | Install Electrical Rough-in Above Ceiling - Section B | 10d | 2026-05-05 | 2026-05-05 | PH03DH-106, PH03DH-164, PH03DH-174 | 2025-07-01 | 2025-07-11 |  |  |
| PH03DH-112 |  | Fire protection drops Relocation - Section B | 15d | 2026-05-05 | 2026-05-05 | PH03DH-107, PRMT-1020, PH03DH-110 | 2025-07-01 | 2025-07-17 |  |  |
| PH03DH-113 |  | Surgical Demo Ceiling - Section C | 5d | 2026-05-05 | 2026-05-05 | PH03DH-109 | 2025-06-23 | 2025-06-27 |  |  |
| PH03DH-114 |  | Re-install Ceiling Grid - Section C | 5d | 2026-05-05 | 2026-05-05 | PH03DH-115 FF, PH03DH-110 | 2025-07-14 | 2025-07-18 |  |  |
| PH03DH-115 |  | Install Electrical Rough-in Above Ceiling - Section C | 9d | 2026-05-05 | 2026-05-05 | PH03DH-111, PH03DH-184, PH03DH-244 | 2025-07-09 | 2025-07-18 |  |  |
| PH03DH-117 |  | Fire protection drops Relocation - Section C | 15d | 2026-05-05 | 2026-05-05 | PH03DH-112, PH03DH-114 FF, PRMT-1020, PH03DH-114 | 2025-07-02 | 2025-07-18 |  |  |
| PH03DH-118 |  | Install Lighting - Section C | 10d | 2026-05-05 | 2026-05-05 | ISSU07.10, PH03DH-115, PH03DH-133, PH01CFC-140, PH03DH-224 | 2025-07-11 | 2025-07-22 |  |  |
| PH03DH-119 |  | Install HAC | 10d | 2026-05-05 | 2026-05-05 | PH03CFC-120, PH03DH-105, PH03DH-114 | 2025-08-18 | 2025-08-28 |  |  |
| PH03DH-120 |  | Rough-in Light Fixtures and Lighting Controls | 10d | 2026-05-05 | 2026-05-05 | PH03DH-105 FF, PH03DH-114 | 2025-07-08 | 2025-07-18 |  |  |
| PH03DH-123 |  | Install RPP's | 12d | 2026-05-05 | 2026-05-05 | PH03CFC-130, PH03DH-105 SS | 2025-07-12 | 2025-07-25 |  |  |
| PH03DH-124 |  | Install Temporary ACT Ceiling Tile | 5d | 2026-05-05 | 2026-05-05 | PH03DH-117, PH03DH-118, PH03DH-120 | 2025-10-07 | 2025-10-11 |  | Y |
| PH03DH-125 |  | Install Vesda | 5d | 2026-05-05 | 2026-05-05 | PH03DH-118, PH03DH-105, PH03DH-114 | 2025-07-22 | 2025-07-26 |  |  |
| PH03DH-126 |  | Pull MC Feeders | 15d | 2026-05-05 | 2026-05-05 | PH03ER-149, PH03DH-105, PH03DH-110 | 2025-08-13 | 2025-08-29 |  |  |
| PH03DH-127 |  | Terminate MC Feeders | 10d | 2026-05-05 | 2026-05-05 | PH03ER-149, PH03DH-123, PH03DH-126 FF | 2025-08-18 | 2025-08-28 |  |  |
| PH03DH-128 |  | Server Rack Whip Install | 15d | 2026-05-05 | 2026-05-05 | PH03CFC-130, PH03DH-105, PH03DH-114, PH03DH-224, PH03DH-123 | 2025-07-05 | 2025-07-22 |  |  |
| PH03DH-129 |  | LOTO - Finish | 1d | 2026-05-05 | 2026-05-05 | PH03DH-130 SS | 2025-10-15 | 2025-10-15 |  | Y |
| PH03DH-130 |  | Energization of Equipment | 20d | 2026-05-05 | 2026-05-05 | PH03DH-128, PH03DH-127, PH03DH-120, PH03DH-126 | 2025-10-02 | 2025-10-24 |  | Y |
| PH03DH-131 |  | Data Hall Ready for (NEA) | 1d | 2026-05-05 | 2026-05-05 | PH03DH-254 FF | 2025-10-15 | 2025-10-15 |  | Y |
| PH03DH-132 |  | Data Hall Ready for H2C | 0d | 2026-05-05 | 2026-05-05 | PH03DH-129, PH03DH-130 FF, PH03DH-124 FF, PH03DH-119 FF | 2025-10-16 | 2025-10-16 |  | Y |
| PH03DH-133 |  | Install Lighting - Section B | 10d | 2026-05-05 | 2026-05-05 | ISSU07.10, PH03DH-111, PH03DH-134, PH01CFC-140 | 2025-07-11 | 2025-07-22 |  |  |
| PH03DH-134 |  | Install Lighting - Section A | 10d | 2026-05-05 | 2026-05-05 | ISSU07.10, PH03DH-105 SS, PH03DH-114, PH01CFC-140 | 2025-07-11 | 2025-07-22 |  |  |
| PH03DH-144 |  | Demo Drywall & Mesh for Cable Tray - Section A | 3d | 2026-05-05 | 2026-05-05 | PH02MS-1000 SS, PH03ER-169, PH03DH-104 SS | 2025-06-12 | 2025-06-14 |  |  |
| PH03DH-154 |  | Removal of Electrical+Firesupression Clashes - Section A | 4d | 2026-05-05 | 2026-05-05 | PH02MS-1000 SS, PH03DH-104 SS | 2025-06-12 | 2025-06-16 |  |  |
| PH03DH-164 |  | Removal of Electrical+Firesupression Clashes - Section B | 4d | 2026-05-05 | 2026-05-05 | PH03DH-109 FF | 2025-06-19 | 2025-06-23 |  |  |
| PH03DH-174 |  | Demo Mesh for Cable Tray - Section B | 3d | 2026-05-05 | 2026-05-05 | PH03DH-109 | 2025-06-23 | 2025-06-25 |  |  |
| PH03DH-184 |  | Demo Drywall & Mesh for Cable Tray - Section C | 3d | 2026-05-05 | 2026-05-05 | PH03DH-113, PH03DH-174 | 2025-07-01 | 2025-07-03 |  |  |
| PH03DH-194 |  | Concrete Demo For Walls + Floors Data Hall | 6d | 2026-05-05 | 2026-05-05 | PH03DH-104 SS | 2025-06-12 | 2025-06-18 |  |  |
| PH03DH-214 |  | Install Cable Tray Below Grid - Section B | 7d | 2026-05-05 | 2026-05-05 | PH03DH-106 SS, PH03DH-105 SS, PH03DH-108 | 2025-07-01 | 2025-07-08 |  |  |
| PH03DH-224 |  | Install Cable Tray Below Grid - Section C | 7d | 2026-05-05 | 2026-05-05 | PH03DH-106 SS, PH03DH-105 SS, PH03DH-214 | 2025-07-01 | 2025-07-08 |  |  |
| PH03DH-234 |  | Ceiling Close-in Inspection | 2d | 2026-05-05 | 2026-05-05 | PH03DH-115, PH03DH-111, PH03DH-133, PH03DH-118, PH03DH-110, PH03DH-134, PH03DH-120, PH03DH-117, PH03DH-114, PH03DH-107, PH03DH-112, PH03DH-125, ISSU33.10, PH03DH-235 | 2025-11-21 | 2025-11-24 | VA-DC1-Calendar 01 - 5 Day w/holiday (No Pats Day) | Y |
| PH03DH-235 |  | Remove Ceiling Tile | 4d | 2026-05-05 | 2026-05-05 | PH03DH-124 | 2025-12-03 | 2025-12-08 | Calendar 01 - 5 Day w/holidays (No Pats Day) |  |
| PH03DH-236 |  | Install ACT Ceiling Tile | 5d | 2026-05-05 | 2026-05-05 | PH03DH-234 | 2025-12-03 | 2025-12-08 |  | Y |
| PH03DH-244 |  | Removal of Electrical+Firesupression Clashes - Section C | 2d | 2026-05-05 | 2026-05-05 | PH03DH-113 | 2025-07-01 | 2025-07-02 |  |  |
| PH03DH-254 |  | Perfect Positioning | 10d | 2026-05-05 | 2026-05-05 | PH03CFC-120, PH03DH-105, PH03DH-114 | 2025-09-12 | 2025-09-23 |  | Y |

| ID | WBS | Activity | Duration | Start | Finish | Predecessors | Planned start | Planned finish | Calendar | 12 - GC - Export_to_Procore |
| --- | --- | --- | --- | --- | --- | --- | --- | --- | --- | --- |
|  | 1.18.1 | **BMS - Phase 3 / CR-2** |  | 2026-05-05 | 2026-05-05 |  |  |  |  |  |
| PH03BMS-100 |  | Rough-in - BMS | 15d | 2026-05-05 | 2026-05-05 | PH03DH-123, PH03MS-1000 SS | 2025-07-21 | 2025-08-06 |  |  |
| PH03BMS-101 |  | Install Wiring/Terminate - BMS | 15d | 2026-05-05 | 2026-05-05 | PH03BMS-100 | 2025-08-05 | 2025-08-21 |  |  |
| PH03BMS-102 |  | BMS Ready for (NEA) | 1d | 2026-05-05 | 2026-05-05 | PH03BMS-101 | 2025-08-20 | 2025-08-20 |  |  |
| PH03BMS-103 |  | BMS Ready for H2C | 1d | 2026-05-05 | 2026-05-05 | PH03BMS-102 FF | 2025-09-02 | 2025-09-02 |  |  |
|  | 1.18.2 | **EPMS - Phase 3 / CR-2** |  | 2026-05-05 | 2026-05-05 |  |  |  |  |  |
| PH03EPMS-100 |  | Rough-in - EPMS | 15d | 2026-05-05 | 2026-05-05 | PH03DH-123, PH03ER-149 FF, PH03MS-1000 SS | 2025-07-21 | 2025-08-06 |  |  |
| PH03EPMS-101 |  | Install Wiring/Terminate | 15d | 2026-05-05 | 2026-05-05 | PH03EPMS-100 | 2025-08-05 | 2025-08-21 |  |  |
| PH03EPMS-102 |  | EPMS Ready for (NEA) | 1d | 2026-05-05 | 2026-05-05 | PH03EPMS-101 | 2025-08-20 | 2025-08-20 |  |  |
| PH03EPMS-103 |  | EPMS Ready for H2C | 1d | 2026-05-05 | 2026-05-05 | PH03EPMS-102 | 2025-10-22 | 2025-10-22 |  | Y |
|  | 1.17.5 | **Electrical Rooms - Phase 3 / CR-2** |  | 2026-05-05 | 2026-05-05 |  |  |  |  |  |
| PH03ER-100 |  | Mobilization | 1d | 2026-05-05 | 2026-05-05 | PH03MS-1000 SS | 2025-06-09 | 2025-06-09 |  |  |
| PH03ER-101 |  | MEP Layout | 4d | 2026-05-05 | 2026-05-05 | PH03ER-169, PH03MS-1000 SS | 2025-06-12 | 2025-06-16 |  |  |
| PH03ER-103 |  | LOTO Start | 1d | 2026-05-05 | 2026-05-05 | PH03ER-100, PH03MS-1000 SS | 2025-06-10 | 2025-06-10 |  |  |
| PH03ER-105 |  | Install Electrical Hangers | 5d | 2026-05-05 | 2026-05-05 | PH03ER-101, PH03ER-103 SS | 2025-06-10 | 2025-06-14 |  |  |
| PH03ER-106 |  | Electrical / FA / Sec. Rough-in Walls | 7d | 2026-05-05 | 2026-05-05 | PH03MS-1000 SS | 2025-06-09 | 2025-06-16 |  |  |
| PH03ER-107 |  | Install Electrical Tray | 15d | 2026-05-05 | 2026-05-05 | PH03ER-105 FF, PH03ER-179 | 2025-06-21 | 2025-07-08 |  |  |
| PH03ER-108 |  | Inspections Walls | 2d | 2026-05-05 | 2026-05-05 | PH03ER-106 | 2025-06-10 | 2025-06-11 | VA-DC1-Calendar 01 - 5 Day w/holiday (No Pats Day) |  |
| PH03ER-111 |  | Install Electrical Equipment (CCS's, MSB Breakers) | 15d | 2026-05-05 | 2026-05-05 | PH03ER-107, PH03CFC-125 | 2025-09-11 | 2025-09-27 |  |  |
| PH03ER-112 |  | Pull MC Feeders A | 15d | 2026-05-05 | 2026-05-05 | PH03ER-107, PH03ER-204, PH03ER-149 | 2025-07-14 | 2025-07-30 |  |  |
| PH03ER-114 |  | Terminate MC Feeders A | 15d | 2026-05-05 | 2026-05-05 | PH03ER-112, PH03ER-149 | 2025-07-22 | 2025-08-07 |  |  |
| PH03ER-115 |  | Energization of Equipment | 6d | 2026-05-05 | 2026-05-05 | PH03ER-114, PH03ER-119, PH03ER-139 | 2025-09-30 | 2025-10-06 |  | Y |
| PH03ER-116 |  | Electrical Rooms Ready for (NEA) | 1d | 2026-05-05 | 2026-05-05 | PH03ER-108 | 2025-10-06 | 2025-10-06 |  | Y |
| PH03ER-117 |  | Electrical Rooms Ready for H2C | 1d | 2026-05-05 | 2026-05-05 | PH03ER-115, PH03ER-116 | 2025-10-15 | 2025-10-15 |  | Y |
| PH03ER-118 |  | Electrical Rooms Ready for PHFO | 1d | 2026-05-05 | 2026-05-05 | PH03ER-116 | 2025-10-15 | 2025-10-15 |  | Y |
| PH03ER-119 |  | LOTO Finish | 1d | 2026-05-05 | 2026-05-05 | PH03ER-114, PH03ER-139, PH03ER-111 FF, PH03ER-159 | 2025-10-15 | 2025-10-15 |  | Y |
| PH03ER-129 |  | Pull MC Feeders B | 15d | 2026-05-05 | 2026-05-05 | PH03ER-107, PH03ER-204, PH03ER-112, PH03ER-114 FF | 2025-07-21 | 2025-08-06 |  |  |
| PH03ER-139 |  | Terminate MC Feeders B | 15d | 2026-05-05 | 2026-05-05 | PH03ER-129, PH03ER-114 | 2025-08-12 | 2025-08-28 |  |  |
| PH03ER-149 |  | Install Electrical ATS | 5d | 2026-05-05 | 2026-05-05 | PH03CFC-115, PH03MS-1000 SS | 2025-07-01 | 2025-07-05 |  |  |
| PH03ER-159 |  | Install Electrical Bus Duct | 10d | 2026-05-05 | 2026-05-05 | ISSU06.10 FF, PH03CFC-105 FF, PH03MS-1000 SS, ISSU05.10 FF | 2025-07-02 | 2025-07-12 |  | Y |
| PH03ER-169 |  | Temporary Power | 3d | 2026-05-05 | 2026-05-05 | PH03MS-1000 SS | 2025-06-09 | 2025-06-11 |  |  |
| PH03ER-179 |  | Demo Wall Penetrations | 3d | 2026-05-05 | 2026-05-05 | PH03ER-169 | 2025-06-12 | 2025-06-14 |  |  |
| PH03ER-204 |  | Concrete Demo For Walls + Floors Electrical Rooms | 6d | 2026-05-05 | 2026-05-05 | PH03DH-194 | 2025-06-19 | 2025-06-25 |  |  |

| ID | WBS | Activity | Duration | Start | Finish | Predecessors | Planned start | Planned finish | Calendar | 12 - GC - Export_to_Procore |
| --- | --- | --- | --- | --- | --- | --- | --- | --- | --- | --- |
|  | 1 | **Penthouse - Phase 3 / CR-2** |  | 2026-05-05 | 2026-05-05 |  |  |  |  |  |
| PH03-PH-100 |  | Pull Feeders Phase 3 | 10d | 2026-05-05 | 2026-05-05 | PH03MS-1000 SS | 2025-06-09 | 2025-06-19 |  |  |
| PH03-PH-110 |  | Terminate Feeders Phase 3 | 15d | 2026-05-05 | 2026-05-05 | PH03-PH-100 | 2025-07-16 | 2025-08-01 |  |  |
|  | PH4 | **Phase 4 / CR-3** |  | 2026-05-05 | 2026-05-05 |  |  |  |  |  |
|  | 1.18.1 | **BMS - Phase 4 / CR-3** |  | 2026-05-05 | 2026-05-05 |  |  |  |  |  |
| PH04BMS-100 |  | Rough-in - BMS | 15d | 2026-05-05 | 2026-05-05 | PH04DH-123 FF, PH04MS-1000 SS | 2025-08-06 | 2025-08-22 |  |  |
| PH04BMS-101 |  | Install Wiring/Terminate - BMS | 15d | 2026-05-05 | 2026-05-05 | PH04BMS-100 | 2025-08-25 | 2025-09-10 |  |  |
| PH04BMS-102 |  | BMS Ready for (NEA) | 1d | 2026-05-05 | 2026-05-05 | PH04BMS-101 | 2025-09-11 | 2025-09-11 |  |  |
| PH04BMS-103 |  | BMS Ready for H2C | 1d | 2026-05-05 | 2026-05-05 | PH04BMS-102 FF | 2025-10-10 | 2025-10-10 |  | Y |
|  | 1.18.3 | **Data Hall - Phase 4 / CR-3** |  | 2026-05-05 | 2026-05-05 |  |  |  |  |  |
| PH04DH-100 |  | Demo Mobilization | 5d | 2026-05-05 | 2026-05-05 | PH04MS-1000 SS | 2025-06-10 | 2025-06-14 |  |  |
| PH04DH-102 |  | Install Existing Equipment Protection | 5d | 2026-05-05 | 2026-05-05 | PH04MS-1000 SS, PH03DH-102, PO SS | 2025-06-10 | 2025-06-14 |  |  |
| PH04DH-103 |  | LOTO - Start | 1d | 2026-05-05 | 2026-05-05 | PH04DH-104 SS | 2025-06-16 | 2025-06-16 |  |  |
| PH04DH-104 |  | Surgical Demo Ceiling - Section A | 5d | 2026-05-05 | 2026-05-05 | PH04ER-169, PH04DH-100 FF, PH04DH-102 | 2025-06-16 | 2025-06-20 |  |  |
| PH04DH-105 |  | Re-install Ceiling Grid - Section A | 4d | 2026-05-05 | 2026-05-05 | PH04DH-106, PH04DH-103, PH04DH-104, PH04DH-144, PH04DH-194 | 2025-07-15 | 2025-07-18 |  |  |
| PH04DH-106 |  | Install Electrical Rough-in Above Ceiling - Section A | 10d | 2026-05-05 | 2026-05-05 | PH04DH-103 SS, PH04DH-104 SS, PH04DH-154 SS, PH04DH-144 SS, PH04DH-194 SS | 2025-06-18 | 2025-06-28 |  |  |
| PH04DH-107 |  | Fire protection drops Relocation - Section A | 6d | 2026-05-05 | 2026-05-05 | PH04DH-105 FF, PH04DH-104 SS, PH04DH-105 SS, PRMT-1020, PH04DH-105 | 2025-07-05 | 2025-07-11 |  |  |
| PH04DH-108 |  | Install Cable Tray Below Grid - Section A | 7d | 2026-05-05 | 2026-05-05 | PH04DH-106 SS, PH04DH-105 SS | 2025-07-05 | 2025-07-12 |  |  |
| PH04DH-109 |  | Surgical Demo Ceiling - Section B | 5d | 2026-05-05 | 2026-05-05 | PH04DH-104 | 2025-06-21 | 2025-06-26 |  |  |
| PH04DH-110 |  | Re-install Ceiling Grid - Section B | 5d | 2026-05-05 | 2026-05-05 | PH04DH-111 FF, PH04DH-105 | 2025-07-17 | 2025-07-22 |  |  |
| PH04DH-111 |  | Install Electrical Rough-in Above Ceiling - Section B | 10d | 2026-05-05 | 2026-05-05 | PH04DH-106, PH04DH-164, PH04DH-174 | 2025-07-04 | 2025-07-15 |  |  |
| PH04DH-112 |  | Fire protection drops Relocation - Section B | 15d | 2026-05-05 | 2026-05-05 | PH04DH-107, PRMT-1020, PH04DH-110 | 2025-07-04 | 2025-07-21 |  |  |
| PH04DH-113 |  | Surgical Demo Ceiling - Section C | 5d | 2026-05-05 | 2026-05-05 | PH04DH-109 | 2025-07-01 | 2025-07-05 |  |  |
| PH04DH-114 |  | Re-install Ceiling Grid - Section C | 5d | 2026-05-05 | 2026-05-05 | PH04DH-115 FF, PH04DH-110 | 2025-07-14 | 2025-07-18 |  |  |
| PH04DH-115 |  | Install Electrical Rough-in Above Ceiling - Section C | 9d | 2026-05-05 | 2026-05-05 | PH04DH-111, PH04DH-184, PH04DH-244 | 2025-07-09 | 2025-07-18 |  |  |
| PH04DH-117 |  | Fire protection drops Relocation - Section C | 15d | 2026-05-05 | 2026-05-05 | PH04DH-112, PH04DH-114 FF, PRMT-1020, PH04DH-114 | 2025-07-04 | 2025-07-21 |  |  |
| PH04DH-118 |  | Install Lighting - Section C | 10d | 2026-05-05 | 2026-05-05 | ISSU07.10, PH04DH-115, PH01CFC-140 | 2025-08-05 | 2025-08-15 |  |  |
| PH04DH-119 |  | Install HAC | 10d | 2026-05-05 | 2026-05-05 | PH04CFC-120, PH04DH-105, PH04DH-114 | 2025-09-11 | 2025-09-22 |  | Y |
| PH04DH-120 |  | Rough-in Light Fixtures and Lighting Controls | 10d | 2026-05-05 | 2026-05-05 | PH04DH-105 FF, PH04DH-114 | 2025-07-11 | 2025-07-22 |  |  |
| PH04DH-123 |  | Install RPP's | 12d | 2026-05-05 | 2026-05-05 | PH04DH-105 SS | 2025-08-04 | 2025-08-16 |  |  |
| PH04DH-124 |  | Install Temporary ACT Ceiling Tile | 5d | 2026-05-05 | 2026-05-05 | PH04DH-117, PH04DH-118, PH04DH-120 | 2025-11-21 | 2025-11-26 |  | Y |
| PH04DH-125 |  | Install Vesda | 5d | 2026-05-05 | 2026-05-05 | PH04DH-105, PH04DH-114 | 2025-07-31 | 2025-08-05 |  |  |
| PH04DH-126 |  | Pull MC Feeders | 15d | 2026-05-05 | 2026-05-05 | PH04ER-149, PH04DH-105, PH04DH-110 | 2025-08-28 | 2025-09-13 |  |  |
| PH04DH-127 |  | Terminate MC Feeders | 10d | 2026-05-05 | 2026-05-05 | PH04ER-149, PH04DH-123, PH04DH-126 | 2025-09-23 | 2025-10-03 |  | Y |
| PH04DH-128 |  | Server Rack Whip Install | 15d | 2026-05-05 | 2026-05-05 | PH04CFC-130, PH04DH-105, PH04DH-114, PH04DH-224, PH04DH-123 | 2025-09-03 | 2025-09-19 |  | Y |
| PH04DH-129 |  | LOTO - Finish | 1d | 2026-05-05 | 2026-05-05 | PH04DH-130 SS | 2025-10-17 | 2025-10-17 |  | Y |
| PH04DH-130 |  | Energization of Equipment | 11d | 2026-05-05 | 2026-05-05 | PH04DH-128, PH04DH-127, PH04DH-120, PH04DH-126 | 2025-10-06 | 2025-10-17 |  | Y |
| PH04DH-131 |  | Data Hall Ready for (NEA) | 1d | 2026-05-05 | 2026-05-05 | PH04DH-254 FF | 2025-10-17 | 2025-10-17 |  | Y |
| PH04DH-132 |  | Data Hall Ready for H2C | 0d | 2026-05-05 | 2026-05-05 | PH04DH-129, PH04DH-130 | 2025-10-17 | 2025-10-17 |  | Y |
| PH04DH-133 |  | Install Lighting - Section B | 10d | 2026-05-05 | 2026-05-05 | ISSU07.10, PH04DH-111, PH04DH-134, PH01CFC-140 | 2025-08-05 | 2025-08-15 |  |  |
| PH04DH-134 |  | Install Lighting - Section A | 10d | 2026-05-05 | 2026-05-05 | ISSU07.10, PH04DH-105 SS, PH04DH-114, PH01CFC-140 | 2025-07-11 | 2025-07-22 |  |  |
| PH04DH-144 |  | Demo Drywall & Mesh for Cable Tray - Section A | 3d | 2026-05-05 | 2026-05-05 | PH04ER-169, PH04DH-104 SS | 2025-06-17 | 2025-06-19 |  |  |
| PH04DH-154 |  | Removal of Electrical+Firesupression Clashes - Section A | 4d | 2026-05-05 | 2026-05-05 | PH04DH-104 SS | 2025-06-17 | 2025-06-20 |  |  |
| PH04DH-164 |  | Removal of Electrical+Firesupression Clashes - Section B | 4d | 2026-05-05 | 2026-05-05 | PH04DH-109 FF | 2025-06-24 | 2025-06-27 |  |  |
| PH04DH-174 |  | Demo Mesh for Cable Tray - Section B | 3d | 2026-05-05 | 2026-05-05 | PH04DH-109 | 2025-07-01 | 2025-07-03 |  |  |
| PH04DH-184 |  | Demo Drywall & Mesh for Cable Tray - Section C | 3d | 2026-05-05 | 2026-05-05 | PH04DH-113, PH04DH-174 | 2025-07-07 | 2025-07-09 |  |  |
| PH04DH-194 |  | Concrete Demo For Walls + Floors Data Hall | 6d | 2026-05-05 | 2026-05-05 | PH04DH-104 SS | 2025-06-17 | 2025-06-23 |  |  |
| PH04DH-214 |  | Install Cable Tray Below Grid - Section B | 7d | 2026-05-05 | 2026-05-05 | PH04DH-106 SS, PH04DH-105 SS, PH04DH-108 | 2025-07-22 | 2025-07-29 |  |  |
| PH04DH-224 |  | Install Cable Tray Below Grid - Section C | 7d | 2026-05-05 | 2026-05-05 | PH04DH-106 SS, PH04DH-105 SS, PH04DH-214 | 2025-08-25 | 2025-09-01 |  |  |
| PH04DH-234 |  | Ceiling Close-in Inspection | 2d | 2026-05-05 | 2026-05-05 | PH04DH-119, PH04DH-115, PH04DH-111, PH04DH-133, PH04DH-118, PH04DH-110, PH04DH-134, PH04DH-120, PH04DH-117, PH04DH-114, PH04DH-107, PH04DH-112, PH04DH-125, ISSU33.10, PH04DH-235 | 2025-11-24 | 2025-11-25 | VA-DC1-Calendar 01 - 5 Day w/holiday (No Pats Day) | Y |
| PH04DH-235 |  | Remove Ceiling Tile | 4d | 2026-05-05 | 2026-05-05 | PH04DH-124 | 2025-11-25 | 2025-12-01 | Calendar 01 - 5 Day w/holidays (No Pats Day) |  |
| PH04DH-236 |  | Install ACT Ceiling Tile | 5d | 2026-05-05 | 2026-05-05 | PH04DH-234 | 2025-11-25 | 2025-11-29 |  | Y |
| PH04DH-244 |  | Removal of Electrical+Firesupression Clashes - Section C | 2d | 2026-05-05 | 2026-05-05 | PH04DH-113 | 2025-07-07 | 2025-07-08 |  |  |
| PH04DH-254 |  | Perfect Positioning | 3d | 2026-05-05 | 2026-05-05 | PH04DH-119 FF, PH04DH-105, PH04DH-114 FF | 2025-10-06 | 2025-10-08 |  | Y |

| ID | WBS | Activity | Duration | Start | Finish | Predecessors | Planned start | Planned finish | Calendar | 12 - GC - Export_to_Procore |
| --- | --- | --- | --- | --- | --- | --- | --- | --- | --- | --- |
|  | 1.18.2 | **EPMS - Phase 4 / CR-3** |  | 2026-05-05 | 2026-05-05 |  |  |  |  |  |
| PH04EPMS-100 |  | Rough-in - EPMS | 15d | 2026-05-05 | 2026-05-05 | PH04DH-123, PH04ER-149 FF, PH04MS-1000 SS | 2025-08-13 | 2025-08-29 |  |  |
| PH04EPMS-101 |  | Install Wiring/Terminate | 15d | 2026-05-05 | 2026-05-05 | PH04EPMS-100 | 2025-08-27 | 2025-09-12 |  | Y |
| PH04EPMS-102 |  | EPMS Ready for (NEA) | 1d | 2026-05-05 | 2026-05-05 | PH04EPMS-101 | 2025-10-06 | 2025-10-06 |  | Y |
| PH04EPMS-103 |  | EPMS Ready for H2C | 1d | 2026-05-05 | 2026-05-05 | PH04EPMS-102 | 2025-10-20 | 2025-10-20 |  | Y |
|  | 1.17.5 | **Electrical Rooms - Phase 4 / CR-3** |  | 2026-05-05 | 2026-05-05 |  |  |  |  |  |
| PH04ER-100 |  | Mobilization | 1d | 2026-05-05 | 2026-05-05 | PH04MS-1000 SS | 2025-06-10 | 2025-06-10 |  |  |
| PH04ER-101 |  | MEP Layout | 4d | 2026-05-05 | 2026-05-05 | PH04ER-169, PH04MS-1000 SS | 2025-06-13 | 2025-06-17 |  |  |
| PH04ER-103 |  | LOTO Start | 1d | 2026-05-05 | 2026-05-05 | PH04ER-100, PH04MS-1000 SS | 2025-06-11 | 2025-06-11 |  |  |
| PH04ER-105 |  | Install Electrical Hangers | 5d | 2026-05-05 | 2026-05-05 | PH04ER-101, PH04ER-103 SS | 2025-06-18 | 2025-06-23 |  |  |
| PH04ER-106 |  | Electrical / FA / Sec. Rough-in Walls | 7d | 2026-05-05 | 2026-05-05 | PH04MS-1000 SS | 2025-06-10 | 2025-06-17 |  |  |
| PH04ER-107 |  | Install Electrical Tray | 15d | 2026-05-05 | 2026-05-05 | PH04ER-105, PH04ER-179 | 2025-07-28 | 2025-08-13 |  |  |
| PH04ER-108 |  | Inspections Walls | 2d | 2026-05-05 | 2026-05-05 | PH04ER-106 | 2025-06-18 | 2025-06-19 | VA-DC1-Calendar 01 - 5 Day w/holiday (No Pats Day) |  |
| PH04ER-111 |  | Install Electrical Equipment (CCS's, MSB Breakers) | 5d | 2026-05-05 | 2026-05-05 | PH04ER-107, PH04CFC-125 | 2025-10-02 | 2025-10-07 |  | Y |
| PH04ER-112 |  | Pull MC Feeders A | 15d | 2026-05-05 | 2026-05-05 | PH04ER-107, PH04ER-204 | 2025-08-12 | 2025-08-28 |  |  |
| PH04ER-114 |  | Terminate MC Feeders A | 15d | 2026-05-05 | 2026-05-05 | PH04ER-112, PH04ER-149 | 2025-09-02 | 2025-09-18 |  | Y |
| PH04ER-115 |  | Energization of Equipment | 11d | 2026-05-05 | 2026-05-05 | PH04ER-114, PH04ER-119, PH04ER-139 | 2025-10-06 | 2025-10-17 |  | Y |
| PH04ER-116 |  | Electrical Rooms Ready for (NEA) | 1d | 2026-05-05 | 2026-05-05 | PH04ER-108 | 2025-10-06 | 2025-10-06 |  | Y |
| PH04ER-117 |  | Electrical Rooms Ready for H2C | 1d | 2026-05-05 | 2026-05-05 | PH04ER-115, PH04ER-116 | 2025-10-17 | 2025-10-17 |  | Y |
| PH04ER-118 |  | Electrical Rooms Ready for PFHO | 1d | 2026-05-05 | 2026-05-05 | PH04ER-116 | 2025-12-09 | 2025-12-09 |  | Y |
| PH04ER-119 |  | LOTO Finish | 1d | 2026-05-05 | 2026-05-05 | PH04ER-114, PH04ER-139 FF, PH04ER-111 FF, PH04ER-159 | 2025-10-17 | 2025-10-17 |  | Y |
| PH04ER-129 |  | Pull MC Feeders B | 15d | 2026-05-05 | 2026-05-05 | PH04ER-107, PH04ER-204 | 2025-08-27 | 2025-09-12 |  |  |
| PH04ER-139 |  | Terminate MC Feeders B | 15d | 2026-05-05 | 2026-05-05 | PH04ER-129, PH04ER-114 FF | 2025-09-24 | 2025-10-10 |  | Y |
| PH04ER-149 |  | Install Electrical ATS | 5d | 2026-05-05 | 2026-05-05 | PH04CFC-115, PH04MS-1000 SS | 2025-07-28 | 2025-08-01 |  |  |
| PH04ER-159 |  | Install Electrical Bus Duct | 10d | 2026-05-05 | 2026-05-05 | PH04CFC-105 FF, PH04MS-1000 SS | 2025-08-13 | 2025-08-23 |  | Y |
| PH04ER-169 |  | Temporary Power | 3d | 2026-05-05 | 2026-05-05 | PH04MS-1000 SS | 2025-06-10 | 2025-06-12 |  |  |
| PH04ER-179 |  | Demo Wall Penetrations | 3d | 2026-05-05 | 2026-05-05 | PH04ER-169 | 2025-06-17 | 2025-06-19 |  |  |
| PH04ER-204 |  | Concrete Demo For Walls + Floors Electrical Rooms | 6d | 2026-05-05 | 2026-05-05 | PH04DH-194 FF | 2025-06-24 | 2025-06-30 |  |  |

| ID | WBS | Activity | Duration | Start | Finish | Predecessors | Planned start | Planned finish | Total float | Free float | Expected finish | Calendar | 12 - GC - Export_to_Procore |
| --- | --- | --- | --- | --- | --- | --- | --- | --- | --- | --- | --- | --- | --- |
|  | 1 | **Penthouse - Phase 4 / CR-3** |  | 2026-05-05 | 2026-05-05 |  |  |  |  |  |  |  |  |
| PH04-PH-100 |  | Pull Feeders Phase 4 | 10d | 2026-05-05 | 2026-05-05 | PH04MS-1000 SS, PH03-PH-100 | 2025-07-22 | 2025-08-01 |  |  |  |  |  |
| PH04-PH-110 |  | Terminate Feeders Phase 4 | 15d | 2026-05-05 | 2026-05-05 | PH04-PH-100 SS | 2025-08-12 | 2025-08-28 |  |  |  |  |  |
|  | PH5 | **Phase 5 / CR-5** |  | 2026-05-05 | 2026-07-15 |  |  |  |  |  |  |  |  |
|  | 1.18.3 | **Data Hall - Phase 5 / CR-5** |  | 2026-05-05 | 2026-07-15 |  |  |  |  |  |  |  |  |
| PH05-DH-103 |  | MEP Layout | 5d | 2026-05-05 | 2026-05-05 | PH05DH-101 | 2026-01-15 | 2026-01-20 |  |  |  |  | Y |
| PH05DH-100 |  | Penetration Demo | 5d | 2026-05-05 | 2026-05-05 | PH05DH-101 SS, PH05-DH-103 FF | 2026-01-19 | 2026-01-23 |  |  |  |  | Y |
| PH05DH-101 |  | Mobilization | 18d | 2026-05-05 | 2026-05-05 | PH05MS-1000 | 2026-01-05 | 2026-01-24 |  |  |  |  |  |
| PH05DH-102 |  | Install Existing Equipment Protection | 6d | 2026-05-05 | 2026-05-05 | PO SS | 2026-01-05 | 2026-01-10 |  |  |  |  | Y |
| PH05DH-103 |  | LOTO - Start | 1d | 2026-05-05 | 2026-05-05 | PH05DH-101 | 2026-01-09 | 2026-01-09 |  |  |  |  | Y |
| PH05DH-104 |  | Demo Ceiling | 6d | 2026-05-05 | 2026-05-05 | PH05ER-169 SS, PH05DH-102 | 2026-01-08 | 2026-01-14 |  |  |  |  | Y |
| PH05DH-105 |  | Re-install Ceiling Grid | 12d | 2026-05-05 | 2026-05-05 | PH05DH-103, PH05DH-104, PH05DH-144, PH05DH-126 SS | 2026-03-10 | 2026-03-23 |  |  |  |  | Y |
| PH05DH-106 |  | Install Electrical Rough-in Above Ceiling - Part 1 | 12d | 2026-05-05 | 2026-05-05 | PH05DH-103, PH05DH-104 SS+1d, PH05DH-154 SS+1d, PH05DH-144 FF | 2026-01-21 | 2026-02-03 |  |  |  |  | Y |
| PH05DH-107 |  | Fire protection drops Relocation | 8d | 2026-05-05 | 2026-05-05 | PH05DH-104, PRMT-1020, PH05DH-105 | 2026-03-18 | 2026-03-26 |  |  |  |  | Y |
| PH05DH-108 |  | Install Cable Tray Below Grid | 24d | 2026-05-05 | 2026-05-05 | PH05DH-284 SS | 2026-02-09 | 2026-03-07 |  |  |  |  | Y |
| PH05DH-119 |  | Install HAC | 10d | 2026-05-05 | 2026-05-05 | PH05CFC-120, PH05DH-105 FS+5d, PH05DH-126 FF, PH05DH-104, PH05DH-284 | 2026-03-18 | 2026-03-28 | -20d | 21d |  |  | Y |
| PH05DH-120 |  | Rough-in Light Fixtures and Lighting Controls | 10d | 2026-05-05 | 2026-05-05 | PH05DH-105, PH05DH-104, PH05DH-284 | 2026-03-20 | 2026-03-31 |  |  |  |  | Y |
| PH05DH-123 |  | Install PDC | 12d | 2026-05-05 | 2026-05-05 | PH05CFC-130, PH05-DH-103 | 2026-02-04 | 2026-02-17 |  |  |  |  | Y |
| PH05DH-124 |  | Install ACT Ceiling Tile | 5d | 2026-05-05 | 2026-05-05 | PH05DH-120, PH05DH-234, PRMT-1020, PH05DH-105, PH05DH-104, PH05DH-107, PH05CFC-140, PH05DH-108, PH05DH-134, PH05DH-284 | 2026-04-15 | 2026-04-20 |  |  |  |  | Y |
| PH05DH-125 |  | Install Vesda | 5d | 2026-05-05 | 2026-05-05 | PH05DH-105, PH05DH-104, PH05CFC-140, PH05DH-108, PH05DH-284 | 2026-03-25 | 2026-03-30 |  |  |  |  | Y |
| PH05DH-126 |  | Pull MC Feeders | 18d | 2026-05-05 | 2026-05-05 | PH05DH-106 | 2026-02-19 | 2026-03-11 |  |  |  |  | Y |
| PH05DH-127 |  | Terminate MC Feeders | 12d | 2026-05-05 | 2026-05-05 | PH05DH-123, PH05DH-126 | 2026-03-09 | 2026-03-21 |  |  |  |  | Y |
| PH05DH-128 |  | Server Rack Whip Install | 11d | 2026-05-05 | 2026-05-05 | PH05CFC-130, PH05DH-105, PH05DH-123, PH05DH-104, PH05DH-108, PH05DH-284 | 2026-03-09 | 2026-03-20 |  |  |  |  | Y |
| PH05DH-130 |  | Energization of Equipment - Source 1 | 24d | 2026-05-05 | 2026-05-16 | PH05DH-128 SS, PH05DH-127, PH05DH-120, PH05DH-126, PH05-PH-220 FF | 2026-04-20 | 2026-05-16 | -30d | 0d | 2026-05-16 |  | Y |
| PH05DH-134 |  | Install Lighting | 12d | 2026-05-05 | 2026-05-05 | PH05CFC-140, PH05DH-105, PH05DH-104, PH05DH-284 | 2026-03-24 | 2026-04-06 |  |  |  |  | Y |
| PH05DH-144 |  | Demo Drywall & Mesh for Cable Tray | 6d | 2026-05-05 | 2026-05-05 | PH05ER-169, PH05DH-104 SS, PH05DH-100 FF | 2026-01-14 | 2026-01-20 |  |  |  |  | Y |
| PH05DH-154 |  | Removal of Electrical+Firesupression Clashes | 8d | 2026-05-05 | 2026-05-05 | PH05DH-104 SS | 2026-01-06 | 2026-01-14 |  |  |  |  | Y |
| PH05DH-234 |  | Ceiling Close-in Inspection | 2d | 2026-05-05 | 2026-05-05 | PH05DH-134, PH05DH-120, PH05DH-107, PH05DH-125, PH05DH-105, PH05DH-104, PRMT-1020, PH05CFC-140, PH05DH-108, PH05DH-284 | 2026-04-10 | 2026-04-13 |  |  |  | VA-DC1-Calendar 01 - 5 Day w/holiday (No Pats Day) | Y |
| PH05DH-254 |  | Perfect Positioning | 4d | 2026-05-05 | 2026-05-05 | PH05CFC-120, PH05DH-105, PH05DH-104, PH05DH-284 | 2026-03-30 | 2026-04-02 |  |  |  |  | Y |
| PH05DH-284 |  | Install Electrical Rough-in Above Ceiling - Part 2 | 12d | 2026-05-05 | 2026-05-05 | PH05DH-106 | 2026-02-04 | 2026-02-17 |  |  |  |  | Y |
| PH05DH-129 |  | LOTO - Finish | 1d | 2026-05-18 | 2026-05-18 | PH05DH-130 |  |  | -14d | 49d |  |  | Y |
| PH05DH-131 |  | Data Hall Ready for (NEA) | 1d | 2026-05-30 | 2026-05-30 | PH05DH-254, PH05DH-130, ISSU44.40, PH05DH-119 |  |  | -41d | 0d |  |  | Y |
| PH05DH-274 |  | Energization of Equipment - Source 2 | 10d | 2026-07-03 | 2026-07-14 | PH05MS-1020, BTN2-1463, PH05ER-139 |  |  | -64d | 0d |  | Calendar 07 - 6 Day Work Week w/o holidays - Mon-Sat |  |
| PH05DH-132 |  | Data Hall Ready for H2C | 0d | 2026-07-15 | 2026-07-15 | PH05DH-129, PH05DH-124 FF, PH05DH-274 |  |  | -63d | 2d |  |  | Y |

| ID | WBS | Activity | Duration | Start | Finish | Predecessors | Planned start | Planned finish | Total float | Free float | Expected finish | 12 - GC - Export_to_Procore |
| --- | --- | --- | --- | --- | --- | --- | --- | --- | --- | --- | --- | --- |
|  | 1.18.1 | **BMS - Phase 5 / CR-5** |  | 2026-05-05 | 2026-05-05 |  |  |  |  |  |  |  |
| PH05BMS-100 |  | Rough-in - BMS | 15d | 2026-05-05 | 2026-05-05 | PH05MS-1000 SS, PH05DH-123 | 2026-03-02 | 2026-03-18 |  |  |  | Y |
| PH05BMS-101 |  | Install Wiring/Terminate - BMS | 15d | 2026-05-05 | 2026-05-05 | PH05BMS-100 | 2026-03-31 | 2026-04-16 |  |  |  | Y |
| PH05BMS-102 |  | BMS Ready for (NEA) | 10d | 2026-05-05 | 2026-05-05 | PH05BMS-101 | 2026-04-16 | 2026-04-27 |  |  |  | Y |
| PH05BMS-103 |  | BMS Ready for H2C | 1d | 2026-05-05 | 2026-05-05 | PH05BMS-102 |  |  | -3d | 62d |  | Y |
|  | 1.18.2 | **EPMS - Phase 5 / CR-5** |  | 2026-05-05 | 2026-06-22 |  |  |  |  |  |  |  |
| PH05EPMS-100 |  | Rough-in - EPMS | 15d | 2026-05-05 | 2026-05-05 | PH05DH-123 | 2026-02-18 | 2026-03-06 |  |  |  | Y |
| PH05EPMS-101 |  | Install Wiring/Terminate | 15d | 2026-05-05 | 2026-05-05 | PH05EPMS-100 | 2026-03-31 | 2026-04-16 |  |  |  | Y |
| PH05EPMS-102 |  | EPMS Ready for (NEA) | 1d | 2026-05-05 | 2026-05-05 | PH05EPMS-101 | 2026-04-20 | 2026-04-20 |  |  |  | Y |
| PH05EPMS-103 |  | EPMS Ready for H2C | 1d | 2026-06-22 | 2026-06-22 | PH05EPMS-102, PH05ER-149 |  |  | -44d | 21d |  | Y |
|  | 1.17.5 | **Electrical Rooms - Phase 5 / CR-5** |  | 2026-05-05 | 2026-07-15 |  |  |  |  |  |  |  |
| PH05ER-100 |  | Mobilization | 1d | 2026-05-05 | 2026-05-05 | PH05MS-1000 SS | 2026-01-05 | 2026-01-05 |  |  |  | Y |
| PH05ER-101 |  | MEP Layout | 5d | 2026-05-05 | 2026-05-05 | PH05MS-1000 SS, PH05ER-169 SS | 2026-01-15 | 2026-01-20 |  |  |  | Y |
| PH05ER-103 |  | LOTO Start | 1d | 2026-05-05 | 2026-05-05 | PH05ER-100 | 2026-01-09 | 2026-01-09 |  |  |  | Y |
| PH05ER-105 |  | Install Electrical Hangers | 6d | 2026-05-05 | 2026-05-05 | PH05ER-101, PH05ER-103 SS | 2026-01-27 | 2026-02-02 |  |  |  | Y |
| PH05ER-106 |  | Electrical / FA / Sec. Rough-in Walls | 7d | 2026-05-05 | 2026-05-05 | PH05MS-1000 SS | 2026-01-16 | 2026-01-23 |  |  |  | Y |
| PH05ER-107 |  | Install Electrical Tray | 15d | 2026-05-05 | 2026-05-05 | PH05ER-105 SS, PH05ER-179 SS | 2026-02-02 | 2026-02-18 |  |  |  | Y |
| PH05ER-108 |  | Inspections Walls | 2d | 2026-05-05 | 2026-05-05 | PH05ER-106 | 2026-01-23 | 2026-01-24 |  |  |  | Y |
| PH05ER-111 |  | Install Electrical Equipment (CCS's, MSB Breakers) | 15d | 2026-05-05 | 2026-05-06 | PH05ER-107, PH05CFC-125 | 2026-04-20 | 2026-05-06 | -38d | 0d | 2026-05-06 | Y |
| PH05ER-112 |  | Pull MC Feeders A | 15d | 2026-05-05 | 2026-05-05 | PH05ER-107, PH05ER-204 | 2026-03-11 | 2026-03-27 |  |  |  | Y |
| PH05ER-114 |  | Terminate MC Feeders A | 15d | 2026-05-05 | 2026-05-05 | PH05ER-112 | 2026-03-30 | 2026-04-15 |  |  |  | Y |
| PH05ER-129 |  | Pull MC Feeders B | 15d | 2026-05-05 | 2026-05-05 | PH05ER-107, PH05ER-204 | 2026-03-25 | 2026-04-10 |  |  |  | Y |
| PH05ER-159 |  | Install Electrical Bus Duct | 10d | 2026-05-05 | 2026-05-05 | PH05CFC-105 | 2026-02-23 | 2026-03-05 |  |  |  | Y |
| PH05ER-169 |  | Temporary Power | 5d | 2026-05-05 | 2026-05-05 | PH05MS-1000 SS | 2026-01-09 | 2026-01-14 |  |  |  | Y |
| PH05ER-179 |  | Demo Wall Penetrations | 3d | 2026-05-05 | 2026-05-05 | PH05ER-169 | 2026-01-27 | 2026-01-29 |  |  |  | Y |
| PH05ER-204 |  | Concrete Demo For Walls + Floors Electrical Rooms | 6d | 2026-05-05 | 2026-05-05 | PH05ER-100 | 2026-01-30 | 2026-02-05 |  |  |  | Y |
| PH05ER-119 |  | LOTO Finish | 1d | 2026-05-07 | 2026-05-07 | PH05ER-114, PH05ER-111, PH05ER-159 |  |  | -38d | 0d |  | Y |
| PH05ER-115 |  | Energization of Equipment | 17d | 2026-05-08 | 2026-05-27 | PH05ER-114, PH05ER-119 |  |  | -38d | 0d |  | Y |
| PH05ER-116 |  | Electrical Rooms Ready for (NEA) | 1d | 2026-05-27 | 2026-05-27 | PH05ER-115 FF, PH05ER-108 |  |  | -38d | 0d |  | Y |
| PH05ER-118 |  | Electrical Rooms Ready for PFHO | 1d | 2026-05-28 | 2026-05-28 | PH05ER-116 |  |  | 3d | 62d |  | Y |
| PH05ER-149 |  | Install Electrical ATS | 5d | 2026-06-16 | 2026-06-20 | PH05CFC-115, ISSU23.50 |  |  | -64d | 0d |  | Y |
| PH05ER-139 |  | Terminate MC Feeders B | 10d | 2026-06-22 | 2026-07-02 | PH05ER-129, PH05ER-149 |  |  | -64d | 0d |  | Y |
| PH05ER-117 |  | Electrical Rooms Ready for H2C | 1d | 2026-07-15 | 2026-07-15 | PH05DH-274 |  |  | -64d | 1d |  | Y |

| ID | WBS | Activity | Duration | Start | Finish | Predecessors | Planned start | Planned finish | Total float | Free float | Expected finish | Calendar | 12 - GC - Export_to_Procore |
| --- | --- | --- | --- | --- | --- | --- | --- | --- | --- | --- | --- | --- | --- |
|  | 1 | **Penthouse - Phase 5 / CR-5** |  | 2026-05-05 | 2026-05-07 |  |  |  |  |  |  |  |  |
| PH05-PH-100 |  | Pull Feeders Phase 5 | 10d | 2026-05-05 | 2026-05-05 | PH05-PH-160, ISSU40.40 | 2026-03-20 | 2026-03-31 |  |  |  |  | Y |
| PH05-PH-110 |  | Terminate Feeders Phase 5 | 15d | 2026-05-05 | 2026-05-05 | PH05-PH-100 | 2026-04-06 | 2026-04-22 |  |  |  |  | Y |
| PH05-PH-120 |  | MEP Layout | 1d | 2026-05-05 | 2026-05-05 | PH05MS-1000 SS, PH05-PH-130 SS | 2026-01-05 | 2026-01-05 |  |  |  |  |  |
| PH05-PH-130 |  | Mobilization | 5d | 2026-05-05 | 2026-05-05 | PH05MS-1000 SS | 2026-01-05 | 2026-01-09 |  |  |  |  |  |
| PH05-PH-140 |  | Concrete/Drywall Demo | 3d | 2026-05-05 | 2026-05-05 | PH05-PH-120 | 2026-01-08 | 2026-01-10 |  |  |  |  |  |
| PH05-PH-150 |  | Install Hangers | 10d | 2026-05-05 | 2026-05-05 | PH05-PH-120, ISSU40.20 FF, ISSU40.10 | 2026-01-29 | 2026-02-09 |  |  |  |  |  |
| PH05-PH-155 |  | Install Cable Tray | 12d | 2026-05-05 | 2026-05-05 | PH05-PH-150, ISSU40.30 FF | 2026-02-23 | 2026-03-07 |  |  |  |  |  |
| PH05-PH-160 |  | Set ATSs | 5d | 2026-05-05 | 2026-05-05 | PH05-PH-120, PH05CFC-115 | 2026-02-04 | 2026-02-09 |  |  |  |  |  |
| PH05-PH-170 |  | Concrete Infills | 5d | 2026-05-05 | 2026-05-05 | PH05-PH-110 | 2026-04-27 | 2026-05-01 |  |  |  |  |  |
| PH05-PH-180 |  | Cable Tray Fireproofing | 2d | 2026-05-05 | 2026-05-05 | PH05-PH-110 | 2026-05-02 | 2026-05-04 | 23d | 0d | 2026-05-04 |  |  |
| PH05-PH-190 |  | Pointup Drywall | 3d | 2026-05-05 | 2026-05-05 | PH05-PH-140 SS, ISSU40.10 FF | 2026-02-09 | 2026-02-11 |  |  |  |  |  |
| PH05-PH-200 |  | Paint | 2d | 2026-05-05 | 2026-05-06 | PH05-PH-140, PH05-PH-190, PH05-PH-170 |  |  | 21d | 0d |  |  |  |
| PH05-PH-220 |  | Energization of Equipment | 1d | 2026-05-05 | 2026-05-05 | PH05-PH-110 |  |  | -20d | 0d |  |  | Y |
| PH05-PH-230 |  | Penthouse Ready for (NEA) | 1d | 2026-05-05 | 2026-05-05 | PH05-PH-220 FF |  |  | -19d | 22d |  |  | Y |
| PH05-PH-210 |  | Final Clean | 1d | 2026-05-07 | 2026-05-07 | PH05-PH-200, PH05-PH-180, PH05-PH-170 |  |  | 21d | 80d |  |  |  |
|  | PH6 | **Phase 6 / CR-8** |  | 2026-05-05 | 2026-07-30 |  |  |  |  |  |  |  |  |
|  | 1.18.3 | **Data Hall - Phase 6 / CR-8** |  | 2026-05-05 | 2026-07-29 |  |  |  |  |  |  |  |  |
| PH06DH-101 |  | Mobilization | 1d | 2026-05-05 | 2026-05-05 | PH06MS-1000 SS | 2026-01-06 | 2026-01-06 |  |  |  | Calendar 07 - 6 Day Work Week w/o holidays - Mon-Sat |  |
| PH06DH-102 |  | Install Existing Equipment Protection | 6d | 2026-05-05 | 2026-05-05 | PO SS, PH06DH-101 SS | 2026-01-07 | 2026-01-13 |  |  |  |  | Y |
| PH06DH-103 |  | LOTO - Start | 1d | 2026-05-05 | 2026-05-05 | PH06DH-104 SS | 2026-01-29 | 2026-01-29 |  |  |  |  | Y |
| PH06DH-104 |  | Demo Ceiling | 6d | 2026-05-05 | 2026-05-05 | PH06DH-102 FF | 2026-01-14 | 2026-01-20 |  |  |  |  | Y |
| PH06DH-105 |  | Re-install Ceiling Grid | 12d | 2026-05-05 | 2026-05-05 | PH06DH-103, PH06DH-104, PH06DH-144 | 2026-04-17 | 2026-04-30 |  |  |  |  | Y |
| PH06DH-106 |  | Install Electrical Rough-in Above Ceiling - Part 2 | 12d | 2026-05-05 | 2026-05-05 | PH06DH-150 | 2026-02-23 | 2026-03-07 |  |  |  |  | Y |
| PH06DH-107 |  | Fire protection drops Relocation | 8d | 2026-05-05 | 2026-05-05 | PH06DH-104 SS, PRMT-1020, PH06DH-105 | 2026-04-08 | 2026-04-16 |  |  |  |  | Y |
| PH06DH-108 |  | Install Cable Tray Below Grid | 24d | 2026-05-05 | 2026-05-05 | PH06DH-106 | 2026-03-27 | 2026-04-23 | -37d | 0d | 2026-04-23 |  | Y |
| PH06DH-119 |  | Install HAC | 10d | 2026-05-05 | 2026-05-05 | PH06CFC-120, PH06DH-106, PH06DH-104 | 2026-04-13 | 2026-04-23 | -18d | 0d |  |  | Y |
| PH06DH-120 |  | Rough-in Light Fixtures and Lighting Controls | 10d | 2026-05-05 | 2026-05-05 | PH06DH-106, PH06DH-104 | 2026-03-30 | 2026-04-09 |  |  |  |  | Y |
| PH06DH-123 |  | Install PDC | 12d | 2026-05-05 | 2026-05-05 | PH06CFC-130 | 2026-03-28 | 2026-04-10 |  |  |  |  | Y |
| PH06DH-125 |  | Install Vesda | 5d | 2026-05-05 | 2026-05-05 | PH06DH-105, PH06DH-106, PH06DH-104 | 2026-04-30 | 2026-05-05 | -13d | 0d | 2026-05-05 |  | Y |
| PH06DH-126 |  | Pull MC Feeders | 18d | 2026-05-05 | 2026-05-05 | PH06DH-104, PH06DH-150 | 2026-03-23 | 2026-04-11 | -38d | 0d |  |  | Y |
| PH06DH-128 |  | Server Rack Whip Install | 11d | 2026-05-05 | 2026-05-05 | PH06CFC-130, PH06DH-105, PH06DH-123, PH06DH-108 SS, PH06DH-106, PH06DH-104 | 2026-04-17 | 2026-04-29 | -37d | 0d | 2026-04-29 |  | Y |
| PH06DH-134 |  | Install Lighting | 12d | 2026-05-05 | 2026-05-05 | PH06DH-105, PH06DH-106, PH06DH-104 | 2026-04-20 | 2026-05-02 | -1d | 0d | 2026-05-02 |  | Y |
| PH06DH-144 |  | Demo Drywall & Mesh for Cable Tray | 6d | 2026-05-05 | 2026-05-05 | PH06DH-102 FF, PH06DH-104 SS | 2026-01-27 | 2026-02-02 |  |  |  |  | Y |
| PH06DH-150 |  | Install Electrical Rough-in Above Ceiling - Part 1 | 12d | 2026-05-05 | 2026-05-05 | PH06DH-104, PH06DH-144 FF, PH06DH-155 FF, PH06DH-154 SS | 2026-01-28 | 2026-02-10 |  |  |  |  | Y |
| PH06DH-154 |  | Removal of Electrical+Firesupression Clashes | 8d | 2026-05-05 | 2026-05-05 | PH06DH-104 SS | 2026-01-27 | 2026-02-04 |  |  |  |  | Y |
| PH06DH-155 |  | MEP Layout | 5d | 2026-05-05 | 2026-05-05 | PH06MS-1000 SS | 2026-01-15 | 2026-01-20 |  |  |  |  | Y |
| PH06DH-234 |  | Ceiling Close-in Inspection | 2d | 2026-05-05 | 2026-05-06 | PH06DH-120, PH06DH-106, PH06DH-104, PRMT-1020, PH06DH-108 FF, PH06DH-128 FF |  |  | -3d | 0d | 2026-05-06 | VA-DC1-Calendar 01 - 5 Day w/holiday (No Pats Day) | Y |
| PH06DH-127 |  | Terminate MC Feeders | 12d | 2026-05-06 | 2026-05-06 | PH06DH-123, PH06DH-126 FF | 2026-04-16 | 2026-04-29 | -38d | 0d | 2026-04-29 |  | Y |
| PH06DH-254 |  | Perfect Positioning | 4d | 2026-05-06 | 2026-05-09 | PH06CFC-120, PH06DH-105, PH06DH-106, PH06DH-104, PH06DH-119 |  |  | -18d | 22d |  |  | Y |
| PH06DH-124 |  | Install ACT Ceiling Tile | 5d | 2026-05-07 | 2026-05-12 | PH06DH-120, PH06DH-234, PRMT-1020, PH06DH-107, PH06DH-105, PH06DH-106, PH06DH-104, PH06DH-108, PH06DH-134 |  |  | -3d | 20d |  |  | Y |
| PH06DH-129 |  | LOTO - Finish | 1d | 2026-05-08 | 2026-05-08 | PH06DH-130 SS |  |  | 0d | 23d |  |  | Y |
| PH06DH-130 |  | Energization of Equipment - Source 1 | 24d | 2026-05-08 | 2026-06-04 | PH06DH-128, PH06DH-127, PH06DH-120, PH06DH-126, PH06-PH-230 |  |  | -40d | 0d |  |  | Y |
| PH06DH-131 |  | Data Hall Ready for (NEA) | 1d | 2026-06-05 | 2026-06-05 | PH06DH-254, PH06DH-130, PH06DH-125 |  |  | -40d | 8d |  |  | Y |
| PH06DH-132 |  | Data Hall Ready for H2C | 0d | 2026-06-05 | 2026-06-05 | PH06DH-129, PH06DH-130, PH06DH-124 FF |  |  | -23d | 48d |  |  | Y |
| PH06DH-274 |  | Energization of Equipment - Source 2 | 10d | 2026-07-18 | 2026-07-29 | PH06MS-1020, BTN2-1483, PH06ER-139 |  |  | -71d | 0d |  | Calendar 07 - 6 Day Work Week w/o holidays - Mon-Sat |  |

| ID | WBS | Activity | Duration | Start | Finish | Predecessors | Planned start | Planned finish | Total float | Free float | Expected finish | Calendar | 12 - GC - Export_to_Procore |
| --- | --- | --- | --- | --- | --- | --- | --- | --- | --- | --- | --- | --- | --- |
|  | 1.18.1 | **BMS - Phase 6 / CR-8** |  | 2026-05-05 | 2026-06-01 |  |  |  |  |  |  |  |  |
| PH06BMS-100 |  | Rough-in - BMS | 15d | 2026-05-05 | 2026-05-13 | PH06DH-155 | 2026-04-27 | 2026-05-13 | -25d | 0d | 2026-05-13 |  | Y |
| PH06BMS-101 |  | Install Wiring/Terminate - BMS | 15d | 2026-05-14 | 2026-05-30 | PH06BMS-100 |  |  | -20d | 0d |  |  | Y |
| PH06BMS-102 |  | BMS Ready for (NEA) | 5d | 2026-05-14 | 2026-05-19 | PH06BMS-100 |  |  | -25d | 10d |  |  | Y |
| PH06BMS-103 |  | BMS Ready for H2C | 1d | 2026-06-01 | 2026-06-01 | PH06BMS-102, PH06BMS-101 |  |  | -20d | 51d |  |  | Y |
|  | 1.18.2 | **EPMS - Phase 6 / CR-8** |  | 2026-05-05 | 2026-05-26 |  |  |  |  |  |  |  |  |
| PH06EPMS-100 |  | Rough-in - EPMS | 15d | 2026-05-05 | 2026-05-06 | PH06MS-1000 SS, PH06DH-123 | 2026-04-20 | 2026-05-06 | -30d | 0d | 2026-05-06 |  | Y |
| PH06EPMS-101 |  | Install Wiring/Terminate | 15d | 2026-05-07 | 2026-05-23 | PH06EPMS-100 |  |  | -30d | 0d |  |  | Y |
| PH06EPMS-102 |  | EPMS Ready for (NEA) | 1d | 2026-05-25 | 2026-05-25 | PH06EPMS-101 |  |  | -30d | 0d |  |  | Y |
| PH06EPMS-103 |  | EPMS Ready for H2C | 1d | 2026-05-26 | 2026-05-26 | PH06EPMS-102 |  |  | -15d | 56d |  |  | Y |
|  | 1.17.5 | **Electrical Rooms - Phase 6 / CR-8** |  | 2026-05-05 | 2026-07-30 |  |  |  |  |  |  |  |  |
| PH06ER-100 |  | Mobilization | 1d | 2026-05-05 | 2026-05-05 | PH06MS-1000 SS | 2026-01-29 | 2026-01-29 |  |  |  |  | Y |
| PH06ER-103 |  | LOTO Start | 1d | 2026-05-05 | 2026-05-05 | PH06ER-100 SS | 2026-01-29 | 2026-01-29 |  |  |  |  | Y |
| PH06ER-104 |  | MEP Layout | 8d | 2026-05-05 | 2026-05-05 | PH06ER-100 SS | 2026-01-29 | 2026-02-06 |  |  |  |  |  |
| PH06ER-105 |  | Install Electrical Hangers | 5d | 2026-05-05 | 2026-05-05 | PH06MS-1000 SS, PH06ER-103 SS, PH06ER-104 | 2026-03-02 | 2026-03-06 |  |  |  |  | Y |
| PH06ER-106 |  | Electrical / FA / Sec. Rough-in Walls | 7d | 2026-05-05 | 2026-05-05 | PH06MS-1000 SS | 2026-01-27 | 2026-02-03 |  |  |  |  | Y |
| PH06ER-107 |  | Install Electrical Tray | 15d | 2026-05-05 | 2026-05-05 | PH06ER-105, PH06ER-179 | 2026-04-20 | 2026-05-06 |  |  |  |  | Y |
| PH06ER-108 |  | Inspections Walls | 2d | 2026-05-05 | 2026-05-05 | PH06ER-106 | 2026-02-09 | 2026-02-10 |  |  |  | VA-DC1-Calendar 01 - 5 Day w/holiday (No Pats Day) | Y |
| PH06ER-111 |  | Install Electrical Equipment (CCS's, MSB Breakers) | 15d | 2026-05-05 | 2026-05-06 | PH06ER-107, PH06CFC-125 | 2026-04-25 | 2026-05-12 | -26d | 0d | 2026-05-06 |  | Y |
| PH06ER-112 |  | Pull MC Feeders A | 15d | 2026-05-05 | 2026-05-11 | PH06ER-107, PH06ER-204 | 2026-04-24 | 2026-05-11 | -35d | 0d | 2026-05-11 |  | Y |
| PH06ER-114 |  | Terminate MC Feeders A | 15d | 2026-05-05 | 2026-05-18 | PH06ER-112 FF+5d | 2026-05-01 | 2026-05-18 | -36d | 0d | 2026-05-18 |  | Y |
| PH06ER-129 |  | Pull MC Feeders B | 15d | 2026-05-05 | 2026-05-21 | PH06ER-107, PH06ER-204 |  |  | -29d | 42d |  |  | Y |
| PH06ER-159 |  | Install Electrical Bus Duct | 10d | 2026-05-05 | 2026-05-05 | PH06CFC-105, PH06ER-104 | 2026-03-27 | 2026-04-07 | -25d | 11d |  |  | Y |
| PH06ER-179 |  | Demo Wall Penetrations | 3d | 2026-05-05 | 2026-05-05 | PH06MS-1000 SS | 2026-01-27 | 2026-01-29 |  |  |  |  | Y |
| PH06ER-204 |  | Concrete Demo For Walls + Floors Electrical Rooms | 6d | 2026-05-05 | 2026-05-05 | PH06ER-100, PH06ER-104 | 2026-02-27 | 2026-03-05 |  |  |  |  | Y |
| PH06ER-115 |  | Energization of Equipment | 12d | 2026-05-19 | 2026-06-01 | PH06ER-114, PH06ER-119 SS |  |  | -36d | 0d |  |  | Y |
| PH06ER-119 |  | LOTO Finish | 1d | 2026-05-19 | 2026-05-19 | PH06ER-114, PH06ER-111, PH06ER-159 |  |  | -36d | 0d |  |  | Y |
| PH06ER-116 |  | Electrical Rooms Ready for (NEA) | 1d | 2026-06-01 | 2026-06-01 | PH06ER-115 FF, PH06ER-108 |  |  | -36d | 0d |  |  | Y |
| PH06ER-118 |  | Electrical Rooms Ready for PHFO | 1d | 2026-06-02 | 2026-06-02 | PH06ER-116 |  |  | -1d | 70d |  |  | Y |
| PH06ER-149 |  | Install Electrical ATS | 5d | 2026-07-01 | 2026-07-06 | PH06CFC-115, ISSU23.60 |  |  | -71d | 0d |  |  | Y |
| PH06ER-139 |  | Terminate MC Feeders B | 10d | 2026-07-07 | 2026-07-17 | PH06ER-129 FF+7d, PH06ER-149 |  |  | -71d | 0d |  |  | Y |
| PH06ER-117 |  | Electrical Rooms Ready for H2C | 1d | 2026-07-30 | 2026-07-30 | PH06DH-274 |  |  | -71d | 0d |  |  | Y |

| ID | WBS | Activity | Duration | Start | Finish | Predecessors | Planned start | Planned finish | Total float | Free float | Expected finish | Calendar | 12 - GC - Export_to_Procore |
| --- | --- | --- | --- | --- | --- | --- | --- | --- | --- | --- | --- | --- | --- |
|  | 1 | **Penthouse - Phase 6 / CR-8** |  | 2026-05-05 | 2026-05-09 |  |  |  |  |  |  |  |  |
| PH06-PH-100 |  | Pull Feeders Phase 6 | 10d | 2026-05-05 | 2026-05-05 | PH06-PH-150, PH06-PH-175 SS | 2026-04-03 | 2026-04-14 | -40d | 0d |  |  | Y |
| PH06-PH-110 |  | Terminate Feeders Phase 6 | 15d | 2026-05-05 | 2026-05-06 | PH06-PH-100 SS | 2026-04-20 | 2026-05-06 | -40d | 0d | 2026-05-06 |  | Y |
| PH06-PH-120 |  | MEP Layout | 1d | 2026-05-05 | 2026-05-05 | PH06-PH-130 SS | 2026-01-05 | 2026-01-05 |  |  |  |  |  |
| PH06-PH-130 |  | Mobilization | 5d | 2026-05-05 | 2026-05-05 | PH06MS-1000 SS | 2026-01-05 | 2026-01-09 |  |  |  |  |  |
| PH06-PH-140 |  | Concrete/Drywall Demo | 5d | 2026-05-05 | 2026-05-05 | PH06-PH-120, ISSU40.10 FF | 2026-01-08 | 2026-01-13 |  |  |  |  |  |
| PH06-PH-150 |  | Set ATSs | 5d | 2026-05-05 | 2026-05-05 | PH06-PH-120, ISSU40.10 | 2026-03-05 | 2026-03-10 |  |  |  |  |  |
| PH06-PH-160 |  | Pointup Drywall | 3d | 2026-05-05 | 2026-05-05 | PH06-PH-140 | 2026-05-02 | 2026-05-05 | 20d | 0d | 2026-05-05 |  |  |
| PH06-PH-170 |  | Install Hangers | 10d | 2026-05-05 | 2026-05-05 | PH06-PH-120, ISSU40.60, ISSU40.10 | 2026-03-06 | 2026-03-17 |  |  |  |  |  |
| PH06-PH-175 |  | Install Cable Tray | 12d | 2026-05-05 | 2026-05-05 | PH06-PH-170 FF, ISSU40.70 | 2026-03-18 | 2026-03-31 |  |  |  |  |  |
| PH06-PH-190 |  | Concrete Infills | 5d | 2026-05-05 | 2026-05-05 | PH06-PH-110 SS | 2026-04-27 | 2026-05-01 |  |  |  |  |  |
| PH06-PH-180 |  | Paint | 2d | 2026-05-06 | 2026-05-07 | PH06-PH-140, PH06-PH-160 |  |  | 20d | 1d |  |  |  |
| PH06-PH-200 |  | Cable Tray Fireproofing | 2d | 2026-05-07 | 2026-05-08 | PH06-PH-110 |  |  | 19d | 0d |  |  |  |
| PH06-PH-220 |  | Penthouse Ready for (NEA) | 1d | 2026-05-07 | 2026-05-07 | PH06-PH-230 FF |  |  | -15d | 33d |  |  | Y |
| PH06-PH-230 |  | Energization of Equipment | 1d | 2026-05-07 | 2026-05-07 | PH06-PH-110 |  |  | -40d | 0d |  |  | Y |
| PH06-PH-210 |  | Final Clean | 1d | 2026-05-09 | 2026-05-09 | PH06-PH-180, PH06-PH-200, PH06-PH-190 |  |  | 19d | 90d |  |  |  |
|  | PH7 | **Phase 7 / CR-1** |  | 2026-05-05 | 2026-08-14 |  |  |  |  |  |  |  |  |
|  | 1.18.3 | **Data Hall - Phase 7 / CR-1** |  | 2026-05-05 | 2026-08-13 |  |  |  |  |  |  |  |  |
| PH07DH-101 |  | Mobilization | 5d | 2026-05-05 | 2026-05-05 | PH07MS-1000 SS | 2026-03-24 | 2026-03-28 |  |  |  | Calendar 07 - 6 Day Work Week w/o holidays - Mon-Sat |  |
| PH07DH-102 |  | Install Existing Equipment Protection | 6d | 2026-05-05 | 2026-05-05 | PO SS, PH06DH-102, PH07DH-101 SS+1d | 2026-03-24 | 2026-03-30 |  |  |  |  | Y |
| PH07DH-103 |  | LOTO - Start | 1d | 2026-05-05 | 2026-05-05 | PH07DH-104 SS | 2026-04-06 | 2026-04-06 |  |  |  |  | Y |
| PH07DH-104 |  | Demo Ceiling | 6d | 2026-05-05 | 2026-05-05 | PH07DH-102, PH07DH-101 | 2026-03-24 | 2026-03-30 |  |  |  |  | Y |
| PH07DH-105 |  | Re-install Ceiling Grid | 12d | 2026-05-05 | 2026-05-18 | PH07DH-103, PH07DH-104, PH07DH-144 |  |  | -10d | 0d |  |  | Y |
| PH07DH-106 |  | Install Electrical Rough-in Above Ceiling - Part 1 | 12d | 2026-05-05 | 2026-05-05 | PH07DH-103, PH07DH-104, PH07DH-144, PH07DH-275 | 2026-04-08 | 2026-04-21 |  |  |  |  | Y |
| PH07DH-123 |  | Install PDC | 12d | 2026-05-05 | 2026-05-05 | PH07CFC-130 | 2026-04-22 | 2026-05-05 | -12d | 0d | 2026-05-05 |  | Y |
| PH07DH-144 |  | Demo Drywall & Mesh for Cable Tray | 6d | 2026-05-05 | 2026-05-05 | PH07DH-104 | 2026-03-25 | 2026-03-31 |  |  |  |  | Y |
| PH07DH-154 |  | Removal of Electrical+Firesupression Clashes | 8d | 2026-05-05 | 2026-05-05 | PH07DH-104 | 2026-03-30 | 2026-04-07 | -18d | 0d |  |  | Y |
| PH07DH-275 |  | MEP Layout | 5d | 2026-05-05 | 2026-05-05 | PH07DH-101 SS | 2026-03-27 | 2026-04-01 |  |  |  |  | Y |
| PH07DH-276 |  | Install Electrical Rough-in Above Ceiling - Part 2 | 12d | 2026-05-05 | 2026-05-05 | PH07DH-106 | 2026-04-27 | 2026-05-09 | -24d | 0d | 2026-05-05 |  | Y |
| PH07DH-108 |  | Install Cable Tray Below Grid | 24d | 2026-05-06 | 2026-06-02 | PH07DH-276 |  |  | -24d | 0d |  |  | Y |
| PH07DH-126 |  | Pull MC Feeders | 18d | 2026-05-06 | 2026-05-26 | PH07DH-104, PH07DH-106, PH07DH-154 |  |  | -18d | 0d |  |  | Y |
| PH07DH-127 |  | Terminate MC Feeders | 12d | 2026-05-13 | 2026-05-26 | PH07DH-123, PH07DH-126 FF |  |  | -18d | 0d |  |  | Y |
| PH07DH-107 |  | Fire protection drops Relocation | 6d | 2026-05-19 | 2026-05-25 | PH07DH-104 SS, PRMT-1020, PH07DH-105 |  |  | 26d | 12d |  |  | Y |
| PH07DH-120 |  | Rough-in Light Fixtures and Lighting Controls | 10d | 2026-05-19 | 2026-05-29 | PH07DH-105 |  |  | -10d | 8d |  |  | Y |
| PH07DH-134 |  | Install Lighting | 12d | 2026-05-19 | 2026-06-01 | PH07DH-105 |  |  | 20d | 6d |  |  | Y |
| PH07DH-119 |  | Install HAC | 10d | 2026-05-27 | 2026-06-06 | PH07CFC-120, PH07DH-105, PH07DH-126, PH07DH-104, PH07DH-276 |  |  | 2d | 0d |  |  | Y |
| PH07DH-125 |  | Install Vesda | 5d | 2026-06-03 | 2026-06-08 | PH07DH-105, PH07DH-108 |  |  | 14d | 0d |  |  | Y |
| PH07DH-128 |  | Server Rack Whip Install | 11d | 2026-06-03 | 2026-06-15 | PH07CFC-130, PH07DH-123, PH07DH-108 |  |  | -24d | 0d |  |  | Y |
| PH07DH-254 |  | Perfect Positioning | 4d | 2026-06-08 | 2026-06-11 | PH07CFC-120, PH07DH-105, PH07DH-119, PH07DH-104, PH07DH-276 |  |  | 2d | 26d |  |  | Y |
| PH07DH-234 |  | Ceiling Close-in Inspection | 2d | 2026-06-09 | 2026-06-10 | PH07DH-134, PH07DH-120, PH07DH-107, PH07DH-125, PH07DH-108, PH07DH-105 |  |  | 12d | 0d |  | VA-DC1-Calendar 01 - 5 Day w/holiday (No Pats Day) | Y |
| PH07DH-124 |  | Install ACT Ceiling Tile | 5d | 2026-06-11 | 2026-06-16 | PH07DH-120, PH07DH-234, PH07DH-108, PH07DH-105, PH07DH-104, PH07DH-107, PH07DH-134, PH07DH-276 |  |  | 15d | 23d |  |  | Y |
| PH07DH-129 |  | LOTO - Finish | 1d | 2026-06-16 | 2026-06-16 | PH07DH-130 SS |  |  | 15d | 23d |  |  | Y |
| PH07DH-130 |  | Energization of Equipment - Source 1 | 24d | 2026-06-16 | 2026-07-13 | PH07DH-128, PH07DH-127, PH07DH-120, PH07DH-126, PH07-PH-110 |  |  | -24d | 0d |  |  | Y |
| PH07DH-131 |  | Data Hall Ready for (NEA) | 1d | 2026-07-13 | 2026-07-13 | PH07DH-254, PH07DH-130 FF, ISSU44.80 |  |  | -24d | 0d |  |  | Y |
| PH07DH-132 |  | Data Hall Ready for H2C | 0d | 2026-07-14 | 2026-07-14 | PH07DH-129, PH07DH-130, PH07DH-124 FF |  |  | -8d | 28d |  |  | Y |
| PH07DH-274 |  | Energization of Equipment - Source 2 | 10d | 2026-08-03 | 2026-08-13 | PH07MS-1020, BTN2-1513, PH07ER-139 |  |  | -36d | 0d |  | Calendar 07 - 6 Day Work Week w/o holidays - Mon-Sat |  |

| ID | WBS | Activity | Duration | Start | Finish | Predecessors | Planned start | Planned finish | Total float | Free float | Expected finish | Calendar | 12 - GC - Export_to_Procore |
| --- | --- | --- | --- | --- | --- | --- | --- | --- | --- | --- | --- | --- | --- |
|  | 1.18.1 | **BMS - Phase 7 / CR-1** |  | 2026-05-06 | 2026-06-10 |  |  |  |  |  |  |  |  |
| PH07BMS-100 |  | Rough-in - BMS | 15d | 2026-05-06 | 2026-05-22 | PH07MS-1000 SS, PH07DH-123 |  |  | 10d | 0d |  |  | Y |
| PH07BMS-101 |  | Install Wiring/Terminate - BMS | 15d | 2026-05-23 | 2026-06-09 | PH07BMS-100 |  |  | 20d | 0d |  |  | Y |
| PH07BMS-102 |  | BMS Ready for (NEA) | 10d | 2026-05-23 | 2026-06-03 | PH07BMS-100 |  |  | 10d | 5d |  |  | Y |
| PH07BMS-103 |  | BMS Ready for H2C | 1d | 2026-06-10 | 2026-06-10 | PH07BMS-102, PH07BMS-101 |  |  | 20d | 56d |  |  | Y |
|  | 1.18.2 | **EPMS - Phase 7 / CR-1** |  | 2026-05-06 | 2026-06-11 |  |  |  |  |  |  |  |  |
| PH07EPMS-100 |  | Rough-in - EPMS | 15d | 2026-05-06 | 2026-05-22 | PH07MS-1000 SS, PH07DH-123 |  |  | 4d | 0d |  |  | Y |
| PH07EPMS-101 |  | Install Wiring/Terminate | 15d | 2026-05-23 | 2026-06-09 | PH07EPMS-100 |  |  | 4d | 0d |  |  | Y |
| PH07EPMS-102 |  | EPMS Ready for (NEA) | 1d | 2026-06-10 | 2026-06-10 | PH07EPMS-101 |  |  | 4d | 0d |  |  | Y |
| PH07EPMS-103 |  | EPMS Ready for H2C | 1d | 2026-06-11 | 2026-06-11 | PH07EPMS-102 |  |  | 19d | 55d |  |  | Y |
|  | 1.17.5 | **Electrical Rooms - Phase 7 / CR-1** |  | 2026-05-05 | 2026-08-14 |  |  |  |  |  |  |  |  |
| PH07ER-100 |  | Mobilization | 1d | 2026-05-05 | 2026-05-05 | PH07MS-1000 SS | 2026-04-03 | 2026-04-03 |  |  |  |  | Y |
| PH07ER-103 |  | LOTO Start | 1d | 2026-05-05 | 2026-05-05 | PH07ER-100 SS | 2026-04-03 | 2026-04-03 | -14d | 0d |  |  | Y |
| PH07ER-104 |  | MEP Layout | 1d | 2026-05-05 | 2026-05-05 | PH07ER-100 SS | 2026-04-03 | 2026-04-03 |  |  |  |  |  |
| PH07ER-105 |  | Install Electrical Hangers | 10d | 2026-05-05 | 2026-05-05 | PH07ER-179, PH07MS-1000 SS, PH07ER-103 SS, PH07ER-104 | 2026-04-20 | 2026-04-30 | -14d | 0d | 2026-04-30 |  | Y |
| PH07ER-107 |  | Install Electrical Tray | 15d | 2026-05-05 | 2026-05-21 | PH07ER-105, PH07ER-179 |  |  | -14d | 0d |  |  | Y |
| PH07ER-108 |  | Inspections Walls | 2d | 2026-05-05 | 2026-05-05 | PH07ER-100 | 2026-04-17 | 2026-04-20 |  |  |  | VA-DC1-Calendar 01 - 5 Day w/holiday (No Pats Day) | Y |
| PH07ER-159 |  | Install Electrical Bus Duct | 10d | 2026-05-05 | 2026-05-15 | PH07CFC-105, PH07ER-104 |  |  | 6d | 24d |  |  | Y |
| PH07ER-179 |  | Demo Wall Penetrations | 5d | 2026-05-05 | 2026-05-05 | PH07MS-1000 SS | 2026-04-03 | 2026-04-08 |  |  |  |  | Y |
| PH07ER-204 |  | Concrete Demo For Walls + Floors Electrical Rooms | 6d | 2026-05-05 | 2026-05-05 | PH07ER-100, PH07ER-104 | 2026-04-20 | 2026-04-25 |  |  |  |  | Y |
| PH07ER-112 |  | Pull MC Feeders A | 15d | 2026-05-22 | 2026-06-08 | PH07ER-107, PH07ER-204 |  |  | -14d | 0d |  |  | Y |
| PH07ER-114 |  | Terminate MC Feeders A | 15d | 2026-05-22 | 2026-06-08 | PH07ER-112 FF |  |  | -14d | 4d |  |  | Y |
| PH07ER-129 |  | Pull MC Feeders B | 15d | 2026-05-22 | 2026-06-08 | PH07ER-107, PH07ER-204 |  |  | 1d | 37d |  |  | Y |
| PH07ER-111 |  | Install Electrical Equipment (CCS's, MSB Breakers) | 15d | 2026-05-27 | 2026-06-12 | PH07ER-107, PH07CFC-125 |  |  | -18d | 0d |  |  | Y |
| PH07ER-115 |  | Energization of Equipment | 20d | 2026-06-13 | 2026-07-06 | PH07ER-114, PH07ER-119 SS |  |  | -18d | 0d |  |  | Y |
| PH07ER-119 |  | LOTO Finish | 1d | 2026-06-13 | 2026-06-13 | PH07ER-114, PH07ER-111, PH07ER-159 |  |  | -18d | 0d |  |  | Y |
| PH07ER-116 |  | Electrical Rooms Ready for (NEA) | 1d | 2026-07-06 | 2026-07-06 | PH07ER-115 FF, PH07ER-108 |  |  | -18d | 0d |  |  | Y |
| PH07ER-118 |  | Electrical Rooms Ready for PHFO | 1d | 2026-07-07 | 2026-07-07 | PH07ER-116 |  |  | 23d | 46d |  |  | Y |
| PH07ER-149 |  | Install Electrical ATS | 5d | 2026-07-16 | 2026-07-21 | PH07CFC-115, ISSU23.70 |  |  | -36d | 0d |  |  | Y |
| PH07ER-139 |  | Terminate MC Feeders B | 10d | 2026-07-22 | 2026-08-01 | PH07ER-129, PH07ER-149 |  |  | -36d | 0d |  |  | Y |
| PH07ER-117 |  | Electrical Rooms Ready for H2C | 1d | 2026-08-14 | 2026-08-14 | PH07DH-274 |  |  | -36d | 0d |  |  | Y |

| ID | WBS | Activity | Duration | Start | Finish | Predecessors | Planned start | Planned finish | Total float | Free float | Calendar | 12 - GC - Export_to_Procore |
| --- | --- | --- | --- | --- | --- | --- | --- | --- | --- | --- | --- | --- |
|  | 1 | **Penthouse - Phase 7 / CR-1** |  | 2026-05-05 | 2026-06-17 |  |  |  |  |  |  |  |
| PH07-PH-120 |  | MEP Layout | 1d | 2026-05-05 | 2026-05-05 | PH07-PH-130 SS | 2026-04-03 | 2026-04-03 |  |  |  |  |
| PH07-PH-130 |  | Mobilization | 5d | 2026-05-05 | 2026-05-05 | PH07MS-1000 SS | 2026-04-03 | 2026-04-08 |  |  |  |  |
| PH07-PH-140 |  | Concrete/Drywall Demo | 5d | 2026-05-05 | 2026-05-05 | PH07-PH-120 | 2026-04-24 | 2026-04-29 |  |  |  |  |
| PH07-PH-150 |  | Set ATSs | 5d | 2026-05-05 | 2026-05-05 | PH07-PH-120 | 2026-04-20 | 2026-04-24 |  |  |  |  |
| PH07-PH-160 |  | Pointup Drywall | 3d | 2026-05-05 | 2026-05-05 | PH07-PH-140 | 2026-05-02 | 2026-05-05 |  |  |  |  |
| PH07-PH-170 |  | Install Cable Tray | 10d | 2026-05-05 | 2026-05-15 | PH07-PH-120, PH07-PH-160 |  |  | -23d | 0d |  |  |
| PH07-PH-180 |  | Paint | 2d | 2026-05-05 | 2026-05-06 | PH07-PH-140, PH07-PH-160 |  |  | 75d | 35d |  |  |
| PH07-PH-190 |  | Concrete Infills | 5d | 2026-05-05 | 2026-05-05 | PH07-PH-130 | 2026-04-27 | 2026-05-01 |  |  |  |  |
| PH07-PH-100 |  | Pull Feeders Phase 7 | 10d | 2026-05-16 | 2026-05-27 | PH07MS-1000 SS, PH07-PH-170, PH07-PH-150 |  |  | -23d | 0d |  | Y |
| PH07-PH-110 |  | Terminate Feeders Phase 7 | 15d | 2026-05-28 | 2026-06-13 | PH07-PH-100 |  |  | -23d | 0d |  | Y |
| PH07-PH-200 |  | Cable Tray Fireproofing | 2d | 2026-06-15 | 2026-06-16 | PH07-PH-110 |  |  | 40d | 0d |  |  |
| PH07-PH-210 |  | Final Clean | 1d | 2026-06-17 | 2026-06-17 | PH07-PH-180, PH07-PH-200, PH07-PH-190 |  |  | 40d | 63d |  |  |
|  | PH8 | **Phase 8 / CR-4** |  | 2026-05-05 | 2026-08-28 |  |  |  |  |  |  |  |
|  | 1.18.3 | **Data Hall - Phase 8 / CR-4** |  | 2026-05-05 | 2026-08-28 |  |  |  |  |  |  |  |
| PH08DH-101 |  | Mobilization | 5d | 2026-05-05 | 2026-05-05 | PH08MS-1000 SS | 2026-04-06 | 2026-04-10 |  |  |  |  |
| PH08DH-102 |  | Install Existing Equipment Protection | 6d | 2026-05-05 | 2026-05-05 | PH08DH-101 SS+1d | 2026-04-09 | 2026-04-15 |  |  |  | Y |
| PH08DH-103 |  | LOTO - Start | 1d | 2026-05-05 | 2026-05-05 | PH08DH-104 SS | 2026-04-24 | 2026-04-24 | -18d | 0d |  | Y |
| PH08DH-104 |  | Demo Ceiling | 6d | 2026-05-05 | 2026-05-05 | PH08DH-101, PH08DH-102 | 2026-04-14 | 2026-04-20 |  |  |  | Y |
| PH08DH-106 |  | Install Electrical Rough-in Above Ceiling - Part 1 | 12d | 2026-05-05 | 2026-05-05 | PH08DH-103 SS, PH08DH-104 SS, PH08DH-144 FF | 2026-04-22 | 2026-05-05 | -18d | 0d |  | Y |
| PH08DH-144 |  | Demo Drywall & Mesh for Cable Tray | 6d | 2026-05-05 | 2026-05-05 | PH08DH-104 | 2026-04-20 | 2026-04-25 |  |  |  | Y |
| PH08DH-275 |  | MEP Layout | 5d | 2026-05-05 | 2026-05-05 | PH08DH-101 FF | 2026-04-06 | 2026-04-10 | 39d | 0d |  | Y |
| PH08DH-126 |  | Pull MC Feeders | 18d | 2026-05-06 | 2026-05-26 | PH08DH-106, PH08DH-104 |  |  | -14d | 0d |  | Y |
| PH08DH-154 |  | Removal of Electrical+Firesupression Clashes | 8d | 2026-05-06 | 2026-05-14 | PH08DH-104 SS, PH08DH-275 |  |  | 39d | 3d |  | Y |
| PH08DH-276 |  | Install Electrical Rough-in Above Ceiling - Part 2 | 12d | 2026-05-06 | 2026-05-19 | PH08DH-106 |  |  | -18d | 0d |  | Y |
| PH08DH-105 |  | Re-install Ceiling Grid | 12d | 2026-05-13 | 2026-05-26 | PH08DH-103, PH08DH-104, PH08DH-144, PH08DH-126 FF |  |  | -14d | 0d |  | Y |
| PH08DH-123 |  | Install PDC | 12d | 2026-05-13 | 2026-05-26 | PH08CFC-130, PH08DH-105 SS |  |  | -14d | 0d |  | Y |
| PH08DH-134 |  | Install Lighting | 12d | 2026-05-13 | 2026-05-26 | PH08DH-105 SS, PH08DH-104 |  |  | 32d | 18d |  | Y |
| PH08DH-107 |  | Fire protection drops Relocation | 8d | 2026-05-19 | 2026-05-27 | PH08DH-105 FF+1d, PH08DH-104 SS, PH08DH-105 SS, PRMT-1020, PH08DH-154 |  |  | 36d | 22d |  | Y |
| PH08DH-108 |  | Install Cable Tray Below Grid | 24d | 2026-05-20 | 2026-06-16 | PH08DH-276 |  |  | -18d | 0d |  | Y |
| PH08DH-119 |  | Install HAC | 10d | 2026-05-27 | 2026-06-06 | PH08CFC-120, PH08DH-105, PH08DH-104, PH08DH-126, PH08DH-276 |  |  | 14d | 0d |  | Y |
| PH08DH-120 |  | Rough-in Light Fixtures and Lighting Controls | 10d | 2026-05-27 | 2026-06-06 | PH08DH-105, PH08DH-104 |  |  | 1d | 13d |  | Y |
| PH08DH-127 |  | Terminate MC Feeders | 12d | 2026-05-27 | 2026-06-09 | PH08DH-123, PH08DH-126 FF |  |  | -14d | 0d |  | Y |
| PH08DH-254 |  | Perfect Positioning | 10d | 2026-06-08 | 2026-06-18 | PH08CFC-120, PH08DH-105, PH08DH-104, PH08DH-119, PH08DH-276 |  |  | 14d | 32d |  | Y |
| PH08DH-125 |  | Install Vesda | 5d | 2026-06-17 | 2026-06-22 | PH08DH-105, PH08DH-104, PH08DH-108, PH08DH-134 |  |  | 14d | 0d |  | Y |
| PH08DH-128 |  | Server Rack Whip Install | 11d | 2026-06-17 | 2026-06-29 | PH08CFC-130, PH08DH-123, PH08DH-108, PH08DH-104 |  |  | -18d | 0d |  | Y |
| PH08DH-234 |  | Ceiling Close-in Inspection | 2d | 2026-06-23 | 2026-06-24 | PH08DH-134, PH08DH-120, PH08DH-107, PH08DH-125, PH08DH-104, PH08DH-105, PRMT-1020, PH08DH-108 |  |  | 11d | 0d | VA-DC1-Calendar 01 - 5 Day w/holiday (No Pats Day) | Y |
| PH08DH-124 |  | Install ACT Ceiling Tile | 5d | 2026-06-25 | 2026-06-30 | PH08DH-120, PH08DH-234, PRMT-1020, PH08DH-107, PH08DH-105, PH08DH-104, PH08DH-108, PH08DH-134, PH08DH-276 |  |  | 15d | 23d |  | Y |
| PH08DH-129 |  | LOTO - Finish | 1d | 2026-06-30 | 2026-06-30 | PH08DH-130 SS |  |  | 15d | 23d |  | Y |
| PH08DH-130 |  | Energization of Equipment - Source 1 | 24d | 2026-06-30 | 2026-07-27 | PH08DH-128, PH08DH-127, PH08DH-120, PH08DH-126, PH08-PH-110 |  |  | -18d | 0d |  | Y |
| PH08DH-131 |  | Data Hall Ready for (NEA) | 1d | 2026-07-27 | 2026-07-27 | PH08DH-254, PH08DH-130 FF |  |  | -18d | 0d |  | Y |
| PH08DH-132 |  | Data Hall Ready for H2C | 0d | 2026-07-28 | 2026-07-28 | PH08DH-129, PH08DH-130, PH08DH-124 FF |  |  | -8d | 28d |  | Y |
| PH08DH-274 |  | Energization of Equipment - Source 2 | 10d | 2026-08-18 | 2026-08-28 | PH08MS-1020, BTN2-1593, PH08ER-139 |  |  | -36d | 0d | Calendar 07 - 6 Day Work Week w/o holidays - Mon-Sat |  |

| ID | WBS | Activity | Duration | Start | Finish | Predecessors | Planned start | Planned finish | Total float | Free float | Calendar | 12 - GC - Export_to_Procore |
| --- | --- | --- | --- | --- | --- | --- | --- | --- | --- | --- | --- | --- |
|  | 1.18.1 | **BMS - Phase 8 / CR-4** |  | 2026-05-27 | 2026-07-01 |  |  |  |  |  |  |  |
| PH08BMS-100 |  | Rough-in - BMS | 15d | 2026-05-27 | 2026-06-12 | PH08MS-1000 SS, PH08DH-123 |  |  | 10d | 0d |  | Y |
| PH08BMS-101 |  | Install Wiring/Terminate - BMS | 15d | 2026-06-13 | 2026-06-30 | PH08BMS-100 |  |  | 14d | 0d |  | Y |
| PH08BMS-102 |  | BMS Ready for (NEA) | 10d | 2026-06-13 | 2026-06-24 | PH08BMS-100 |  |  | 10d | 5d |  | Y |
| PH08BMS-103 |  | BMS Ready for H2C | 1d | 2026-07-01 | 2026-07-01 | PH08BMS-102, PH08BMS-101 |  |  | 14d | 50d |  | Y |
|  | 1.18.2 | **EPMS - Phase 8 / CR-4** |  | 2026-05-27 | 2026-07-02 |  |  |  |  |  |  |  |
| PH08EPMS-100 |  | Rough-in - EPMS | 15d | 2026-05-27 | 2026-06-12 | PH08MS-1000 SS, PH08DH-123 |  |  | 4d | 0d |  | Y |
| PH08EPMS-101 |  | Install Wiring/Terminate | 15d | 2026-06-13 | 2026-06-30 | PH08EPMS-100 |  |  | 4d | 0d |  | Y |
| PH08EPMS-102 |  | EPMS Ready for (NEA) | 1d | 2026-07-01 | 2026-07-01 | PH08EPMS-101 |  |  | 4d | 0d |  | Y |
| PH08EPMS-103 |  | EPMS Ready for H2C | 1d | 2026-07-02 | 2026-07-02 | PH08EPMS-102 |  |  | 13d | 49d |  | Y |
|  | 1.17.5 | **Electrical Rooms - Phase 8 / CR-4** |  | 2026-05-05 | 2026-08-28 |  |  |  |  |  |  |  |
| PH08ER-100 |  | Mobilization | 1d | 2026-05-05 | 2026-05-05 | PH08MS-1000 SS | 2026-04-13 | 2026-04-13 |  |  |  | Y |
| PH08ER-103 |  | LOTO Start | 1d | 2026-05-05 | 2026-05-05 | PH08ER-100 SS | 2026-04-24 | 2026-04-24 | -4d | 1d |  | Y |
| PH08ER-104 |  | MEP Layout | 8d | 2026-05-05 | 2026-05-05 | PH08ER-100 FF | 2026-04-06 | 2026-04-14 | -5d | 0d |  |  |
| PH08ER-108 |  | Inspections Walls | 2d | 2026-05-05 | 2026-05-05 | PH08ER-100 | 2026-04-16 | 2026-04-17 |  |  | VA-DC1-Calendar 01 - 5 Day w/holiday (No Pats Day) | Y |
| PH08ER-179 |  | Demo Wall Penetrations | 3d | 2026-05-05 | 2026-05-05 | PH08MS-1000 SS | 2026-04-22 | 2026-04-24 |  |  |  | Y |
| PH08ER-105 |  | Install Electrical Hangers | 6d | 2026-05-06 | 2026-05-12 | PH08MS-1000 SS, PH08ER-103 SS, PH08ER-104 |  |  | -5d | 0d |  | Y |
| PH08ER-159 |  | Install Electrical Bus Duct | 10d | 2026-05-06 | 2026-05-16 | PH08CFC-105, PH08ER-104 |  |  | 21d | 35d |  | Y |
| PH08ER-204 |  | Concrete Demo For Walls + Floors Electrical Rooms | 6d | 2026-05-06 | 2026-05-12 | PH08ER-100, PH08ER-104 |  |  | 10d | 15d |  | Y |
| PH08ER-107 |  | Install Electrical Tray | 15d | 2026-05-13 | 2026-05-29 | PH08ER-105, PH08ER-179 |  |  | -5d | 0d |  | Y |
| PH08ER-112 |  | Pull MC Feeders A | 15d | 2026-05-30 | 2026-06-16 | PH08ER-107, PH08ER-204 |  |  | -5d | 0d |  | Y |
| PH08ER-114 |  | Terminate MC Feeders A | 15d | 2026-05-30 | 2026-06-16 | PH08ER-112 FF |  |  | -5d | 9d |  | Y |
| PH08ER-129 |  | Pull MC Feeders B | 15d | 2026-05-30 | 2026-06-16 | PH08ER-107, PH08ER-204 |  |  | 8d | 44d |  | Y |
| PH08ER-111 |  | Install Electrical Equipment (CCS's, MSB Breakers) | 15d | 2026-06-10 | 2026-06-26 | PH08ER-107, PH08CFC-125 |  |  | -14d | 0d |  | Y |
| PH08ER-119 |  | LOTO Finish | 1d | 2026-06-27 | 2026-06-27 | PH08ER-114, PH08ER-111, PH08ER-159 |  |  | -14d | 0d |  | Y |
| PH08ER-115 |  | Energization of Equipment | 20d | 2026-06-29 | 2026-07-21 | PH08ER-114, PH08ER-119 |  |  | -14d | 0d |  | Y |
| PH08ER-116 |  | Electrical Rooms Ready for (NEA) | 1d | 2026-07-22 | 2026-07-22 | PH08ER-115, PH08ER-108 |  |  | -14d | 0d |  | Y |
| PH08ER-118 |  | Electrical Rooms Ready for PHFO | 1d | 2026-07-23 | 2026-07-23 | PH08ER-116 |  |  | 9d | 45d |  | Y |
| PH08ER-149 |  | Install Electrical ATS | 5d | 2026-07-31 | 2026-08-05 | PH08CFC-115, ISSU23.80 |  |  | -36d | 0d |  | Y |
| PH08ER-139 |  | Terminate MC Feeders B | 10d | 2026-08-06 | 2026-08-17 | PH08ER-129 FF+9d, PH08ER-149 |  |  | -36d | 0d |  | Y |
| PH08ER-117 |  | Electrical Rooms Ready for H2C | 1d | 2026-08-28 | 2026-08-28 | PH08DH-274 FF |  |  | -36d | 0d |  | Y |

| ID | WBS | Activity | Duration | Start | Finish | Predecessors | Planned start | Planned finish | Total float | Free float | Calendar | 12 - GC - Export_to_Procore |
| --- | --- | --- | --- | --- | --- | --- | --- | --- | --- | --- | --- | --- |
|  | 1 | **Penthouse - Phase 8 / CR-4** |  | 2026-05-05 | 2026-06-17 |  |  |  |  |  |  |  |
| PH08-PH-120 |  | MEP Layout | 1d | 2026-05-05 | 2026-05-05 | PH08-PH-130 FF | 2026-04-06 | 2026-04-06 |  |  |  |  |
| PH08-PH-130 |  | Mobilization | 5d | 2026-05-05 | 2026-05-05 | PH08MS-1000 SS | 2026-04-13 | 2026-04-17 |  |  |  |  |
| PH08-PH-140 |  | Concrete/Drywall Demo | 5d | 2026-05-05 | 2026-05-05 | PH08-PH-120 | 2026-04-27 | 2026-05-01 |  |  |  |  |
| PH08-PH-150 |  | Set ATSs | 5d | 2026-05-05 | 2026-05-05 | PH08-PH-120 | 2026-04-27 | 2026-05-01 |  |  |  |  |
| PH08-PH-160 |  | Pointup Drywall | 3d | 2026-05-05 | 2026-05-05 | PH08-PH-140 | 2026-05-02 | 2026-05-05 |  |  |  |  |
| PH08-PH-170 |  | Install Cable Tray | 10d | 2026-05-05 | 2026-05-15 | PH08-PH-120, PH08-PH-160 |  |  | -5d | 0d |  |  |
| PH08-PH-180 |  | Paint | 2d | 2026-05-05 | 2026-05-06 | PH08-PH-140, PH08-PH-160 |  |  | 75d | 35d |  |  |
| PH08-PH-190 |  | Concrete Infills | 5d | 2026-05-05 | 2026-05-05 | PH08-PH-130 | 2026-04-27 | 2026-05-01 |  |  |  |  |
| PH08-PH-100 |  | Pull Feeders Phase 8 | 10d | 2026-05-16 | 2026-05-27 | PH08MS-1000 SS, PH08-PH-170, PH08-PH-150 |  |  | -5d | 0d |  | Y |
| PH08-PH-110 |  | Terminate Feeders Phase 8 | 15d | 2026-05-28 | 2026-06-13 | PH08-PH-100 |  |  | -5d | 0d |  | Y |
| PH08-PH-200 |  | Cable Tray Fireproofing | 2d | 2026-06-15 | 2026-06-16 | PH08-PH-110 |  |  | 40d | 0d |  |  |
| PH08-PH-210 |  | Final Clean | 1d | 2026-06-17 | 2026-06-17 | PH08-PH-180, PH08-PH-200, PH08-PH-190 |  |  | 40d | 76d |  |  |
|  | FINAL-INSP | **Final Inspections** |  | 2026-05-05 | 2026-08-17 |  |  |  |  |  |  |  |
|  | PH1 | **Phase 1 / CR-6 - Final Inspections** |  | 2026-05-05 | 2026-05-05 |  |  |  |  |  |  |  |
| PRMT-1050 |  | Phase 1 Temp Final Inspections + Puchlist | 15d | 2026-05-05 | 2026-05-05 | ISSU14.20 FF, PH01MS-1020 | 2025-09-30 | 2025-10-21 |  |  | VA-DC1-Calendar 01 - 5 Day w/holiday (No Pats Day) | Y |
|  | PH2 | **Phase 2 / CR-7 - Final Inspections** |  | 2026-05-05 | 2026-05-05 |  |  |  |  |  |  |  |
| PRMT-1060 |  | Phase 2 Temp Final Inspections + Puchlist | 5d | 2026-05-05 | 2026-05-05 | PH02MS-1020, ISSU33.10 | 2025-11-10 | 2025-11-17 |  |  | VA-DC1-Calendar 01 - 5 Day w/holiday (No Pats Day) | Y |
|  | PH3 | **Phase 3 / CR-2 - Final Inspections** |  | 2026-05-05 | 2026-05-05 |  |  |  |  |  |  |  |
| PRMT-1070 |  | Phase 3 Temp Final Inspections + Puchlist | 4d | 2026-05-05 | 2026-05-05 | PH03MS-1020, ISSU33.10, PH03.CX.1010 | 2025-12-16 | 2025-12-19 |  |  | VA-DC1-Calendar 01 - 5 Day w/holiday (No Pats Day) | Y |
|  | PH4 | **Phase 4 / CR-3 - Final Inspections** |  | 2026-05-05 | 2026-05-05 |  |  |  |  |  |  |  |
| PRMT-1080 |  | Phase 4 Temp Final Inspections + Puchlist | 4d | 2026-05-05 | 2026-05-05 | PH04MS-1020, ISSU33.10, PH04.CX.1010 | 2026-01-13 | 2026-01-16 |  |  | VA-DC1-Calendar 01 - 5 Day w/holiday (No Pats Day) | Y |
|  | PH5 | **Phase 5 / CR-5 - Final Inspections** |  | 2026-06-01 | 2026-06-19 |  |  |  |  |  |  |  |
| PRMT-1090 |  | Phase 5 Temp Final Inspections + Puchlist | 15d | 2026-06-01 | 2026-06-19 | PH05MS-1020 |  |  | -14d | 34d | VA-DC1-Calendar 01 - 5 Day w/holiday (No Pats Day) | Y |

| ID | WBS | Activity | Type | Duration | Start | Finish | Predecessors | Planned start | Planned finish | Total float | Free float | Calendar | 12 - GC - Export_to_Procore | ISSUES |
| --- | --- | --- | --- | --- | --- | --- | --- | --- | --- | --- | --- | --- | --- | --- |
|  | PH6 | **Phase 6 / CR-8 - Final Inspections** |  |  | 2026-06-16 | 2026-07-07 |  |  |  |  |  |  |  |  |
| PRMT-1100 |  | Phase 6 Temp Final Inspections + Puchlist |  | 15d | 2026-06-16 | 2026-07-07 | PH06MS-1020 |  |  | -25d | 33d | VA-DC1-Calendar 01 - 5 Day w/holiday (No Pats Day) | Y |  |
|  | PH7 | **Phase 7 / CR-1 - Final Inspections** |  |  | 2026-07-14 | 2026-08-03 |  |  |  |  |  |  |  |  |
| PRMT-1110 |  | Phase 7 Temp Final Inspections + Puchlist |  | 15d | 2026-07-14 | 2026-08-03 | PH07MS-1020 |  |  | 0d | 19d | VA-DC1-Calendar 01 - 5 Day w/holiday (No Pats Day) | Y |  |
|  | PH8 | **Phase 8 / CR-4 - Final Inspections** |  |  | 2026-07-28 | 2026-08-17 |  |  |  |  |  |  |  |  |
| PRMT-1120 |  | Phase 8 Final Inspections + Punchlist |  | 15d | 2026-07-28 | 2026-08-17 | PH08MS-1020 |  |  | -10d | 19d | VA-DC1-Calendar 01 - 5 Day w/holiday (No Pats Day) | Y |  |
|  | COMMISSIONING | **Commissioning** |  |  | 2026-05-05 | 2026-09-14 |  |  |  |  |  |  |  |  |
| PH01.CX.1010 |  | PH01 Conditional OWNER Commissioning |  | 12d | 2026-05-05 | 2026-05-05 | PH01MS-1030 | 2025-09-18 | 2025-10-03 |  |  | Calendar 01 - 5 Day w/holidays (No Pats Day) |  |  |
| PH02.CX.1010 |  | PH02 Conditional OWNER Commissioning |  | 12d | 2026-05-05 | 2026-05-05 | PH02MS-1030, PH02ER-118, ISSU36.10 | 2025-10-27 | 2025-11-12 |  |  | Calendar 01 - 5 Day w/holidays (No Pats Day) |  |  |
| PH03.CX.1010 |  | PH03 Conditional OWNER Commissioning |  | 14d | 2026-05-05 | 2026-05-05 | PH03MS-1030, ISSU36.20 | 2025-11-18 | 2025-12-08 |  |  | Calendar 01 - 5 Day w/holidays (No Pats Day) |  |  |
| PH04.CX.1010 |  | PH04 Conditional OWNER Commissioning |  | 15d | 2026-05-05 | 2026-05-05 | PH04MS-1030, ISSU36.30, PH02.CX.1010, PH03.CX.1010 | 2025-12-16 | 2026-01-07 |  |  | Calendar 01 - 5 Day w/holidays (No Pats Day) |  |  |
| PH01.CX.1000 |  | PH01 OWNER Commissioning |  | 10d | 2026-06-26 | 2026-07-10 | PH01MS-10302 |  |  | -103d | 0d | Calendar 01 - 5 Day w/holidays (No Pats Day) |  |  |
| PH02.CX.1000 |  | PH02 OWNER Commissioning |  | 10d | 2026-07-15 | 2026-07-28 | PH02MS-10302 |  |  | -104d | 0d | Calendar 01 - 5 Day w/holidays (No Pats Day) |  |  |
| PH05.CX.1000 |  | PH05 OWNER Commissioning |  | 15d | 2026-07-17 | 2026-08-06 | PH05MS-1030 |  |  | -47d | 1d | Calendar 01 - 5 Day w/holidays (No Pats Day) |  |  |
| PH03.CX.1000 |  | PH03 OWNER Commissioning |  | 10d | 2026-07-30 | 2026-08-12 | PH03MS-10302 |  |  | -104d | 0d | Calendar 01 - 5 Day w/holidays (No Pats Day) |  |  |
| PH06.CX.1000 |  | PH06 OWNER Commissioning |  | 15d | 2026-07-31 | 2026-08-20 | PH06MS-1030 |  |  | -57d | 1d | Calendar 01 - 5 Day w/holidays (No Pats Day) |  |  |
| PH04.CX.1000 |  | PH04 OWNER Commissioning |  | 10d | 2026-08-17 | 2026-08-28 | PH04MS-10302 |  |  | -102d | 0d | Calendar 01 - 5 Day w/holidays (No Pats Day) |  |  |
| PH07.CX.1000 |  | PH07 OWNER Commissioning |  | 10d | 2026-08-17 | 2026-08-28 | PH07MS-1030 |  |  | -29d | 0d | Calendar 01 - 5 Day w/holidays (No Pats Day) |  |  |
| PH08.CX.1000 |  | PH08 OWNER Commissioning |  | 10d | 2026-08-31 | 2026-09-14 | PH08MS-1030, PH07.CX.1000 |  |  | -29d | 0d | Calendar 01 - 5 Day w/holidays (No Pats Day) |  |  |
|  | DELETED ACTIVITIES | **DELETED ACTIVITIES** |  |  | 2026-05-05 | 2026-05-05 |  |  |  |  |  |  |  |  |
| BTN2-1600 |  | DELETE - Phase 1 & 2 Re-Commissioning |  | 0d | 2026-05-05 | 2026-05-05 | PO SS | 2025-12-16 | 2025-12-16 |  |  |  | Y | ISSU08 |
| BTN2-1610 |  | DELETE - Phase 3 & 4 Re-Commissioning |  | 0d | 2026-05-05 | 2026-05-05 | PO SS | 2025-12-16 | 2025-12-16 |  |  |  | Y | ISSU08 |
| ISSU11.20 |  | DELETE - Issue #11 - RFI-108 - Cable Tray / Bus Duct De-energization |  | 0d | 2026-05-05 | 2026-05-05 | PO SS | 2025-10-01 | 2025-10-01 |  |  |  | Y | ISSU11 |
| ISSU11.30 |  | DELETE - Issue #11 - RFI-108 - Cable Tray / Block Out Infill |  | 0d | 2026-05-05 | 2026-05-05 | ISSU11.20 | 2025-10-01 | 2025-10-01 |  |  |  | Y | ISSU11 |
| ISSU11.40 |  | DELETE - Issue #11 - RFI-108 - Cable Tray / Bus Duct Re-Energization |  | 1d | 2026-05-05 | 2026-05-05 | ISSU11.30 | 2025-10-01 | 2025-10-01 |  |  |  | Y | ISSU11 |
| ISSU40.100 |  | DELETE - Issue #40 - Change in PH Security Access - Phase 05 Added Duration - Energization of Equipment - Source 1 |  | 0d | 2026-05-05 | 2026-05-05 | ISSU40.90 | 2026-03-20 | 2026-03-20 |  |  | Calendar 07 - 6 Day Work Week w/o holidays - Mon-Sat |  | ISSU40 |
| ISSU40.110 |  | DELETE - Issue #40 - Change in PH Security Access - Phase 06 Added Duration - Energization of Equipment - Source 1 |  | 0d | 2026-05-05 | 2026-05-05 | ISSU40.100 | 2026-03-20 | 2026-03-20 |  |  | Calendar 07 - 6 Day Work Week w/o holidays - Mon-Sat |  | ISSU40 |
| ISSU40.50 |  | DELETE - Issue #40 - Change in PH Security Access - Phase 05 Added Duration - Terminate Feeders |  | 0d | 2026-05-05 | 2026-05-05 | ISSU40.80 | 2026-03-20 | 2026-03-20 |  |  | Calendar 07 - 6 Day Work Week w/o holidays - Mon-Sat |  | ISSU40 |
| ISSU40.80 |  | DELETE - Issue #40 - Change in PH Security Access - Phase 06 Added Duration - Pull Feeders |  | 0d | 2026-05-05 | 2026-05-05 | PO SS | 2026-03-20 | 2026-03-20 |  |  | Calendar 07 - 6 Day Work Week w/o holidays - Mon-Sat |  | ISSU40 |
| ISSU40.90 |  | DELETE - Issue #40 - Change in PH Security Access - Phase 06 Added Duration - Terminate Feeders |  | 0d | 2026-05-05 | 2026-05-05 | ISSU40.50 | 2026-03-20 | 2026-03-20 |  |  | Calendar 07 - 6 Day Work Week w/o holidays - Mon-Sat |  | ISSU40 |
| PH01S-103 |  | DELETE - Security Underground Piping (Currently not in GC scope, in Change Order Process) |  | 0d | 2026-05-05 | 2026-05-05 | PO SS | 2026-04-13 | 2026-04-13 |  |  | Calendar 01 - 5 Day w/holidays (No Pats Day) | Y |  |
| PH01S-110 |  | DELETE - Install Gates Power & Controls (Currently not in GC scope, in Change Order Process) |  | 0d | 2026-05-05 | 2026-05-05 | PH01S-103 | 2026-04-13 | 2026-04-13 |  |  | Calendar 01 - 5 Day w/holidays (No Pats Day) | Y |  |
| PH05DH-194 |  | DELETE - Concrete Demo For Walls + Floors Data Hall |  | 6d | 2026-05-05 | 2026-05-05 | PO SS | 2026-01-14 | 2026-01-20 |  |  |  | Y |  |
| PH05MS-1015 |  | DELETE - Phase 05 Ready for Vendors | milestone | 0d | 2026-05-05 | 2026-05-05 | PH05MS-1000 SF | 2026-04-13 | 2026-04-13 |  |  |  | Y |  |
| PH06DH-194 |  | DELETE - Concrete Demo For Walls + Floors Data Hall |  | 0d | 2026-05-05 | 2026-05-05 | PO SS | 2026-01-20 | 2026-01-20 |  |  |  | Y |  |
| PH06MS-1015 |  | DELETE - Phase 06 Ready for Vendors | milestone | 0d | 2026-05-05 | 2026-05-05 | PH05MS-1015 FF | 2026-04-13 | 2026-04-13 |  |  |  | Y |  |
| PH07DH-194 |  | DELETE - Concrete Demo For Walls + Floors Data Hall |  | 0d | 2026-05-05 | 2026-05-05 | PO SS | 2026-01-20 | 2026-01-20 |  |  |  | Y |  |
| PH07ER-106 |  | DELETE - Electrical / FA / Sec. Rough-in Walls |  | 0d | 2026-05-05 | 2026-05-05 | PH07MS-1000 SS | 2026-04-06 | 2026-04-06 |  |  |  | Y |  |
| PH08DH-194 |  | DELETE - Concrete Demo For Walls + Floors Data Hall |  | 0d | 2026-05-05 | 2026-05-05 | PO SS | 2026-01-20 | 2026-01-20 |  |  |  | Y |  |
| PH08ER-106 |  | DELETE - Electrical / FA / Sec. Rough-in Walls |  | 0d | 2026-05-05 | 2026-05-05 | PH07ER-106 | 2026-04-06 | 2026-04-06 |  |  |  | Y |  |

| ID | WBS | Activity | Duration | Start | Finish | Predecessors | Planned start | Planned finish | Calendar | ISSUES |
| --- | --- | --- | --- | --- | --- | --- | --- | --- | --- | --- |
|  | 22 | **ISSUE #22 - Metronome** |  | 2026-05-05 | 2026-05-05 |  |  |  |  |  |
| ISSU22.10 |  | Issue #22 - Cost Submitted to OWNER - DELETE | 1d | 2026-05-05 | 2026-05-05 | PO SS | 2025-07-07 | 2025-07-07 | Calendar 01 - 5 Day w/holidays (No Pats Day) | ISSU22 |
| ISSU22.20 |  | Issue #22 - Cost Approval/WO issued from OWNER - DELETE | 1d | 2026-05-05 | 2026-05-05 | ISSU22.10 | 2025-08-26 | 2025-08-26 | Calendar 01 - 5 Day w/holidays (No Pats Day) | ISSU22 |
| ISSU22.25 |  | Issue #22 - Subcontracting of Integration Work - DELETE | 1d | 2026-05-05 | 2026-05-05 | ISSU22.10 | 2025-08-26 | 2025-08-26 | Calendar 01 - 5 Day w/holidays (No Pats Day) | ISSU22 |
| ISSU22.30 |  | Issue #22 - Material Procurement - DELETE | 1d | 2026-05-05 | 2026-05-05 | ISSU22.25, ISSU22.20 | 2025-08-27 | 2025-08-27 | Calendar 01 - 5 Day w/holidays (No Pats Day) | ISSU22 |
| ISSU22.40 |  | Issue #22 - Install - DELETE | 1d | 2026-05-05 | 2026-05-05 | ISSU22.30 | 2025-08-28 | 2025-08-28 | Calendar 01 - 5 Day w/holidays (No Pats Day) | ISSU22 |
|  | 16 | **ISSUE #16 - RFI#195 - Missing ATS/PDUs in Existing CPs** |  | 2026-05-05 | 2026-05-05 |  |  |  |  |  |
| ISSU16.10 |  | Issue #16: Direction to GC and Cost Submittal - DELETE | 1d | 2026-05-05 | 2026-05-05 | PO SS | 2025-06-27 | 2025-06-27 | Calendar 01 - 5 Day w/holidays (No Pats Day) | ISSU16 |
| ISSU16.20 |  | Issue #16: OWNER Review and Issuance of Work Order - DELETE | 1d | 2026-05-05 | 2026-05-05 | ISSU16.10 | 2025-08-26 | 2025-08-26 | Calendar 01 - 5 Day w/holidays (No Pats Day) | ISSU16 |
| ISSU16.30 |  | Issue #16: Material Procurement- DELETE | 1d | 2026-05-05 | 2026-05-05 | ISSU16.20 | 2025-08-27 | 2025-08-27 | Calendar 01 - 5 Day w/holidays (No Pats Day) | ISSU16 |
| ISSU16.40 |  | Issue #16: Material Install- DELETE | 1d | 2026-05-05 | 2026-05-05 | ISSU16.30 | 2025-08-28 | 2025-08-28 | Calendar 01 - 5 Day w/holidays (No Pats Day) | ISSU16 |
|  | 26 | **ISSUE #26 - RFI#235 - EPMS/BMS Scope Gaps PH01 & 02** |  | 2026-05-05 | 2026-05-05 |  |  |  |  |  |
| ISSU26.10 |  | Issue #26 - Pricing RFI 235 - VOID (OWNER SCOPE) | 18d | 2026-05-05 | 2026-05-05 | PH01MS-1000 SS | 2025-08-05 | 2025-08-28 | Calendar 01 - 5 Day w/holidays (No Pats Day) | ISSU26 |
| ISSU26.20 |  | Issue #26 - OWNER Review and Issuance of Work Order - VOID (OWNER SCOPE) | 1d | 2026-05-05 | 2026-05-05 | ISSU26.10 | 2025-08-26 | 2025-08-26 | Calendar 01 - 5 Day w/holidays (No Pats Day) | ISSU26 |
| ISSU26.30 |  | Issue #26 - Prepare BMS/EPMS Submittals - VOID (OWNER SCOPE) | 1d | 2026-05-05 | 2026-05-05 | ISSU26.20 | 2025-08-27 | 2025-08-27 | Calendar 01 - 5 Day w/holidays (No Pats Day) | ISSU26 |
| ISSU26.40 |  | Issue #26 - Submittal Review and Approval - VOID (OWNER SCOPE) | 1d | 2026-05-05 | 2026-05-05 | ISSU26.30 | 2025-08-28 | 2025-08-28 | Calendar 01 - 5 Day w/holidays (No Pats Day) | ISSU26 |
| ISSU26.50 |  | Issue #26 - Panel Hardware Procurement - VOID (OWNER SCOPE) | 1d | 2026-05-05 | 2026-05-05 | ISSU26.40 | 2025-08-29 | 2025-08-29 | Calendar 01 - 5 Day w/holidays (No Pats Day) | ISSU26 |
| ISSU26.60 |  | Issue #26 - Panel Fabrication - VOID (OWNER SCOPE) | 1d | 2026-05-05 | 2026-05-05 | ISSU26.50 | 2025-09-02 | 2025-09-02 | Calendar 01 - 5 Day w/holidays (No Pats Day) | ISSU26 |
| ISSU26.70 |  | Issue #26 - Engineering - VOID (OWNER SCOPE) | 1d | 2026-05-05 | 2026-05-05 | ISSU26.40 | 2025-08-29 | 2025-08-29 | Calendar 01 - 5 Day w/holidays (No Pats Day) | ISSU26 |
| ISSU26.80 |  | Issue #26 - Material Installation - VOID (OWNER SCOPE) | 1d | 2026-05-05 | 2026-05-05 | ISSU26.60, ISSU26.70 | 2025-09-03 | 2025-09-03 | Calendar 01 - 5 Day w/holidays (No Pats Day) | ISSU26 |
| ISSU26.90 |  | Issue #26 - Test and Checks - VOID (OWNER SCOPE) | 1d | 2026-05-05 | 2026-05-05 | ISSU26.80 | 2025-09-04 | 2025-09-04 | Calendar 01 - 5 Day w/holidays (No Pats Day) | ISSU26 |

## Activity codes

| Code | Value | Meaning |
| --- | --- | --- |
| 05 -GC - Building Phase | 1 | Phase 1 |
| 05 -GC - Building Phase | 2 | Phase 2 |
| 05 -GC - Building Phase | 3 | Phase 3 |
| 05 -GC - Building Phase | 4 | Phase 4 |
| 05 -GC - Building Phase | 5 | Phase 5 |
| 05 -GC - Building Phase | 6 | Phase 6 |
| 05 -GC - Building Phase | 7 | Phase 7 |
| 05 -GC - Building Phase | 8 | Phase 8 |
| 12 - GC - Export_to_Procore | Y | Export to Procore |
| 13 -GC - MC (Systems of Work) | H2C | (04) Hand off to CX/Substantial Comp/L4 |
| 13 -GC - MC (Systems of Work) | NEA | (03) Network Early Access/L3 |
| 13 -GC - MC (Systems of Work) | PFHO | (05) PFHO or Final Completion/L5 |
| 13 -GC - MC (Systems of Work) | SWD | (02) Start Work |
| ISSUES | ISSU01 | ISSU01 Delay in Work Order / Funding |
| ISSUES | ISSU02 | ISSU02 Delay in Turnover From Core&Shell |
| ISSUES | ISSU03 | ISSU03 Delay of Ductwork SDWG |
| ISSUES | ISSU04 | ISSU04 Drywall & CRAH Delay Due to Exterior Window Removal |
| ISSUES | ISSU05 | ISSU05 Remaining Parts of Busduct Phase 1&2 |
| ISSUES | ISSU06 | ISSU06 BusDuct Delay Due to Removal of Base Building Clashes |
| ISSUES | ISSU07 | ISSU07 Procuring Lighting Hardware PH1-PH4 |
| ISSUES | ISSU08 | ISSU08 Bulletin 2 Power Topology Impact |
| ISSUES | ISSU09 | ISSU09 RFI#63 - Wood Slot Ceiling |
| ISSUES | ISSU10 | ISSU10 RFI#148 - Guard Booth Underground Design Details & Location |
| ISSUES | ISSU11 | ISSU11 RFI#108 - Cable Tray Penetration at Penthouse Electrical Room |
| ISSUES | ISSU12 | ISSU12 RFI#166 Updated Whip Testing Requirements |
| ISSUES | ISSU13 | ISSU13 RFI#64 Office Area's Shade Pockets |
| ISSUES | ISSU14 | ISSU14 AHJ Review of Architectural Bulletin 2 DWG |
| ISSUES | ISSU15 | ISSU15 RFI#104 - Added CP Panels |
| ISSUES | ISSU16 | ISSU16 RFI#195 - Missing ATS/PDUs in CPs |
| ISSUES | ISSU17 | ISSU17 Missing Gallery SEL Relays |
| ISSUES | ISSU18 | ISSU18 Juniper Switches |
| ISSUES | ISSU19 | ISSU19 Building Chiller System Filtration |
| ISSUES | ISSU20 | ISSU20 RFI#200 - MDF/DECOM Power Requirements |
| ISSUES | ISSU21 | ISSU21 RFI#178 - Redefine Perfect Positioning (PP) |
| ISSUES | ISSU22 | ISSU22 Metronome |
| ISSUES | ISSU23 | ISSU23 Phase 5-8 ATS Procurement |
| ISSUES | ISSU24 | ISSU24 RFI#215 - Exterior Fence Layout Clarification |
| ISSUES | ISSU25 | ISSU25 CICO Room Logistics Change Order |
| ISSUES | ISSU26 | ISSU26 RFI#235 - EPMS/BMS Scope Gaps |
| ISSUES | ISSU27 | ISSU27 RFI#241 - Perimeter Gate Size per Bulletin 4 |
| ISSUES | ISSU28 | ISSU28 RFI#55 - Mesh Wall at MMR/MDF |
| ISSUES | ISSU29 | ISSU29 RFI#260 - EPMS/BMS Power Requirements |
| ISSUES | ISSU30 | ISSU30 RFI#157 - Max Cool CRAH Command Terminations |
| ISSUES | ISSU31 | ISSU31 RFI#262 - Exhaust Fan Above Cafe Power |
| ISSUES | ISSU32 | ISSU32 Repair Cut Fiber |
| ISSUES | ISSU33 | ISSU33 Reissuance of Permits PH01-08 |
| ISSUES | ISSU34 | ISSU34 RFI#222 Site Work Security Pathways |
| ISSUES | ISSU35 | ISSU35 Added CICO Security Rough-In |
| ISSUES | ISSU36 | ISSU36 OWNER CX Schedule/Resources Delay |
| ISSUES | ISSU37 | ISSU37 CRAH-CR3-19 Fan Motor Issues |
| ISSUES | ISSU39 | ISSU39 Red Zone Certification Requests (CR-6 Whip Shield, Basebuild Doors, RPP Alarms) |
| ISSUES | ISSU40 | ISSU40 Change in Security Access in Penthouse |
| ISSUES | ISSU41 | ISSU41 Storage Room 176, 276 and 242 - Base Build Adiabatic System Clash with Cable Tray |
| ISSUES | ISSU43 | ISSU43 RFI-334 Added Janitza Meters |
| ISSUES | ISSU44 | ISSUE44 MSB A14 Energization |
| ISSUES | ISSU45 | ISSUE45 OFCI DLB Panel Procurement |
| ISSUES | ISSU46 | ISSUE46 Tranche #2 Power Delay |
