# [VA-DC2-PRJ.MO-UP] OWNER VA-DC2 (Start Work Date: 09/16/2024) - Asbuilt

Schedule from Primavera P6, 2025-10-08 to 2025-10-08, data date 2025-10-08.

## Calendars

- Calendar 01 - 5 Day w/holidays (No Pats Day): Mon-Fri 08:00-12:00, 13:00-17:00; Sat-Sun off.
- Calendar 06 - 6 Day Work Week w/ Mass. Holidays: Mon-Sat 08:00-12:00, 13:00-17:00; Sun off.
- Calendar 01 - 5 Day w/holidays (No Pats Day): Mon-Fri 08:00-12:00, 13:00-17:00; Sat-Sun off.
- MC Calendar 02- OWNER Mondays only(NEA, PFHO): Mon 08:00-12:00, 13:00-17:00; Tue-Sun off.
- MC Calendar 01- OWNER Fridays only(H2C, PCO): Mon-Thu off; Fri 08:00-12:00, 13:00-17:00; Sat-Sun off.
- 5 day Work week Mon-Fri Specific Holidays: Mon-Fri 08:00-16:00; Sat-Sun off.
- DO NOT USE Calendar 03 - 6 Day Work Week-P: Mon-Sat 08:00-12:00, 13:00-17:00; Sun off.

## Schedule

| ID | WBS | Activity | Type | Duration | Start | Finish | Predecessors | Planned start | Planned finish | Constraint | Calendar | user_text | 06 -GC - Building Levels | 05 -GC - Building Phase | 13 -GC - MC (Systems of Work) | 03-GC - Location (Systems of Work) |
| --- | --- | --- | --- | --- | --- | --- | --- | --- | --- | --- | --- | --- | --- | --- | --- | --- |
|  | MS | **Milestones** |  |  | 2025-10-08 | 2025-10-08 |  |  |  |  |  |  |  |  |  |  |
| GC.1000 |  | Overall Start | milestone | 0d | 2025-10-08 | 2025-10-08 |  | 2024-03-04 | 2024-03-04 | start on or after 2024-03-04 |  |  |  |  |  |  |
| GC.1010 |  | Overall Complete | milestone | 0d | 2025-10-08 | 2025-10-08 | ISSU27.10 FF, PH06.M.1080, PH01.M.1080, PH04.M.1080, PH03.M.1080, PH02.M.1080, PH05.M.1080, PH07.M.1080, PH08.M.1080, PH09.M.1080, PH10.M.1080, PH10.1050 | 2025-09-19 | 2025-09-19 |  |  |  |  |  |  |  |
|  | 1 | **Phase 1 Milestone VA-DC2UNIT01** |  |  | 2025-10-08 | 2025-10-08 |  |  |  |  |  |  |  |  |  |  |
| PH01.M.1000 |  | Phase 1 Start Work Date | milestone | 0d | 2025-10-08 | 2025-10-08 | PH01.M.1100 SS, GC.1000 SS, ISSU05.10 | 2024-09-23 | 2024-09-23 |  |  | Project calendar reflects 5 day | 02 | 1 | SWD |  |
| PH01.M.1010 |  | Phase 1 OFCI Racking OSD | milestone | 0d | 2025-10-08 | 2025-10-08 | PH01.PR.1000 FF | 2024-09-06 | 2024-09-06 |  |  | work week with | 02 | 1 |  |  |
| PH01.M.1020 |  | Phase 1 Mech/Elec OSD | milestone | 0d | 2025-10-08 | 2025-10-08 | PH01.PR.1090, PH01.PR.1080, PH01.PR.1070, PH01.PR.1060, PH01.PR.1040, PH01.PR.1030, PH01.PR.1020, PH01.PR.1010 | 2024-11-06 | 2024-11-06 |  |  | standard holidays | 02 | 1 |  |  |
| PH01.M.1030 |  | Phase 1 PDC/ATS OSD | milestone | 0d | 2025-10-08 | 2025-10-08 | PH01.PR.1100 FF | 2024-10-28 | 2024-10-28 |  |  |  | 02 | 1 |  |  |
| PH01.M.1040 |  | Phase 1 Mech/Gen OSD | milestone | 0d | 2025-10-08 | 2025-10-08 | PH01.PR.1050 FF | 2024-10-17 | 2024-10-17 |  |  |  | 02 | 1 |  |  |
| PH01.M.1050 |  | Phase 1 Fiber Early Access (FEA) | milestone | 0d | 2025-10-08 | 2025-10-08 | PH01.L1.1370 FF | 2024-12-09 | 2024-12-09 | finish on or before 2024-12-09; finish on or after 2024-12-09 | 5 day Work week Mon-Fri Specific Holidays |  | 02 | 1 |  |  |
| PH01.M.1060 |  | Phase 1 Network Early Access (NEA) | milestone | 0d | 2025-10-08 | 2025-10-08 | PH01.L2.1430 FF, PH01.DH.1520 FF, PH01.DAHU.1560 FF, PH01.DAHU.1450 FF, PH01.DAHU.1130 FF, PH01.DAHU.1020 FF, PH01.SU.1010 FF, PH01.DAHU.1200 FF, PH01.L1.1430 FF, PH1-10-1140 FF, PH01.DH.1420 FF, PH01.SS.1000 FF, PH01.DH.1360 FF, PH01.M.1040 FF, PH01.M.1030 FF, PH01.M.1020 FF, PH01.M.1010 FF, PH01.M.1050 FF, PH01.DH.1350 FF, PH01.DH.1160 FF, PH01.GEN.1140 FF, PH01.1050 FF+1d, PH01.1040 FF, PH01.1030 FF, PH01.1020 FF, PH01.1010 FF, PH01.1000 FF | 2025-02-24 | 2025-02-24 | finish on or before 2025-02-24 | MC Calendar 02- OWNER Mondays only(NEA, PFHO) | Needs to pull in 27 shifts | 02 | 1 | NEA |  |
| PH01.M.1070 |  | Phase 1 H2C | milestone | 0d | 2025-10-08 | 2025-10-08 | PH01.SU.1050 FF, PH01.M.1060 FF, PH01.L1.1310 FF, PH01.L2.1310 FF | 2025-03-14 | 2025-03-14 | finish on or before 2025-03-14; finish on or after 2025-03-14 | MC Calendar 01- OWNER Fridays only(H2C, PCO) | Needs to pull in 4 shifts | 02 | 1 | H2C |  |
| PH01.M.1080 |  | Phase 1 PFHO | milestone | 0d | 2025-10-08 | 2025-10-08 | ISSU24.10 FF, ISSUE23.20 FF, PH2-10.GEN.1230 FF, PH01.L2.1420 FF, PH01.L2.1320 FF, PH01.L1.1420 FF, PH01.IW.1020 FF, PH01.L1.1320 FF, PH01.M.1070 FF, PH01.SU.1040 FF, PH01.SS.1040 FF, PH01.SS.1030 FF, PH01.SS.1020 FF, PH01.SS.1010 FF, PH2-10.GEN.1240 FF | 2025-05-20 | 2025-05-20 | finish on or before 2025-04-28; finish on or after 2025-05-20 |  |  | 02 | 1 | PFHO | MS1 |
| PH01.M.1100 |  | Phase 1 Build WO Executed | milestone | 0d | 2025-10-08 | 2025-10-08 | ISSU04.10, GC.1000 SS, ISSU01.10, ISSU02.10, ISSU03.10, ISSU05.10 | 2024-09-23 | 2024-09-23 |  |  | Project calendar reflects 5 day | 02 | 1 |  |  |
| PH01.M.1110 |  | Phase 1 Early Start of Work | milestone | 0d | 2025-10-08 | 2025-10-08 | ISSU04.10, PH01.M.1120 SS, ISSU01.10, ISSU02.10, ISSU03.10 | 2024-09-06 | 2024-09-06 |  |  | Project calendar reflects 5 day | 02 | 1 |  |  |
| PH01.M.1120 |  | Phase 1 - GC Commence Mobilization | milestone | 0d | 2025-10-08 | 2025-10-08 | ISSU04.10 SS+1d, ISSU01.10, ISSU02.10, ISSU03.10 | 2024-08-20 | 2024-08-20 |  |  |  |  |  |  |  |
|  | 2 | **Phase 2 Milestone VA-DC2UNIT02** |  |  | 2025-10-08 | 2025-10-08 |  |  |  |  |  |  |  |  |  |  |
| PH02.M.1000 |  | Phase 2 Start Work Date | milestone | 0d | 2025-10-08 | 2025-10-08 | GC.1000 SS | 2024-10-28 | 2024-10-28 | start on or before 2024-10-28; start on or after 2024-10-28 |  | Project calendar reflects 5 day | 02 | 2 | SWD |  |
| PH02.M.1010 |  | Phase 2 OFCI Racking OSD | milestone | 0d | 2025-10-08 | 2025-10-08 | PH02.PR.1000 FF | 2024-10-07 | 2024-10-07 |  |  | work week with | 02 | 2 |  |  |
| PH02.M.1020 |  | Phase 2 Mech/Elec OSD | milestone | 0d | 2025-10-08 | 2025-10-08 | PH02.PR.1010, PH02.PR.1020, PH02.PR.1060, PH02.PR.1070, PH02.PR.1080, PH02.PR.1090 | 2024-11-05 | 2024-11-05 |  |  | standard holidays | 02 | 2 |  |  |
| PH02.M.1030 |  | Phase 2 PDC/ATS OSD | milestone | 0d | 2025-10-08 | 2025-10-08 | PH02.PR.1100 FF | 2025-01-06 | 2025-01-06 |  |  |  | 02 | 2 |  |  |
| PH02.M.1040 |  | Phase 2 Mech/Gen OSD | milestone | 0d | 2025-10-08 | 2025-10-08 | PH02.PR.1050 FF | 2024-11-13 | 2024-11-13 |  |  |  | 02 | 2 |  |  |
| PH02.M.1060 |  | Phase 2 Network Early Access (NEA) | milestone | 0d | 2025-10-08 | 2025-10-08 | PH02.SU.1010 FF, PH02.DH.1350 FF, PH02.DH.1360 FF, PH02.DH.1420 FF, PH02.DH.1520 FF, PH02.DH.1160 FF, PH02.DAHU.1560 FF, PH02.DAHU.1450 FF, PH02.DAHU.1200 FF, PH02.DAHU.1130 FF, PH02.DAHU.1020 FF, PH02.EA.2070 FF, PH02.M.1000 SF, PH02.M.1010 FF, PH02.M.1020 FF, PH02.M.1030 FF, PH02.M.1040 FF, PH02.1000 FF, PH02.1010 FF, PH02.1020 FF, PH02.1030 FF, PH02.1040 FF | 2025-03-10 | 2025-03-10 | finish on or before 2025-03-10; finish on or after 2025-03-10 | MC Calendar 02- OWNER Mondays only(NEA, PFHO) | Needs to pull in 27 shifts | 02 | 2 | NEA |  |
| PH02.M.1070 |  | Phase 2 H2C | milestone | 0d | 2025-10-08 | 2025-10-08 | PH02.SU.1050 FF, PH02.M.1060 FF | 2025-04-25 | 2025-04-25 | finish on or before 2025-04-25; finish on or after 2025-04-25 | MC Calendar 01- OWNER Fridays only(H2C, PCO) | Needs to pull in 4 shifts | 02 | 2 | H2C |  |
| PH02.M.1080 |  | Phase 2 PFHO | milestone | 0d | 2025-10-08 | 2025-10-08 | PH02.SU.1040 FF, PH02.1050 FF, PH02.M.1070 FF | 2025-05-20 | 2025-05-20 | finish on or before 2025-05-19; finish on or after 2025-05-20 |  |  | 02 | 2 | PFHO | MS2 |

| ID | WBS | Activity | Type | Duration | Start | Finish | Predecessors | Planned start | Planned finish | Constraint | Calendar | user_text | 06 -GC - Building Levels | 05 -GC - Building Phase | 13 -GC - MC (Systems of Work) | 03-GC - Location (Systems of Work) |
| --- | --- | --- | --- | --- | --- | --- | --- | --- | --- | --- | --- | --- | --- | --- | --- | --- |
|  | 3 | **Phase 3 Milestone VA-DC2UNIT03** |  |  | 2025-10-08 | 2025-10-08 |  |  |  |  |  |  |  |  |  |  |
| PH03.M.1000 |  | Phase 3 Start Work Date | milestone | 0d | 2025-10-08 | 2025-10-08 | GC.1000 SS | 2024-10-28 | 2024-10-28 | start on or before 2024-10-28; start on or after 2024-10-28 |  | Project calendar reflects 5 day | 02 | 3 | SWD |  |
| PH03.M.1010 |  | Phase 3 OFCI Racking OSD | milestone | 0d | 2025-10-08 | 2025-10-08 | PH03.PR.1000 FF | 2024-09-24 | 2024-09-24 |  |  | work week with | 02 | 3 |  |  |
| PH03.M.1020 |  | Phase 3 Mech/Elec OSD | milestone | 0d | 2025-10-08 | 2025-10-08 | PH03.PR.1090, PH03.PR.1080, PH03.PR.1070, PH03.PR.1060, PH03.PR.1040, PH03.PR.1020, PH03.PR.1010 | 2024-11-25 | 2024-11-25 |  |  | standard holidays | 02 | 3 |  |  |
| PH03.M.1030 |  | Phase 3 PDC/ATS OSD | milestone | 0d | 2025-10-08 | 2025-10-08 | PH03.PR.1100 FF | 2025-01-06 | 2025-01-06 |  |  |  | 02 | 3 |  |  |
| PH03.M.1040 |  | Phase 3 Mech/Gen OSD | milestone | 0d | 2025-10-08 | 2025-10-08 | PH03.PR.1050 FF | 2024-11-13 | 2024-11-13 |  |  |  | 02 | 3 |  |  |
| PH03.M.1060 |  | Phase 3 Network Early Access (NEA) | milestone | 0d | 2025-10-08 | 2025-10-08 | PH03.M.1000 SF, PH03.M.1040 FF, PH03.M.1030 FF, PH03.M.1020 FF, PH03.M.1010 FF, PH03.DAHU.1450 FF, PH03.DAHU.1020 FF, PH03.DH.1160 FF, PH03.DAHU.1560 FF, PH03.DH.1520 FF, PH03.DAHU.1130 FF, PH03.DH.1420 FF, PH03.DAHU.1200 FF, PH03.EA.2070 FF, PH03.SU.1010 FF, PH03.DH.1360 FF, PH03.DH.1350 FF, PH03.1000 FF, PH03.1010 FF, PH03.1020 FF, PH03.1030 FF, PH03.1040 FF | 2025-03-10 | 2025-03-10 | finish on or before 2025-03-10 | MC Calendar 02- OWNER Mondays only(NEA, PFHO) | Needs to pull in 27 shifts | 02 | 3 | NEA |  |
| PH03.M.1070 |  | Phase 3 H2C | milestone | 0d | 2025-10-08 | 2025-10-08 | PH03.M.1060 FF, PH03.SU.1050 FF | 2025-04-25 | 2025-04-25 | finish on or before 2025-04-25; finish on or after 2025-04-25 | MC Calendar 01- OWNER Fridays only(H2C, PCO) | Needs to pull in 4 shifts | 02 | 3 | H2C |  |
| PH03.M.1080 |  | Phase 3 PFHO | milestone | 0d | 2025-10-08 | 2025-10-08 | PH03.M.1070 FF, PH03.SU.1040 FF | 2025-05-20 | 2025-05-20 | finish on or before 2025-05-19; finish on or after 2025-05-20 |  |  | 02 | 3 | PFHO | MS3 |
|  | 4 | **Phase 4 Milestone VA-DC2UNIT04** |  |  | 2025-10-08 | 2025-10-08 |  |  |  |  |  |  |  |  |  |  |
| PH04.M.1000 |  | Phase 4 Start Work Date | milestone | 0d | 2025-10-08 | 2025-10-08 | GC.1000 SS | 2024-11-18 | 2024-11-18 | start on or before 2024-11-18; start on or after 2024-11-18 |  | Project calendar reflects 5 day | 02 | 4 | SWD |  |
| PH04.M.1010 |  | Phase 4 OFCI Racking OSD | milestone | 0d | 2025-10-08 | 2025-10-08 | PH04.PR.1000 FF | 2024-11-25 | 2024-11-25 |  |  | work week with | 02 | 4 |  |  |
| PH04.M.1020 |  | Phase 4 Mech/Elec OSD | milestone | 0d | 2025-10-08 | 2025-10-08 | PH04.PR.1010, PH04.PR.1020, PH04.PR.1040, PH04.PR.1060, PH04.PR.1070, PH04.PR.1080, PH04.PR.1090 | 2025-01-06 | 2025-01-06 |  |  | standard holidays | 02 | 4 |  |  |
| PH04.M.1030 |  | Phase 4 PDC/ATS OSD | milestone | 0d | 2025-10-08 | 2025-10-08 | PH04.PR.1100 FF | 2025-01-06 | 2025-01-06 |  |  |  | 02 | 4 |  |  |
| PH04.M.1040 |  | Phase 4 Mech/Gen OSD | milestone | 0d | 2025-10-08 | 2025-10-08 | PH04.PR.1050 FF | 2024-12-03 | 2024-12-03 |  |  |  | 02 | 4 |  |  |
| PH04.M.1060 |  | Phase 4 Network Early Access (NEA) | milestone | 0d | 2025-10-08 | 2025-10-08 | PH04.M.1000 SF, PH04.M.1010 FF, PH04.M.1020 FF, PH04.M.1030 FF, PH04.M.1040 FF, PH04.DAHU.1450 FF, PH04.DAHU.1020 FF, PH04.DH.1160 FF, PH04.DAHU.1560 FF, PH04.DH.1520 FF, PH04.DAHU.1130 FF, PH04.DH.1420 FF, PH04.DAHU.1200 FF, PH04.EA.2070 FF, PH04.SU.1010 FF, PH04.DH.1350 FF, PH04.DH.1360 FF, PH04.1000 FF+1d, PH04.1010 FF+1d, PH04.1020 FF+1d, PH04.1030 FF+1d, PH04.1040 FF+1d, ISSU18.10 FF | 2025-03-17 | 2025-03-17 | finish on or before 2025-03-17; finish on or after 2025-03-17 | MC Calendar 02- OWNER Mondays only(NEA, PFHO) | Needs to pull in 27 shifts | 02 | 4 | NEA |  |
| PH04.M.1070 |  | Phase 4 H2C | milestone | 0d | 2025-10-08 | 2025-10-08 | PH04.M.1060 FF, PH04.SU.1050 FF | 2025-05-09 | 2025-05-09 | finish on or before 2025-05-09; finish on or after 2025-05-09 | MC Calendar 01- OWNER Fridays only(H2C, PCO) | Needs to pull in 4 shifts | 02 | 4 | H2C |  |
| PH04.M.1080 |  | Phase 4 PFHO | milestone | 0d | 2025-10-08 | 2025-10-08 | PH04.M.1070 FF, PH04.SU.1040 FF | 2025-06-02 | 2025-06-02 | finish on or before 2025-06-02; finish on or after 2025-06-02 |  |  | 02 | 4 | PFHO | MS4 |
|  | 5 | **Phase 5 Milestone VA-DC2UNIT05** |  |  | 2025-10-08 | 2025-10-08 |  |  |  |  |  |  |  |  |  |  |
| PH05.M.1000 |  | Phase 5 Start Work Date | milestone | 0d | 2025-10-08 | 2025-10-08 | GC.1000 SS | 2024-11-25 | 2024-11-25 | start on or before 2024-11-18; start on or after 2024-11-18 |  | Project calendar reflects 5 day | 02 | 5 | SWD |  |
| PH05.M.1010 |  | Phase 5 OFCI Racking OSD | milestone | 0d | 2025-10-08 | 2025-10-08 | PH05.PR.1000 | 2024-11-25 | 2024-11-25 |  |  | work week with | 02 | 4 |  |  |
| PH05.M.1020 |  | Phase 5 Mech/Elec OSD | milestone | 0d | 2025-10-08 | 2025-10-08 | PH05.PR.1010, PH05.PR.1020, PH05.PR.1040, PH05.PR.1060, PH05.PR.1070, PH05.PR.1080, PH05.PR.1090 | 2025-02-03 | 2025-02-03 |  |  | standard holidays | 02 | 4 |  |  |
| PH05.M.1030 |  | Phase 5 PDC/ATS OSD | milestone | 0d | 2025-10-08 | 2025-10-08 | PH05.PR.1100 | 2025-02-18 | 2025-02-18 |  |  |  | 02 | 4 |  |  |
| PH05.M.1040 |  | Phase 5 Mech/Gen OSD | milestone | 0d | 2025-10-08 | 2025-10-08 | PH05.PR.1050 | 2024-12-03 | 2024-12-03 |  |  |  | 02 | 4 |  |  |
| PH05.M.1060 |  | Phase 5 Network Early Access (NEA) | milestone | 0d | 2025-10-08 | 2025-10-08 | PH05.M.1000 SF, PH05.M.1010 FF, PH05.M.1020 FF, PH05.M.1030 FF, PH05.M.1040 FF, PH05.DAHU.1450 FF, PH05.DAHU.1020 FF, PH05.DH.1160 FF, PH05.DAHU.1560 FF, PH05.DH.1520 FF, PH05.DAHU.1130 FF, PH05.DH.1420 FF, PH05.DAHU.1200 FF, PH05.EA.2070 FF, PH05.SU.1010 FF, PH05.DH.1350 FF, PH05.DH.1360 FF, PH05.1010 FF+2d, PH05.1030 FF+2d, PH05.1040 FF+2d, PH05.1020 FF+2d, PH05.1000 FF+2d, PH05.ISSU2 FF | 2025-03-17 | 2025-03-17 | finish on or before 2025-03-17; finish on or after 2025-03-17 | MC Calendar 02- OWNER Mondays only(NEA, PFHO) | Needs to pull in 27 shifts | 02 | 5 | NEA |  |
| PH05.M.1070 |  | Phase 5 H2C | milestone | 0d | 2025-10-08 | 2025-10-08 | PH05.M.1060 FF, PH05.SU.1050 FF | 2025-05-09 | 2025-05-09 | finish on or before 2025-05-09; finish on or after 2025-05-09 | MC Calendar 01- OWNER Fridays only(H2C, PCO) | Needs to pull in 4 shifts | 02 | 5 | H2C |  |
| PH05.M.1080 |  | Phase 5 PFHO | milestone | 0d | 2025-10-08 | 2025-10-08 | PH05.M.1070 FF, PH05.1050 FF, PH05.SU.1040 FF | 2025-06-02 | 2025-06-02 | finish on or before 2025-06-02; finish on or after 2025-06-02 |  |  | 02 | 5 | PFHO | MS4 |

| ID | WBS | Activity | Type | Duration | Start | Finish | Predecessors | Planned start | Planned finish | Constraint | Calendar | user_text | 06 -GC - Building Levels | 05 -GC - Building Phase | 13 -GC - MC (Systems of Work) | 03-GC - Location (Systems of Work) |
| --- | --- | --- | --- | --- | --- | --- | --- | --- | --- | --- | --- | --- | --- | --- | --- | --- |
|  | 6 | **Phase 6 Milestone VA-DC2UNIT06** |  |  | 2025-10-08 | 2025-10-08 |  |  |  |  |  |  |  |  |  |  |
| PH06.M.1000 |  | Phase 6 Start Work Date | milestone | 0d | 2025-10-08 | 2025-10-08 | GC.1000 SS | 2024-12-09 | 2024-12-09 | start on or after 2024-12-09 |  | Project calendar reflects 5 day | 02 | 6 | SWD |  |
| PH06.M.1010 |  | Phase 6 OFCI Racking OSD | milestone | 0d | 2025-10-08 | 2025-10-08 | PH06.PR.1000 | 2024-12-10 | 2024-12-10 |  |  | work week with | 02 | 5 |  |  |
| PH06.M.1020 |  | Phase 6 Mech/Elec OSD | milestone | 0d | 2025-10-08 | 2025-10-08 | PH06.PR.1080, PH06.PR.1090, PH04.PR.1080, PH06.PR.1050, PH06.PR.1040, PH06.PR.1020, PH06.PR.1010 | 2025-01-06 | 2025-01-06 |  |  | standard holidays | 02 | 5 |  |  |
| PH06.M.1030 |  | Phase 6 PDC/ATS OSD | milestone | 0d | 2025-10-08 | 2025-10-08 | PH06.PR.1100 | 2025-02-18 | 2025-02-18 |  |  |  | 02 | 5 |  |  |
| PH06.M.1040 |  | Phase 6 Mech/Gen OSD | milestone | 0d | 2025-10-08 | 2025-10-08 | PH06.PR.1050 | 2024-12-05 | 2024-12-05 |  |  |  | 02 | 5 |  |  |
| PH06.M.1060 |  | Phase 6 Network Early Access (NEA) | milestone | 0d | 2025-10-08 | 2025-10-08 | PH06.M.1040 FF, PH06.M.1030 FF, PH06.M.1020 FF, PH06.M.1010 FF, PH06.DAHU.1450 FF, PH06.DAHU.1020 FF, PH06.DH.1160 FF, PH06.DAHU.1560 FF, PH06.DH.1520 FF, PH06.DAHU.1130 FF, PH06.DAHU.1200 FF, PH06.EA.2070 FF, PH06.SU.1010 FF, PH06.DH.1350 FF, PH06.DH.1360 FF, PH06.1000 FF, PH06.1010 FF, PH06.1020 FF, PH06.1030 FF, PH06.1040 FF+2d, PH05.M.1060 FF+3d | 2025-04-07 | 2025-04-07 | finish on or before 2025-05-05 | MC Calendar 02- OWNER Mondays only(NEA, PFHO) | Needs to pull in 27 shifts | 02 | 6 | NEA |  |
| PH06.M.1070 |  | Phase 6 H2C | milestone | 0d | 2025-10-08 | 2025-10-08 | ISSU25.10 FF, PH06.M.1060 FF, PH06.SU.1050 FF | 2025-06-02 | 2025-06-02 | finish on or before 2025-05-27; finish on or after 2025-05-27 |  | Needs to pull in 4 shifts | 02 | 6 | H2C |  |
| PH06.M.1080 |  | Phase 6 PFHO | milestone | 0d | 2025-10-08 | 2025-10-08 | PH06.M.1070 FF, PH06.1050 FF, PH06.SU.1040 FF | 2025-06-16 | 2025-06-16 | finish on or before 2025-06-16; finish on or after 2025-06-16 | MC Calendar 02- OWNER Mondays only(NEA, PFHO) |  | 02 | 6 | PFHO | MS5 |
|  | 7 | **Phase 7 Milestone VA-DC2UNIT07** |  |  | 2025-10-08 | 2025-10-08 |  |  |  |  |  |  |  |  |  |  |
| PH07.M.1000 |  | Phase 7 Start Work Date | milestone | 0d | 2025-10-08 | 2025-10-08 | GC.1000 SS | 2024-12-09 | 2024-12-09 | start on or before 2024-12-09; start on or after 2024-12-09 |  | Project calendar reflects 5 day | 02 | 2 | SWD |  |
| PH07.M.1010 |  | Phase 7 OFCI Racking OSD | milestone | 0d | 2025-10-08 | 2025-10-08 | PH07.PR.1000 | 2024-12-10 | 2024-12-10 |  |  | work week with | 02 | 2 |  |  |
| PH07.M.1020 |  | Phase 7 Mech/Elec OSD | milestone | 0d | 2025-10-08 | 2025-10-08 | PH07.PR.1010, PH07.PR.1020, PH07.PR.1060, PH07.PR.1070, PH07.PR.1080, PH07.PR.1090 | 2025-02-05 | 2025-02-05 |  |  | standard holidays | 02 | 2 |  |  |
| PH07.M.1030 |  | Phase 7 PDC/ATS OSD | milestone | 0d | 2025-10-08 | 2025-10-08 | PH07.PR.1100 | 2025-02-24 | 2025-02-24 |  |  |  | 02 | 2 |  |  |
| PH07.M.1040 |  | Phase 7 Mech/Gen OSD | milestone | 0d | 2025-10-08 | 2025-10-08 | PH07.PR.1050 | 2024-12-20 | 2024-12-20 |  |  |  | 02 | 7 |  |  |
| PH07.M.1060 |  | Phase 7 Network Early Access (NEA) | milestone | 0d | 2025-10-08 | 2025-10-08 | PH07.M.1000 SF, PH07.M.1010 FF, PH07.M.1020 FF, PH07.M.1030 FF, PH07.M.1040 FF, PH07.SU.1010 FF, PH07.DH.1350 FF, PH07.DH.1360 FF, PH07.DH.1520 FF, PH07.DH.1160 FF, PH07.DAHU.1560 FF, PH07.DAHU.1450 FF, PH07.DAHU.1200 FF, PH07.DAHU.1130 FF, PH07.DAHU.1020 FF, PH07.EA.2070 FF, PH07.1000 FF, PH07.1010 FF, PH07.1020 FF, PH07.1030 FF, PH07.1040 FF+2d, WTHR-10 FF, PH07.DH.1050 SF, PH05.M.1060 FF+3d | 2025-04-07 | 2025-04-07 | finish on or before 2025-04-07; finish on or after 2025-04-07 | MC Calendar 02- OWNER Mondays only(NEA, PFHO) | Needs to pull in 27 shifts | 02 | 7 | NEA |  |
| PH07.M.1070 |  | Phase 7 H2C | milestone | 0d | 2025-10-08 | 2025-10-08 | ISSU25.10 FF, PH07.M.1060 FF, PH07.SU.1050 FF | 2025-06-02 | 2025-06-02 | finish on or before 2025-05-27; finish on or after 2025-05-27 |  | Needs to pull in 4 shifts | 02 | 7 | H2C |  |
| PH07.M.1080 |  | Phase 7 PFHO | milestone | 0d | 2025-10-08 | 2025-10-08 | PH07.M.1070 FF, PH07.SU.1040 FF, PH07.1050 FF | 2025-06-16 | 2025-06-16 | finish on or before 2025-06-16; finish on or after 2025-06-16 | MC Calendar 02- OWNER Mondays only(NEA, PFHO) |  | 02 | 7 | PFHO | MS2 |
|  | 8 | **Phase 8 Milestone VA-DC2UNIT08** |  |  | 2025-10-08 | 2025-10-08 |  |  |  |  |  |  |  |  |  |  |
| PH08.M.1000 |  | Phase 8 Start Work Date | milestone | 0d | 2025-10-08 | 2025-10-08 | GC.1000 SS | 2025-01-06 | 2025-01-06 | start on or before 2024-12-30; start on or after 2024-12-30 |  | Project calendar reflects 5 day | 02 | 8 | SWD |  |
| PH08.M.1010 |  | Phase 8 OFCI Racking OSD | milestone | 0d | 2025-10-08 | 2025-10-08 | PH08.PR.1000 | 2025-02-03 | 2025-02-03 |  |  | work week with | 02 | 2 |  |  |
| PH08.M.1020 |  | Phase 8 Mech/Elec OSD | milestone | 0d | 2025-10-08 | 2025-10-08 | PH08.PR.1010, PH08.PR.1020, PH08.PR.1060, PH08.PR.1070, PH08.PR.1080, PH08.PR.1090 | 2025-02-19 | 2025-02-19 |  |  | standard holidays | 02 | 2 |  |  |
| PH08.M.1030 |  | Phase 8 PDC/ATS OSD | milestone | 0d | 2025-10-08 | 2025-10-08 | PH08.PR.1100 | 2025-02-28 | 2025-02-28 |  |  |  | 02 | 2 |  |  |
| PH08.M.1040 |  | Phase 8 Mech/Gen OSD | milestone | 0d | 2025-10-08 | 2025-10-08 | PH08.PR.1050 | 2025-02-03 | 2025-02-03 |  |  |  | 02 | 2 |  |  |
| PH08.M.1060 |  | Phase 8 Network Early Access (NEA) | milestone | 0d | 2025-10-08 | 2025-10-08 | PH08.M.1000 SF, PH08.M.1010 FF, PH08.M.1020 FF, PH08.M.1030 FF, PH08.M.1040 FF, PH08.SU.1010 FF, PH08.DH.1350 FF, PH08.DH.1360 FF, PH08.DH.1520 FF, PH08.DH.1160 FF, PH08.DAHU.1560 FF, PH08.DAHU.1450 FF, PH08.DAHU.1200 FF, PH08.DAHU.1130 FF, PH08.DAHU.1020 FF, PH08.EA.2070 FF, PH08.1000 FF, PH08.1010 FF, PH08.1020 FF, PH08.1030 FF, PH08.1040 FF, PH08.DH.1050 SF, PH07.M.1060 FF | 2025-04-28 | 2025-04-28 | finish on or before 2025-04-28; finish on or after 2025-04-28 | MC Calendar 02- OWNER Mondays only(NEA, PFHO) | Needs to pull in 27 shifts | 02 | 8 | NEA |  |
| PH08.M.1070 |  | Phase 8 H2C | milestone | 0d | 2025-10-08 | 2025-10-08 | PH08.M.1060 FF, PH08.SU.1050 FF | 2025-06-06 | 2025-06-06 | finish on or before 2025-06-06; finish on or after 2025-06-06 | MC Calendar 01- OWNER Fridays only(H2C, PCO) | Needs to pull in 4 shifts | 02 | 8 | H2C |  |
| PH08.M.1080 |  | Phase 8 PFHO | milestone | 0d | 2025-10-08 | 2025-10-08 | ISSU26.10 FF, PH08.SU.1040 FF, PH08.M.1070 FF, PH08.1050 FF | 2025-07-09 | 2025-07-09 | finish on or before 2025-07-02; finish on or after 2025-07-02 |  |  | 02 | 8 | PFHO | MS2 |

| ID | WBS | Activity | Type | Duration | Start | Finish | Predecessors | Planned start | Planned finish | Constraint | Calendar | user_text | 06 -GC - Building Levels | 05 -GC - Building Phase | 13 -GC - MC (Systems of Work) | 03-GC - Location (Systems of Work) | ISSUES |
| --- | --- | --- | --- | --- | --- | --- | --- | --- | --- | --- | --- | --- | --- | --- | --- | --- | --- |
|  | 9 | **Phase 9 Milestone VA-DC2UNIT09** |  |  | 2025-10-08 | 2025-10-08 |  |  |  |  |  |  |  |  |  |  |  |
| PH09.M.1000 |  | Phase 9 Start Work Date | milestone | 0d | 2025-10-08 | 2025-10-08 | GC.1000 SS | 2025-01-06 | 2025-01-06 | start on or before 2024-12-30; start on or after 2024-12-30 |  | Project calendar reflects 5 day | 02 | 9 | SWD |  |  |
| PH09.M.1010 |  | Phase 9 OFCI Racking OSD | milestone | 0d | 2025-10-08 | 2025-10-08 | PH09.PR.1000 | 2025-02-03 | 2025-02-03 |  |  | work week with | 02 | 2 |  |  |  |
| PH09.M.1020 |  | Phase 9 Mech/Elec OSD | milestone | 0d | 2025-10-08 | 2025-10-08 | PH09.PR.1010, PH09.PR.1020, PH09.PR.1060, PH09.PR.1070, PH09.PR.1080, PH09.PR.1090 | 2025-02-21 | 2025-02-21 |  |  | standard holidays | 02 | 2 |  |  |  |
| PH09.M.1030 |  | Phase 9 PDC/ATS OSD | milestone | 0d | 2025-10-08 | 2025-10-08 | PH09.PR.1100 | 2025-02-28 | 2025-02-28 |  |  |  | 02 | 2 |  |  |  |
| PH09.M.1040 |  | Phase 9 Mech/Gen OSD | milestone | 0d | 2025-10-08 | 2025-10-08 | PH09.PR.1050 | 2025-02-03 | 2025-02-03 |  |  |  | 02 | 2 |  |  |  |
| PH09.M.1060 |  | Phase 9 Network Early Access (NEA) | milestone | 0d | 2025-10-08 | 2025-10-08 | PH09.M.1000 SF, PH09.M.1010 FF, PH09.M.1020 FF, PH09.M.1030 FF, PH09.M.1040 FF, PH09.SU.1010 FF, PH09.DH.1350 FF, PH09.DH.1360 FF, PH09.DH.1520 FF, PH09.DH.1160 FF, PH09.DAHU.1560 FF, PH09.DAHU.1450 FF, PH09.DAHU.1200 FF, PH09.DAHU.1130 FF, PH09.DAHU.1020 FF, PH09.EA.2070 FF, PH09.1000 FF+1d, PH09.1010 FF+1d, PH09.1020 FF+1d, PH09.1030 FF+1d, PH09.1040 FF, PH09.DH.1050 SF, PH07.M.1060 FF | 2025-04-28 | 2025-04-28 | finish on or before 2025-04-28 | MC Calendar 02- OWNER Mondays only(NEA, PFHO) | Needs to pull in 27 shifts | 02 | 9 | NEA |  |  |
| PH09.M.1070 |  | Phase 9 H2C | milestone | 0d | 2025-10-08 | 2025-10-08 | PH09.M.1060 FF, PH09.SU.1050 FF | 2025-06-06 | 2025-06-06 | finish on or before 2025-06-06; finish on or after 2025-06-06 | MC Calendar 01- OWNER Fridays only(H2C, PCO) | Needs to pull in 4 shifts | 02 | 9 | H2C |  |  |
| PH09.M.1080 |  | Phase 9 PFHO | milestone | 0d | 2025-10-08 | 2025-10-08 | ISSU26.10 FF, PH09.M.1070 FF, PH09.SU.1040 FF, PH09.1050 FF | 2025-07-02 | 2025-07-02 | finish on or before 2025-07-02; finish on or after 2025-07-02 |  |  | 02 | 9 | PFHO | MS2 |  |
|  | 10 | **Phase 10 Milestone VA-DC2UNIT10** |  |  | 2025-10-08 | 2025-10-08 |  |  |  |  |  |  |  |  |  |  |  |
| PH10.M.1000 |  | Phase 10 Start Work Date | milestone | 0d | 2025-10-08 | 2025-10-08 | GC.1000 SS | 2025-02-03 | 2025-02-03 | start on or before 2025-02-03; start on or after 2025-02-03 |  | Project calendar reflects 5 day | 02 | 10 | SWD |  |  |
| PH10.M.1010 |  | Phase 10 OFCI Racking OSD | milestone | 0d | 2025-10-08 | 2025-10-08 | PH10.PR.1000 | 2025-02-27 | 2025-02-27 |  |  | work week with | 02 | 2 |  |  |  |
| PH10.M.1020 |  | Phase 10 Mech/Elec OSD | milestone | 0d | 2025-10-08 | 2025-10-08 | PH10.PR.1010, PH10.PR.1020, PH10.PR.1060, PH10.PR.1070, PH10.PR.1080, PH10.PR.1090 | 2025-04-07 | 2025-04-07 |  |  | standard holidays | 02 | 2 |  |  |  |
| PH10.M.1030 |  | Phase 10 PDC/ATS OSD | milestone | 0d | 2025-10-08 | 2025-10-08 | PH10.PR.1100 | 2025-04-07 | 2025-04-07 |  |  |  | 02 | 2 |  |  |  |
| PH10.M.1040 |  | Phase 10 Mech/Gen OSD | milestone | 0d | 2025-10-08 | 2025-10-08 | PH10.PR.1050 | 2025-02-03 | 2025-02-03 |  |  |  | 02 | 2 |  |  |  |
| PH10.M.1060 |  | Phase 10 Network Early Access (NEA) | milestone | 0d | 2025-10-08 | 2025-10-08 | PH03.1050 FF, PH02.1050 FF, PH04.1050 FF, PH10.M.1000 SF, PH10.M.1010 FF, PH10.M.1020 FF, PH10.M.1030 FF, PH10.M.1040 FF, PH10.SU.1010 FF, PH10.DH.1350 FF, PH10.DH.1360 FF, PH10.DH.1520 FF, PH10.DH.1160 FF, PH10.DAHU.1560 FF, PH10.DAHU.1450 FF, PH10.DAHU.1200 FF, PH10.DAHU.1130 FF, PH10.DAHU.1020 FF, PH10.EA.2070 FF, PH10.1000 FF, PH10.1010 FF, PH10.1020 FF, PH10.1030 FF, PH10.1040 FF, PH10.DH.1050 SF, PH09.M.1060 FF | 2025-05-19 | 2025-05-19 | finish on or before 2025-05-19; finish on or after 2025-05-19 |  | Needs to pull in 27 shifts | 02 | 10 | NEA |  |  |
| PH10.M.1070 |  | Phase 10 H2C | milestone | 0d | 2025-10-08 | 2025-10-08 | PH10.M.1060 FF, PH10.SU.1050 FF | 2025-06-27 | 2025-06-27 | finish on or before 2025-06-27; finish on or after 2025-06-27 |  | Needs to pull in 4 shifts | 02 | 10 | H2C |  |  |
| PH10.M.1080 |  | Phase 10 PFHO | milestone | 0d | 2025-10-08 | 2025-10-08 | PH10.EA.2050 FF, PH01.SS.1120 FF, PH10.SU.1040 FF, PH10.M.1070 FF | 2025-07-23 | 2025-07-23 | finish on or before 2025-07-14; finish on or after 2025-07-14 |  |  | 02 | 10 | PFHO | MS2 |  |
|  | ISSUES | **Schedule Issues** |  |  | 2025-10-08 | 2025-10-08 |  |  |  |  |  |  |  |  |  |  |  |
|  | ISS01 | **Owner C/S Delay - 01** |  |  | 2025-10-08 | 2025-10-08 |  |  |  |  |  |  |  |  |  |  |  |
| ISSU01.10 |  | Owner C/S Delay (New Project Start 05/28/2024) |  | 60d | 2025-10-08 | 2025-10-08 | GC.1000 SS | 2024-03-04 | 2024-05-24 |  |  |  |  |  |  |  | ISSU01 |
|  | ISSU2 | **Owner C/S Delay - 02** |  |  | 2025-10-08 | 2025-10-08 |  |  |  |  |  |  |  |  |  |  |  |
| ISSU02.10 |  | Owner C/S Delay (New Project Start 07/01/2024) |  | 24d | 2025-10-08 | 2025-10-08 | ISSU01.10 | 2024-03-04 | 2024-04-04 |  |  |  |  |  |  |  | ISSU02 |
|  | ISSU3 | **Owner C/S Delay - 03** |  |  | 2025-10-08 | 2025-10-08 |  |  |  |  |  |  |  |  |  |  |  |
| ISSU03.10 |  | Owner C/S Delay (New Project Start 08/19/2024) |  | 34d | 2025-10-08 | 2025-10-08 | ISSU01.10, ISSU02.10 | 2024-07-01 | 2024-08-16 |  |  |  |  |  |  |  | ISSU03 |

| ID | WBS | Activity | Type | Duration | Start | Finish | Predecessors | Planned start | Planned finish | ISSUES |
| --- | --- | --- | --- | --- | --- | --- | --- | --- | --- | --- |
|  | ISSU4 | **Owner C/S Delay - 04** |  |  | 2025-10-08 | 2025-10-08 |  |  |  |  |
| ISSU04.10 |  | Owner C/S Delay (New Project Start 08/26/2024) |  | 5d | 2025-10-08 | 2025-10-08 | ISSU03.10 | 2024-08-19 | 2024-08-23 | ISSU04 |
|  | ISSU5 | **Owner C/S Delay - 05** |  |  | 2025-10-08 | 2025-10-08 |  |  |  |  |
| ISSU05.10 |  | Owner C/S Delay (New Project Start 09/16/2024) |  | 6d | 2025-10-08 | 2025-10-08 | ISSU03.10 | 2024-09-06 | 2024-09-13 | ISSU05 |
|  | ISSU6 | **Issue 06 - Additional Genyard Excavation** |  |  | 2025-10-08 | 2025-10-08 |  |  |  |  |
| ISSU06.10 |  | Notification to OWNER for Additional Excavation In Genyard | milestone | 0d | 2025-10-08 | 2025-10-08 | GC.1000 SS | 2024-09-06 | 2024-09-06 | ISSU06 |
| ISSU06.20 |  | GC / OWNER Review Pricing For Additional Excavation |  | 6d | 2025-10-08 | 2025-10-08 | ISSU06.10 SS | 2024-09-06 | 2024-09-13 | ISSU06 |
| ISSU06.30 |  | OWNER Notice to Proceed on Additional Genyard Excavation | milestone | 0d | 2025-10-08 | 2025-10-08 | ISSU06.20 | 2024-09-16 | 2024-09-16 | ISSU06 |
| ISSU06.40 |  | LITHKO Mobilization for Additional Genyard Excavation |  | 1d | 2025-10-08 | 2025-10-08 | ISSU06.30 | 2024-09-16 | 2024-09-16 | ISSU06 |
| ISSU06.50 |  | Additional Excavation in Genyard |  | 8d | 2025-10-08 | 2025-10-08 | ISSU06.40 | 2024-09-06 | 2024-09-17 | ISSU06 |
|  | ISSU7 | **Issue 07 - PCL#4 (CS FP Line vs Air Intake Piping Re-work)** |  |  | 2025-10-08 | 2025-10-08 |  |  |  |  |
| ISSU07.10 |  | Issue 07 PCL#4 (CS FP Line vs Air Intake Piping Re-work) | milestone | 0d | 2025-10-08 | 2025-10-08 | GC.1000 SS | 2024-09-16 | 2024-09-16 | ISSU07 |
| ISSU07.20 |  | BFPE Mobilization for PCL#4 Re-work | milestone | 0d | 2025-10-08 | 2025-10-08 | ISSU07.30 | 2024-09-24 | 2024-09-24 | ISSU07 |
| ISSU07.30 |  | Submit & Review + CS Delay for PCL#4 Change Order |  | 100d | 2025-10-08 | 2025-10-08 | ISSU07.10 SS | 2024-09-16 | 2025-02-10 | ISSU07 |
| ISSU07.40 |  | Level 2 - Rework Fire Protection Piping |  | 5d | 2025-10-08 | 2025-10-08 | ISSU07.20 | 2024-09-24 | 2024-09-30 | ISSU07 |
| ISSU07.50 |  | Level 1 - Rework Fire Protection Piping |  | 5d | 2025-10-08 | 2025-10-08 | ISSU07.40 | 2024-09-27 | 2024-10-03 | ISSU07 |
|  | ISSU8 | **Issue 08 - PCL#22 (C/S Drain Locations Vs TI Drain Locations L2)** |  |  | 2025-10-08 | 2025-10-08 |  |  |  |  |
| ISSU08.10 |  | Issue 08 PCL#22 (C/S Drain Locations Vs TI Drain Locations Level 2) | milestone | 0d | 2025-10-08 | 2025-10-08 | GC.1000 SS | 2024-09-16 | 2024-09-16 | ISSU08 |
| ISSU08.20 |  | Submit & Review & Approve Change Order For PCL#22 |  | 64d | 2025-10-08 | 2025-10-08 | ISSU08.10 SS | 2024-09-16 | 2024-12-17 | ISSU08 |
| ISSU08.30 |  | HARRIS Mobilization for PCL#22 | milestone | 0d | 2025-10-08 | 2025-10-08 | ISSU08.20 | 2024-09-23 | 2024-09-23 | ISSU08 |
| ISSU08.40 |  | Layout Drain Locations Level 2 |  | 2d | 2025-10-08 | 2025-10-08 | ISSU08.30 | 2024-09-23 | 2024-09-24 | ISSU08 |
| ISSU08.50 |  | Core Drill 14 DAHU Drain Openings Level 2 |  | 7d | 2025-10-08 | 2025-10-08 | ISSU08.40 | 2024-10-07 | 2024-10-16 | ISSU08 |
| ISSU08.60 |  | Set New Drains Level 2 |  | 3d | 2025-10-08 | 2025-10-08 | ISSU08.70 FF | 2024-10-10 | 2024-10-15 | ISSU08 |
| ISSU08.70 |  | Core Dril 3 New Data Hall Drain Openings Level 2 |  | 2d | 2025-10-08 | 2025-10-08 | ISSU08.50 | 2024-10-11 | 2024-10-15 | ISSU08 |
| ISSU08.80 |  | Patch Concrete Level 2 |  | 2d | 2025-10-08 | 2025-10-08 | ISSU08.60 FF | 2024-10-22 | 2024-10-23 | ISSU08 |

| ID | WBS | Activity | Type | Duration | Start | Finish | Predecessors | Planned start | Planned finish | Constraint | ISSUES |
| --- | --- | --- | --- | --- | --- | --- | --- | --- | --- | --- | --- |
|  | ISSU9 | **Issue 09 - (Sidewalk Conflict With Generator Pad)** |  |  | 2025-10-08 | 2025-10-08 |  |  |  |  |  |
| ISSU09.10 |  | Notification to OWNER for Sidewalk Conflict with Generatore Pad 08/20/24 | milestone | 0d | 2025-10-08 | 2025-10-08 | GC.1000 SS | 2024-09-06 | 2024-09-06 |  | ISSU09 |
| ISSU09.20 |  | OWNER Notice to Proceed on Sidewalk Conflict with Generatore Pad | milestone | 0d | 2025-10-08 | 2025-10-08 | ISSU09.10 SS | 2024-09-23 | 2024-09-23 |  | ISSU09 |
| ISSU09.30 |  | Sidewalk Demo |  | 7d | 2025-10-08 | 2025-10-08 | ISSU09.20 | 2024-09-23 | 2024-10-01 |  | ISSU09 |
|  | ISSU10 | **Issue 10 - Additional MV Cables Required** |  |  | 2025-10-08 | 2025-10-08 |  |  |  |  |  |
| ISSU10.10 |  | Request For Substation Drawings 09/12/24 | milestone | 0d | 2025-10-08 | 2025-10-08 | GC.1000 SS | 2024-09-06 | 2024-09-06 |  | ISSU10 |
| ISSU10.20 |  | Drawings Received 10/21/24 | milestone | 0d | 2025-10-08 | 2025-10-08 | ISSU10.10 SS | 2024-09-23 | 2024-09-23 |  | ISSU10 |
| ISSU10.30 |  | Procurement Of Additional MV Cables |  | 5d | 2025-10-08 | 2025-10-08 | ISSU10.20 | 2024-11-04 | 2024-11-08 |  | ISSU10 |
|  | ISSU11 | **Issue 11 - Catwalk Structural Conflict** |  |  | 2025-10-08 | 2025-10-08 |  |  |  |  |  |
| ISSU11.10 |  | Catwalk Structural Conflict Issue Noticed 10/30/24 | milestone | 0d | 2025-10-08 | 2025-10-08 | GC.1000 SS | 2024-09-06 | 2024-09-06 |  | ISSU11 |
| ISSU11.20 |  | Catwalk Structural Conflict Potential Issue |  | 5d | 2025-10-08 | 2025-10-08 | ISSU11.10 SS | 2024-10-28 | 2024-11-01 |  | ISSU11 |
|  | ISSU12 | **Issue 12 - Eaton Delay for MV XFMR - Change Date to 12/27/2024** |  |  | 2025-10-08 | 2025-10-08 |  |  |  |  |  |
| ISSU12.10 |  | Issue 12 - Eaton Delay for MV XFMR Change Date from 12/16/24 to 12/27/24 | milestone | 0d | 2025-10-08 | 2025-10-08 | GC.1000 SS | 2024-12-27 | 2024-12-27 | finish on or after 2024-12-27 | ISSU12 |
|  | ISSU13 | **Issue 13 - Phase 3 PDC Damage During Transportation** |  |  | 2025-10-08 | 2025-10-08 |  |  |  |  |  |
| ISSU13.10 |  | Issue 13 - Phase 3 PDC Damage During Transportation | milestone | 0d | 2025-10-08 | 2025-10-08 | GC.1000 SS | 2025-04-07 | 2025-04-07 | finish on or after 2025-04-03 | ISSU13 |
|  | 14 | **Issue 14 - Delay Due to MV Transformer Relay Testing Procedure** |  |  | 2025-10-08 | 2025-10-08 |  |  |  |  |  |
| ISSU14.10 |  | Issue 14 - Testing Issues of SEL-787 Relay Noticed |  | 1d | 2025-10-08 | 2025-10-08 | GC.1000 SS | 2025-01-21 | 2025-01-21 | finish on or after 2025-01-06 | ISSU14 |
| ISSU14.20 |  | Issue 14 - Testing Procedure Needed From OWNER |  | 9d | 2025-10-08 | 2025-10-08 | ISSU14.10 | 2025-01-21 | 2025-01-31 |  | ISSU14 |
| ISSU14.30 |  | Issue 14 - ESR Testing Relays |  | 13d | 2025-10-08 | 2025-10-08 | ISSU14.20 | 2025-01-22 | 2025-02-07 |  | ISSU14 |
| ISSU14.40 |  | Issue 14 - Eaton Flores Testing |  | 5d | 2025-10-08 | 2025-10-08 | ISSU14.30 | 2025-02-10 | 2025-02-14 |  | ISSU14 |
|  | 15 | **Issue 15 - Eaton Startup Technician Rescheduled** |  |  | 2025-10-08 | 2025-10-08 |  |  |  |  |  |
| ISSU15.10 |  | Issue 15 - Eaton Technician Rescheduled from 01/13/25 to 01/15/25 |  | 2d | 2025-10-08 | 2025-10-08 | GC.1000 SS | 2025-01-21 | 2025-01-22 | finish on or after 2025-01-06 | ISSU15 |
|  | 16 | **Issue 16 - Novec Reschedule MV Switchgear Energization** |  |  | 2025-10-08 | 2025-10-08 |  |  |  |  |  |
| ISSU16.10 |  | Issue 16 - Novec Rescheduled from 01/16/25 to 01/21/25 |  | 3d | 2025-10-08 | 2025-10-08 | GC.1000 SS | 2025-01-21 | 2025-01-23 | finish on or after 2025-01-06 | ISSU16 |

| ID | WBS | Activity | Type | Duration | Start | Finish | Predecessors | Planned start | Planned finish | Constraint | Calendar | ISSUES |
| --- | --- | --- | --- | --- | --- | --- | --- | --- | --- | --- | --- | --- |
|  | 17 | **Issue 17 - Weather Delays** |  |  | 2025-10-08 | 2025-10-08 |  |  |  |  |  |  |
|  | 1 | **Weather Delay #1** |  |  | 2025-10-08 | 2025-10-08 |  |  |  |  |  |  |
| WTHR-10 |  | Issue 17 - Weather Delay #1 |  | 2d | 2025-10-08 | 2025-10-08 | GC.1000 SS | 2025-01-21 | 2025-01-22 | finish on or after 2025-01-06 |  | ISSU17 |
|  | 18 | **Issue 18 - Owner Security Complete Need For NEA Phase 4** |  |  | 2025-10-08 | 2025-10-08 |  |  |  |  |  |  |
| ISSU18.10 |  | Issue 18 - Owner Security Complete 03/10/25 | milestone | 0d | 2025-10-08 | 2025-10-08 | GC.1000 SF | 2025-03-03 | 2025-03-03 | finish on or after 2025-03-03 |  | ISSU18 |
|  | 19 | **Issue 19 - Observation 154 - OLP2 Main Breaker Set Screw** |  |  | 2025-10-08 | 2025-10-08 |  |  |  |  |  |  |
| ISSU19.10 |  | Issue 19 - Observation 154 Issue Identified | milestone | 0d | 2025-10-08 | 2025-10-08 | GC.1000 SS | 2025-03-04 | 2025-03-04 |  |  | ISSU19 |
| ISSU19.20 |  | Issue 19 - Observation 154 Part Ordered |  | 3d | 2025-10-08 | 2025-10-08 | ISSU19.10 SS | 2025-03-04 | 2025-03-06 |  |  | ISSU19 |
| ISSU19.30 |  | Issue 19 - Observation 154 Part Delivered |  | 20d | 2025-10-08 | 2025-10-08 | ISSU19.20 | 2025-03-04 | 2025-03-31 |  |  | ISSU19 |
| ISSU19.40 |  | Issue 19 - IEM To Resolve Observation 154 |  | 5d | 2025-10-08 | 2025-10-08 | ISSU19.30 | 2025-01-21 | 2025-01-25 |  | DO NOT USE Calendar 03 - 6 Day Work Week-P | ISSU19 |
|  | 20 | **Issue 20 - Observation 172 - OLP1** |  |  | 2025-10-08 | 2025-10-08 |  |  |  |  |  |  |
| ISSU20.10 |  | Issue 20 - Observation 172 Issue Identified | milestone | 0d | 2025-10-08 | 2025-10-08 | GC.1000 SS | 2025-03-04 | 2025-03-04 |  |  | ISSU20 |
| ISSU20.20 |  | Issue 20 - Observation 172 Part Ordered |  | 2d | 2025-10-08 | 2025-10-08 | ISSU20.10 SS | 2025-03-04 | 2025-03-05 |  |  | ISSU20 |
| ISSU20.30 |  | Issue 20 - Observation 172 Part Delivered |  | 20d | 2025-10-08 | 2025-10-08 | ISSU20.20 | 2025-03-04 | 2025-03-31 |  |  | ISSU20 |
| ISSU20.40 |  | Issue 20 - IEM To Resolve Observation 172 |  | 5d | 2025-10-08 | 2025-10-08 | ISSU20.30 | 2025-01-21 | 2025-01-25 |  | DO NOT USE Calendar 03 - 6 Day Work Week-P | ISSU20 |
|  | 21 | **Issue 21 - Observation 213 - OUPP 1A2** |  |  | 2025-10-08 | 2025-10-08 |  |  |  |  |  |  |
| ISSU21.10 |  | Issue 21 - Observation 213 Issue Identified | milestone | 0d | 2025-10-08 | 2025-10-08 | ISSU20.10 SF | 2025-01-21 | 2025-01-21 |  |  | ISSU21 |
| ISSU21.20 |  | Issue 21 - Observation 213 Prepared to Resolve |  | 4d | 2025-10-08 | 2025-10-08 | ISSU21.10 | 2025-01-21 | 2025-01-24 |  |  | ISSU21 |
| ISSU21.30 |  | Issue 21 - IEM Resolve Observation 213 |  | 5d | 2025-10-08 | 2025-10-08 | ISSU21.20 | 2025-01-21 | 2025-01-25 |  | DO NOT USE Calendar 03 - 6 Day Work Week-P | ISSU21 |
|  | 22 | **Issue 22 - 2.3A XFMR Relay Issue** |  |  | 2025-10-08 | 2025-10-08 |  |  |  |  |  |  |
| ISSU22.10 |  | Issue 22 - 2.3A XFMR Issue Identified | milestone | 0d | 2025-10-08 | 2025-10-08 | ISSU21.10 FF | 2025-01-21 | 2025-01-21 |  |  | ISSU22 |
| ISSU22.20 |  | Issue 22 - 2.3A XFMR - EATON Provide Authorization to Energize XFMR |  | 4d | 2025-10-08 | 2025-10-08 | ISSU22.10 | 2025-01-21 | 2025-01-24 |  |  | ISSU22 |
|  | 23 | **Issue 23 - Phase 7 DAHU Damage During Transportation** |  |  | 2025-10-08 | 2025-10-08 |  |  |  |  |  |  |
| ISSUE23.10 |  | Issue 23 - Phase 7 DAHU Damage During Transportation | milestone | 0d | 2025-10-08 | 2025-10-08 | GC.1000 SF | 2025-03-24 | 2025-03-24 |  |  | ISSU23 |
| ISSUE23.20 |  | Issue 23 - OWNER LOP Issue |  | 17d | 2025-10-08 | 2025-10-08 | GC.1000 SS | 2025-03-31 | 2025-04-22 |  |  | ISSU23 |

| ID | WBS | Activity | Duration | Start | Finish | Predecessors | Planned start | Planned finish | Constraint | ISSUES | 06 -GC - Building Levels | 05 -GC - Building Phase |
| --- | --- | --- | --- | --- | --- | --- | --- | --- | --- | --- | --- | --- |
|  | 1 | **Issue 24 - Eaton XFMR Issues** |  | 2025-10-08 | 2025-10-08 |  |  |  |  |  |  |  |
| ISSU24.10 |  | Issue 24 - Phase 1 Eaton Troubleshooting Transformer XFMR Issue | 8d | 2025-10-08 | 2025-10-08 | ISSUE23.20 | 2025-03-24 | 2025-04-02 |  | ISSU24 |  |  |
|  | 2 | **Issue 25 - H2C Delay Due to EATON Bus Duct Report** |  | 2025-10-08 | 2025-10-08 |  |  |  |  |  |  |  |
| ISSU25.10 |  | Issue 25 - H2C Delay Due to EATON Bus Duct Report | 8d | 2025-10-08 | 2025-10-08 | ISSU24.10 | 2025-03-24 | 2025-04-02 |  | ISSU25 |  |  |
|  | 3 | **Issue 26 - Eaton XFMR Issues** |  | 2025-10-08 | 2025-10-08 |  |  |  |  |  |  |  |
| ISSU26.10 |  | Issue 26 - Eaton XFMR Issues | 5d | 2025-10-08 | 2025-10-08 | PH09.M.1000 SS, PH08.M.1000 SS | 2025-06-26 | 2025-07-02 |  | ISSU26 |  |  |
|  | 4 | **Issue 27 - Post Phase 10 PFHO Change Order Work** |  | 2025-10-08 | 2025-10-08 |  |  |  |  |  |  |  |
| ISSU27.10 |  | Post Phase 10 PFHO Change Order Work | 28d | 2025-10-08 | 2025-10-08 | PH10.M.1080 | 2025-07-24 | 2025-09-02 | start on or after 2025-07-24 | ISSU27 |  |  |
|  | 5 | **Issue 28 - County Drawing Review** |  | 2025-10-08 | 2025-10-08 |  |  |  |  |  |  |  |
| ISSU28.10 |  | County Drawing Approval | 20d | 2025-10-08 | 2025-10-08 | PH10.M.1000 SS | 2025-07-24 | 2025-08-20 |  | ISSU27 |  |  |
|  | 1 | **Procurement** |  | 2025-10-08 | 2025-10-08 |  |  |  |  |  |  |  |
|  | 2 | **Phase 1 Procurement** |  | 2025-10-08 | 2025-10-08 |  |  |  |  |  |  |  |
|  | 1 | **OFCI** |  | 2025-10-08 | 2025-10-08 |  |  |  |  |  |  |  |
|  | 1 | **Racking** |  | 2025-10-08 | 2025-10-08 |  |  |  |  |  |  |  |
| PH01.PR.1000 |  | OFCI Racking | 0d | 2025-10-08 | 2025-10-08 | PH01.M.1120 SS | 2024-08-26 | 2024-08-26 |  |  | 02 | 1 |
|  | 2 | **Mechanical** |  | 2025-10-08 | 2025-10-08 |  |  |  |  |  |  |  |
| PH01.PR.1010 |  | OFCI DAHU | 18d | 2025-10-08 | 2025-10-08 | PH01.M.1000 SS | 2024-09-16 | 2024-10-09 |  |  | 02 | 1 |
| PH01.PR.1020 |  | OFCI Exhaust Fans | 15d | 2025-10-08 | 2025-10-08 | PH01.M.1000 SS | 2024-09-16 | 2024-10-04 |  |  | 02 | 1 |
|  | 3 | **Electrical** |  | 2025-10-08 | 2025-10-08 |  |  |  |  |  |  |  |
| PH01.PR.1030 |  | OFCI MV SWGR 09/30/24 | 11d | 2025-10-08 | 2025-10-08 | PH01.M.1000 SS | 2024-09-16 | 2024-09-30 |  |  | 02 | 1 |
| PH01.PR.1040 |  | OFCI MV XFMR 10/14/24 | 16d | 2025-10-08 | 2025-10-08 | PH01.M.1000 SS | 2024-09-16 | 2024-10-07 |  |  | 02 | 1 |
| PH01.PR.1050 |  | OFCI Generators 10/03/24 | 12d | 2025-10-08 | 2025-10-08 | PH01.M.1000 SS | 2024-09-16 | 2024-10-01 |  |  | 02 | 1 |
| PH01.PR.1060 |  | OFCI Busduct 09/30/24 | 11d | 2025-10-08 | 2025-10-08 | PH01.M.1000 SS | 2024-09-16 | 2024-09-30 |  |  | 02 | 1 |
| PH01.PR.1070 |  | OFCI LV SWGR 10/03/24 | 14d | 2025-10-08 | 2025-10-08 | PH01.M.1000 SS | 2024-09-16 | 2024-10-03 |  |  | 02 | 1 |
| PH01.PR.1080 |  | OFCI LV XFMR | 10d | 2025-10-08 | 2025-10-08 | PH01.M.1000 SS | 2024-09-16 | 2024-09-27 |  |  | 02 | 1 |
| PH01.PR.1090 |  | OFCI LV Panelboards | 10d | 2025-10-08 | 2025-10-08 | PH01.M.1000 SS | 2024-09-16 | 2024-09-27 |  |  | 02 | 1 |
| PH01.PR.1100 |  | OFCI PDC 10/07/24 | 16d | 2025-10-08 | 2025-10-08 | PH01.M.1000 SS | 2024-09-16 | 2024-10-07 |  |  | 02 | 1 |
| PH01.PR.1170 |  | OFCI AMCOP / BACOP 10/07/24 | 16d | 2025-10-08 | 2025-10-08 | PH01.M.1000 SS | 2024-09-16 | 2024-10-07 |  |  | 02 | 1 |
| PH01.PR.1180 |  | OFCI HSSB 10/17/24 | 14d | 2025-10-08 | 2025-10-08 | PH01.M.1000 SS | 2024-09-16 | 2024-10-03 |  |  | 02 | 1 |
| PH01.PR.1190 |  | OFCI UPS | 10d | 2025-10-08 | 2025-10-08 | PH01.M.1000 SS | 2024-09-16 | 2024-09-27 |  |  | 02 | 1 |

| ID | WBS | Activity | Duration | Start | Finish | Predecessors | Planned start | Planned finish | 06 -GC - Building Levels | 05 -GC - Building Phase |
| --- | --- | --- | --- | --- | --- | --- | --- | --- | --- | --- |
|  | 2 | **CFCI** |  | 2025-10-08 | 2025-10-08 |  |  |  |  |  |
|  | 1 | **Structural Steel** |  | 2025-10-08 | 2025-10-08 |  |  |  |  |  |
| PH01.PR.1110 |  | CFCI Structural Steel | 10d | 2025-10-08 | 2025-10-08 | PH01.M.1000 SS | 2024-09-16 | 2024-09-27 | 02 | 1 |
|  | 2 | **Mechanical** |  | 2025-10-08 | 2025-10-08 |  |  |  |  |  |
| PH01.PR.1120 |  | CFCI DOAs | 40d | 2025-10-08 | 2025-10-08 | PH01.M.1000 SS | 2024-09-16 | 2024-11-12 | 02 | 1 |
| PH01.PR.1130 |  | CFCI VFDs | 1d | 2025-10-08 | 2025-10-08 | PH01.M.1000 SS | 2024-09-16 | 2024-09-16 | 02 | 1 |
| PH01.PR.1140 |  | CFCI Split Units | 35d | 2025-10-08 | 2025-10-08 | PH01.M.1000 SS | 2024-09-16 | 2024-11-04 | 02 | 1 |
| PH01.PR.1150 |  | CFCI IW Tanks | 1d | 2025-10-08 | 2025-10-08 | PH01.M.1000 SS | 2024-09-16 | 2024-09-16 | 02 | 1 |
|  | 3 | **Electrical** |  | 2025-10-08 | 2025-10-08 |  |  |  |  |  |
| PH01.PR.1160 |  | CFCI Cable Bus | 1d | 2025-10-08 | 2025-10-08 | PH01.M.1000 SS | 2024-09-16 | 2024-09-16 | 02 | 1 |
|  | 1 | **Phase 2 Procurement** |  | 2025-10-08 | 2025-10-08 |  |  |  |  |  |
|  | 1 | **OFCI** |  | 2025-10-08 | 2025-10-08 |  |  |  |  |  |
|  | 1 | **Racking** |  | 2025-10-08 | 2025-10-08 |  |  |  |  |  |
| PH02.PR.1000 |  | OFCI Racking | 6d | 2025-10-08 | 2025-10-08 | PH01.M.1000 SS | 2024-09-16 | 2024-09-23 | 02 | 2 |
|  | 2 | **Mechanical** |  | 2025-10-08 | 2025-10-08 |  |  |  |  |  |
| PH02.PR.1010 |  | OFCI DAHU 11/14/24 | 18d | 2025-10-08 | 2025-10-08 | PH01.M.1000 SS | 2024-09-16 | 2024-10-09 | 02 | 2 |
| PH02.PR.1020 |  | OFCI Exhaust Fans 10/7/24 | 15d | 2025-10-08 | 2025-10-08 | PH01.M.1000 SS | 2024-09-16 | 2024-10-04 | 02 | 2 |
|  | 3 | **Electrical** |  | 2025-10-08 | 2025-10-08 |  |  |  |  |  |
| PH02.PR.1045 |  | OFCI MV XFMR 10/28/24 | 0d | 2025-10-08 | 2025-10-08 | PH01.M.1000 SS | 2024-09-16 | 2024-09-16 | 02 | 1 |
| PH02.PR.1050 |  | OFCI Generators 11/12/24 | 40d | 2025-10-08 | 2025-10-08 | PH01.M.1000 SS | 2024-09-16 | 2024-11-12 | 02 | 2 |
| PH02.PR.1060 |  | OFCI Busduct 11/11/24 | 39d | 2025-10-08 | 2025-10-08 | PH01.M.1000 SS | 2024-09-16 | 2024-11-08 | 02 | 2 |
| PH02.PR.1070 |  | OFCI LV SWGR 11/04/24 | 35d | 2025-10-08 | 2025-10-08 | PH01.M.1000 SS | 2024-09-16 | 2024-11-04 | 02 | 2 |
| PH02.PR.1080 |  | OFCI LV XFMR | 1d | 2025-10-08 | 2025-10-08 | PH01.M.1000 SS | 2024-09-16 | 2024-09-16 | 02 | 2 |
| PH02.PR.1090 |  | OFCI LV Panelboards | 1d | 2025-10-08 | 2025-10-08 | PH01.M.1000 SS | 2024-09-16 | 2024-09-16 | 02 | 2 |
| PH02.PR.1100 |  | OFCI PDC 11/18/24 | 44d | 2025-10-08 | 2025-10-08 | PH01.M.1000 SS | 2024-09-16 | 2024-11-18 | 02 | 2 |
| PH02.PR.1170 |  | OFCI AMCOP / BACOP 11/11/24 | 39d | 2025-10-08 | 2025-10-08 | PH01.M.1000 SS | 2024-09-16 | 2024-11-08 | 02 | 2 |
| PH02.PR.1190 |  | OFCI UPS 11/11/24 | 20d | 2025-10-08 | 2025-10-08 | PH01.M.1000 SS | 2024-09-16 | 2024-10-11 | 02 | 1 |

| ID | WBS | Activity | Duration | Start | Finish | Predecessors | Planned start | Planned finish | 06 -GC - Building Levels | 05 -GC - Building Phase |
| --- | --- | --- | --- | --- | --- | --- | --- | --- | --- | --- |
|  | 2 | **CFCI** |  | 2025-10-08 | 2025-10-08 |  |  |  |  |  |
|  | 2 | **Mechanical** |  | 2025-10-08 | 2025-10-08 |  |  |  |  |  |
| PH02.PR.1130 |  | CFCI VFDs | 0d | 2025-10-08 | 2025-10-08 | PH01.M.1000 SS | 2024-09-23 | 2024-09-23 | 02 | 2 |
| PH02.PR.1140 |  | CFCI Split Units | 0d | 2025-10-08 | 2025-10-08 | PH01.PR.1140 FF, PH01.M.1000 SS | 2024-03-26 | 2024-03-26 | 02 | 2 |
|  | 3 | **Electrical** |  | 2025-10-08 | 2025-10-08 |  |  |  |  |  |
| PH02.PR.1160 |  | CFCI Cable Bus | 1d | 2025-10-08 | 2025-10-08 | PH01.M.1000 SS | 2024-09-23 | 2024-09-23 | 02 | 2 |
|  | 3 | **Phase 3 Procurement** |  | 2025-10-08 | 2025-10-08 |  |  |  |  |  |
|  | 1 | **OFCI** |  | 2025-10-08 | 2025-10-08 |  |  |  |  |  |
|  | 1 | **Racking** |  | 2025-10-08 | 2025-10-08 |  |  |  |  |  |
| PH03.PR.1000 |  | OFCI Racking | 1d | 2025-10-08 | 2025-10-08 | PH01.M.1000 SS | 2024-09-23 | 2024-09-23 | 02 | 3 |
|  | 2 | **Mechanical** |  | 2025-10-08 | 2025-10-08 |  |  |  |  |  |
| PH03.PR.1010 |  | OFCI DAHU 11/19/24 | 35d | 2025-10-08 | 2025-10-08 | PH01.M.1000 SS | 2024-09-30 | 2024-11-19 | 02 | 3 |
| PH03.PR.1020 |  | OFCI Exhaust Fans | 15d | 2025-10-08 | 2025-10-08 | PH01.M.1000 SS | 2024-09-23 | 2024-10-11 | 02 | 3 |
|  | 3 | **Electrical** |  | 2025-10-08 | 2025-10-08 |  |  |  |  |  |
| PH03.PR.1040 |  | OFCI MV XFMR | 20d | 2025-10-08 | 2025-10-08 | PH01.M.1000 SS | 2024-09-30 | 2024-10-28 | 02 | 3 |
| PH03.PR.1050 |  | OFCI Generators | 30d | 2025-10-08 | 2025-10-08 | PH01.M.1000 SS | 2024-09-30 | 2024-11-12 | 02 | 3 |
| PH03.PR.1060 |  | OFCI Busduct | 29d | 2025-10-08 | 2025-10-08 | PH01.M.1000 SS | 2024-09-30 | 2024-11-08 | 02 | 3 |
| PH03.PR.1070 |  | OFCI LV SWGR 11/04/24 | 25d | 2025-10-08 | 2025-10-08 | PH01.M.1000 SS | 2024-09-30 | 2024-11-04 | 02 | 3 |
| PH03.PR.1080 |  | OFCI LV XFMR | 0d | 2025-10-08 | 2025-10-08 | PH01.M.1000 SS | 2024-09-23 | 2024-09-23 | 02 | 3 |
| PH03.PR.1090 |  | OFCI LV Panelboards | 0d | 2025-10-08 | 2025-10-08 | PH01.M.1000 SS | 2024-09-23 | 2024-09-23 | 02 | 3 |
| PH03.PR.1100 |  | OFCI PDC | 34d | 2025-10-08 | 2025-10-08 | PH01.M.1000 SS | 2024-09-30 | 2024-11-18 | 02 | 3 |
| PH03.PR.1170 |  | OFCI AMCOP / BACOP | 29d | 2025-10-08 | 2025-10-08 | PH01.M.1000 SS | 2024-09-30 | 2024-11-08 | 02 | 3 |
| PH03.PR.1190 |  | OFCI UPS | 1d | 2025-10-08 | 2025-10-08 | PH01.M.1000 SS | 2024-09-30 | 2024-09-30 | 02 | 1 |
|  | 2 | **CFCI** |  | 2025-10-08 | 2025-10-08 |  |  |  |  |  |
|  | 2 | **Mechanical** |  | 2025-10-08 | 2025-10-08 |  |  |  |  |  |
| PH03.PR.1130 |  | CFCI VFDs | 47d | 2025-10-08 | 2025-10-08 | PH01.M.1000 SS | 2024-09-23 | 2024-11-29 | 02 | 3 |
| PH03.PR.1140 |  | CFCI Split Units | 0d | 2025-10-08 | 2025-10-08 | PH01.PR.1140 FF, PH01.M.1000 SS | 2024-03-26 | 2024-03-26 | 02 | 3 |

| ID | WBS | Activity | Duration | Start | Finish | Predecessors | Planned start | Planned finish | 06 -GC - Building Levels | 05 -GC - Building Phase | user_text8 |
| --- | --- | --- | --- | --- | --- | --- | --- | --- | --- | --- | --- |
|  | 3 | **Electrical** |  | 2025-10-08 | 2025-10-08 |  |  |  |  |  |  |
| PH03.PR.1160 |  | CFCI Cable Bus | 1d | 2025-10-08 | 2025-10-08 | PH01.M.1000 SS | 2024-09-23 | 2024-09-23 | 02 | 3 |  |
|  | 4 | **Phase 4 Procurement** |  | 2025-10-08 | 2025-10-08 |  |  |  |  |  |  |
|  | 1 | **OFCI** |  | 2025-10-08 | 2025-10-08 |  |  |  |  |  |  |
|  | 1 | **Racking** |  | 2025-10-08 | 2025-10-08 |  |  |  |  |  |  |
| PH04.PR.1000 |  | OFCI Racking | 34d | 2025-10-08 | 2025-10-08 | PH01.M.1000 SS | 2024-09-30 | 2024-11-18 | 02 | 4 |  |
|  | 2 | **Mechanical** |  | 2025-10-08 | 2025-10-08 |  |  |  |  |  |  |
| PH04.PR.1010 |  | OFCI DAHU | 26d | 2025-10-08 | 2025-10-08 | PH01.M.1000 SS | 2024-09-30 | 2024-11-05 | 02 | 4 |  |
| PH04.PR.1020 |  | OFCI Exhaust Fans | 30d | 2025-10-08 | 2025-10-08 | PH01.M.1000 SS | 2024-09-16 | 2024-10-28 | 02 | 4 |  |
|  | 3 | **Electrical** |  | 2025-10-08 | 2025-10-08 |  |  |  |  |  |  |
| PH04.PR.1040 |  | OFCI MV XFMR | 20d | 2025-10-08 | 2025-10-08 | PH01.M.1000 SS, ISSU12.10 FF | 2024-09-30 | 2024-10-28 | 02 | 4 |  |
| PH04.PR.1050 |  | OFCI Generators | 43d | 2025-10-08 | 2025-10-08 | PH01.M.1000 SS | 2024-09-30 | 2024-12-02 | 02 | 4 |  |
| PH04.PR.1060 |  | OFCI Busduct | 39d | 2025-10-08 | 2025-10-08 | PH01.M.1000 SS | 2024-09-30 | 2024-11-25 | 02 | 4 |  |
| PH04.PR.1070 |  | OFCI LV SWGR | 41d | 2025-10-08 | 2025-10-08 | PH01.M.1000 SS | 2024-09-30 | 2024-11-27 | 02 | 4 |  |
| PH04.PR.1080 |  | OFCI LV XFMR | 0d | 2025-10-08 | 2025-10-08 | PH01.M.1000 SS | 2024-09-30 | 2024-09-30 | 02 | 4 |  |
| PH04.PR.1090 |  | OFCI LV Panelboards | 0d | 2025-10-08 | 2025-10-08 | PH01.M.1000 SS | 2024-09-30 | 2024-09-30 | 02 | 4 |  |
| PH04.PR.1100 |  | OFCI PDC | 48d | 2025-10-08 | 2025-10-08 | PH01.M.1000 SS | 2024-09-30 | 2024-12-09 | 02 | 4 |  |
| PH04.PR.1170 |  | OFCI AMCOP / BACOP | 39d | 2025-10-08 | 2025-10-08 | PH01.M.1000 SS | 2024-09-30 | 2024-11-25 | 02 | 4 |  |
| PH04.PR.1190 |  | OFCI UPS | 20d | 2025-10-08 | 2025-10-08 | PH01.M.1000 SS | 2024-09-30 | 2024-10-28 | 02 | 1 |  |
|  | 2 | **CFCI** |  | 2025-10-08 | 2025-10-08 |  |  |  |  |  |  |
|  | 2 | **Mechanical** |  | 2025-10-08 | 2025-10-08 |  |  |  |  |  |  |
| PH04.PR.1130 |  | CFCI VFDs | 0d | 2025-10-08 | 2025-10-08 | PH01.M.1000 SS | 2024-09-23 | 2024-09-23 | 02 | 4 | TBD |
| PH04.PR.1140 |  | CFCI Split Units | 0d | 2025-10-08 | 2025-10-08 | PH01.PR.1140 FF, PH01.M.1000 SS | 2024-03-26 | 2024-03-26 | 02 | 4 | TBD |
|  | 3 | **Electrical** |  | 2025-10-08 | 2025-10-08 |  |  |  |  |  |  |
| PH04.PR.1160 |  | CFCI Cable Bus | 0d | 2025-10-08 | 2025-10-08 | PH01.M.1000 SS | 2024-09-23 | 2024-09-23 | 02 | 4 |  |

| ID | WBS | Activity | Duration | Start | Finish | Predecessors | Planned start | Planned finish | 06 -GC - Building Levels | 05 -GC - Building Phase | user_text8 |
| --- | --- | --- | --- | --- | --- | --- | --- | --- | --- | --- | --- |
|  | 5 | **Phase 5 Procurement** |  | 2025-10-08 | 2025-10-08 |  |  |  |  |  |  |
|  | 1 | **OFCI** |  | 2025-10-08 | 2025-10-08 |  |  |  |  |  |  |
|  | 1 | **Racking** |  | 2025-10-08 | 2025-10-08 |  |  |  |  |  |  |
| PH05.PR.1000 |  | OFCI Racking | 34d | 2025-10-08 | 2025-10-08 | PH01.M.1000 SS | 2024-09-30 | 2024-11-18 | 02 | 5 |  |
|  | 2 | **Mechanical** |  | 2025-10-08 | 2025-10-08 |  |  |  |  |  |  |
| PH05.PR.1010 |  | OFCI DAHU | 26d | 2025-10-08 | 2025-10-08 | PH01.M.1000 SS | 2024-09-30 | 2024-11-05 | 02 | 5 |  |
| PH05.PR.1020 |  | OFCI Exhaust Fans | 17d | 2025-10-08 | 2025-10-08 | PH01.M.1000 SS | 2024-09-30 | 2024-10-23 | 02 | 5 | TBD |
|  | 3 | **Electrical** |  | 2025-10-08 | 2025-10-08 |  |  |  |  |  |  |
| PH05.PR.1040 |  | OFCI MV XFMR | 20d | 2025-10-08 | 2025-10-08 | PH01.M.1000 SS, ISSU12.10 FF | 2024-09-30 | 2024-10-28 | 02 | 5 | Do these exist in phase 5? |
| PH05.PR.1050 |  | OFCI Generators | 43d | 2025-10-08 | 2025-10-08 | PH01.M.1000 SS | 2024-09-30 | 2024-12-02 | 02 | 5 |  |
| PH05.PR.1060 |  | OFCI Busduct | 39d | 2025-10-08 | 2025-10-08 | PH01.M.1000 SS | 2024-09-30 | 2024-11-25 | 02 | 5 |  |
| PH05.PR.1070 |  | OFCI LV SWGR | 46d | 2025-10-08 | 2025-10-08 | PH01.M.1000 SS | 2024-09-30 | 2024-12-05 | 02 | 5 |  |
| PH05.PR.1080 |  | OFCI LV XFMR | 0d | 2025-10-08 | 2025-10-08 | PH01.M.1000 SS | 2024-09-30 | 2024-09-30 | 02 | 5 |  |
| PH05.PR.1090 |  | OFCI LV Panelboards | 0d | 2025-10-08 | 2025-10-08 | PH01.M.1000 SS | 2024-09-30 | 2024-09-30 | 02 | 5 |  |
| PH05.PR.1100 |  | OFCI PDC | 48d | 2025-10-08 | 2025-10-08 | PH01.M.1000 SS | 2024-09-30 | 2024-12-09 | 02 | 5 |  |
| PH05.PR.1170 |  | OFCI AMCOP / BACOP | 39d | 2025-10-08 | 2025-10-08 | PH01.M.1000 SS | 2024-09-30 | 2024-11-25 | 02 | 5 |  |
| PH05.PR.1190 |  | OFCI UPS | 20d | 2025-10-08 | 2025-10-08 | PH01.M.1000 SS | 2024-09-30 | 2024-10-28 | 02 | 1 |  |
|  | 2 | **CFCI** |  | 2025-10-08 | 2025-10-08 |  |  |  |  |  |  |
|  | 2 | **Mechanical** |  | 2025-10-08 | 2025-10-08 |  |  |  |  |  |  |
| PH05.PR.1130 |  | CFCI VFDs | 0d | 2025-10-08 | 2025-10-08 | PH01.M.1000 SS | 2024-09-23 | 2024-09-23 | 02 | 5 | TBD |
| PH05.PR.1140 |  | CFCI Split Units | 0d | 2025-10-08 | 2025-10-08 | PH01.PR.1140 FF, PH01.M.1000 SS | 2024-03-26 | 2024-03-26 | 02 | 5 | TBD |
|  | 3 | **Electrical** |  | 2025-10-08 | 2025-10-08 |  |  |  |  |  |  |
| PH05.PR.1160 |  | CFCI Cable Bus | 0d | 2025-10-08 | 2025-10-08 | PH01.M.1000 SS | 2024-09-23 | 2024-09-23 | 02 | 5 |  |
|  | 6 | **Phase 6 Procurement** |  | 2025-10-08 | 2025-10-08 |  |  |  |  |  |  |
|  | 1 | **OFCI** |  | 2025-10-08 | 2025-10-08 |  |  |  |  |  |  |
|  | 1 | **Racking** |  | 2025-10-08 | 2025-10-08 |  |  |  |  |  |  |
| PH06.PR.1000 |  | OFCI Racking | 48d | 2025-10-08 | 2025-10-08 | PH01.M.1000 SS | 2024-09-30 | 2024-12-09 | 02 | 3 |  |

| ID | WBS | Activity | Duration | Start | Finish | Predecessors | Planned start | Planned finish | 06 -GC - Building Levels | 05 -GC - Building Phase |
| --- | --- | --- | --- | --- | --- | --- | --- | --- | --- | --- |
|  | 2 | **Mechanical** |  | 2025-10-08 | 2025-10-08 |  |  |  |  |  |
| PH06.PR.1010 |  | OFCI DAHU | 39d | 2025-10-08 | 2025-10-08 | PH01.M.1000 SS | 2024-09-30 | 2024-11-25 | 02 | 3 |
| PH06.PR.1020 |  | OFCI Exhaust Fans | 17d | 2025-10-08 | 2025-10-08 | PH01.M.1000 SS | 2024-09-30 | 2024-10-23 | 02 | 3 |
|  | 3 | **Electrical** |  | 2025-10-08 | 2025-10-08 |  |  |  |  |  |
| PH06.PR.1040 |  | OFCI MV XFMR | 34d | 2025-10-08 | 2025-10-08 | PH01.M.1000 SS, ISSU12.10 FF | 2024-09-30 | 2024-11-18 | 02 | 3 |
| PH06.PR.1050 |  | OFCI Generators | 56d | 2025-10-08 | 2025-10-08 | PH01.M.1000 SS | 2024-09-30 | 2024-12-19 | 02 | 3 |
| PH06.PR.1060 |  | OFCI Busduct | 58d | 2025-10-08 | 2025-10-08 | PH01.M.1000 SS | 2024-09-30 | 2024-12-23 | 02 | 3 |
| PH06.PR.1070 |  | OFCI LV SWGR | 60d | 2025-10-08 | 2025-10-08 | PH01.M.1000 SS | 2024-09-30 | 2024-12-26 | 02 | 3 |
| PH06.PR.1080 |  | OFCI LV XFMR | 0d | 2025-10-08 | 2025-10-08 | PH01.M.1000 SS | 2024-09-30 | 2024-09-30 | 02 | 3 |
| PH06.PR.1090 |  | OFCI LV Panelboards | 0d | 2025-10-08 | 2025-10-08 | PH01.M.1000 SS | 2024-09-30 | 2024-09-30 | 02 | 3 |
| PH06.PR.1100 |  | OFCI PDC | 62d | 2025-10-08 | 2025-10-08 | PH01.M.1000 SS | 2024-09-30 | 2024-12-30 | 02 | 3 |
| PH06.PR.1170 |  | OFCI AMCOP / BACOP | 58d | 2025-10-08 | 2025-10-08 | PH01.M.1000 SS | 2024-09-30 | 2024-12-23 | 02 | 3 |
| PH06.PR.1190 |  | OFCI UPS | 29d | 2025-10-08 | 2025-10-08 | PH01.M.1000 SS | 2024-09-30 | 2024-11-08 | 02 | 1 |
|  | 2 | **CFCI** |  | 2025-10-08 | 2025-10-08 |  |  |  |  |  |
|  | 2 | **Mechanical** |  | 2025-10-08 | 2025-10-08 |  |  |  |  |  |
| PH06.PR.1130 |  | CFCI VFDs | 47d | 2025-10-08 | 2025-10-08 | PH01.M.1000 SS | 2024-09-23 | 2024-11-29 | 02 | 3 |
| PH06.PR.1140 |  | CFCI Split Units | 0d | 2025-10-08 | 2025-10-08 | PH01.PR.1140 FF, PH01.M.1000 SS | 2024-03-26 | 2024-03-26 | 02 | 3 |
|  | 3 | **Electrical** |  | 2025-10-08 | 2025-10-08 |  |  |  |  |  |
| PH06.PR.1160 |  | CFCI Cable Bus | 1d | 2025-10-08 | 2025-10-08 | PH01.M.1000 SS | 2024-09-23 | 2024-09-23 | 02 | 3 |
|  | 7 | **Phase 7 Procurement** |  | 2025-10-08 | 2025-10-08 |  |  |  |  |  |
|  | 1 | **OFCI** |  | 2025-10-08 | 2025-10-08 |  |  |  |  |  |
|  | 1 | **Racking** |  | 2025-10-08 | 2025-10-08 |  |  |  |  |  |
| PH07.PR.1000 |  | OFCI Racking | 48d | 2025-10-08 | 2025-10-08 | PH01.M.1000 SS | 2024-09-30 | 2024-12-09 | 02 | 3 |
|  | 2 | **Mechanical** |  | 2025-10-08 | 2025-10-08 |  |  |  |  |  |
| PH07.PR.1010 |  | OFCI DAHU | 39d | 2025-10-08 | 2025-10-08 | PH01.M.1000 SS | 2024-09-30 | 2024-11-25 | 02 | 3 |
| PH07.PR.1020 |  | OFCI Exhaust Fans | 48d | 2025-10-08 | 2025-10-08 | PH01.M.1000 SS | 2024-09-30 | 2024-12-09 | 02 | 3 |

| ID | WBS | Activity | Duration | Start | Finish | Predecessors | Planned start | Planned finish | 06 -GC - Building Levels | 05 -GC - Building Phase |
| --- | --- | --- | --- | --- | --- | --- | --- | --- | --- | --- |
|  | 3 | **Electrical** |  | 2025-10-08 | 2025-10-08 |  |  |  |  |  |
| PH07.PR.1040 |  | OFCI MV XFMR | 34d | 2025-10-08 | 2025-10-08 | PH01.M.1000 SS, ISSU12.10 FF | 2024-09-30 | 2024-11-18 | 02 | 3 |
| PH07.PR.1050 |  | OFCI Generators | 56d | 2025-10-08 | 2025-10-08 | PH01.M.1000 SS | 2024-09-30 | 2024-12-19 | 02 | 3 |
| PH07.PR.1060 |  | OFCI Busduct | 58d | 2025-10-08 | 2025-10-08 | PH01.M.1000 SS | 2024-09-30 | 2024-12-23 | 02 | 3 |
| PH07.PR.1070 |  | OFCI LV SWGR | 60d | 2025-10-08 | 2025-10-08 | PH01.M.1000 SS | 2024-09-30 | 2024-12-26 | 02 | 3 |
| PH07.PR.1080 |  | OFCI LV XFMR | 0d | 2025-10-08 | 2025-10-08 | PH01.M.1000 SS | 2024-09-30 | 2024-09-30 | 02 | 3 |
| PH07.PR.1090 |  | OFCI LV Panelboards | 0d | 2025-10-08 | 2025-10-08 | PH01.M.1000 SS | 2024-09-30 | 2024-09-30 | 02 | 3 |
| PH07.PR.1100 |  | OFCI PDC | 62d | 2025-10-08 | 2025-10-08 | PH01.M.1000 SS | 2024-09-30 | 2024-12-30 | 02 | 3 |
| PH07.PR.1170 |  | OFCI AMCOP / BACOP | 58d | 2025-10-08 | 2025-10-08 | PH01.M.1000 SS | 2024-09-30 | 2024-12-23 | 02 | 3 |
| PH07.PR.1190 |  | OFCI UPS | 29d | 2025-10-08 | 2025-10-08 | PH01.M.1000 SS | 2024-09-30 | 2024-11-08 | 02 | 1 |
|  | 2 | **CFCI** |  | 2025-10-08 | 2025-10-08 |  |  |  |  |  |
|  | 2 | **Mechanical** |  | 2025-10-08 | 2025-10-08 |  |  |  |  |  |
| PH07.PR.1130 |  | CFCI VFDs | 47d | 2025-10-08 | 2025-10-08 | PH01.M.1000 SS | 2024-09-23 | 2024-11-29 | 02 | 3 |
| PH07.PR.1140 |  | CFCI Split Units | 0d | 2025-10-08 | 2025-10-08 | PH01.PR.1140 FF, PH01.M.1000 SS | 2024-03-26 | 2024-03-26 | 02 | 3 |
|  | 3 | **Electrical** |  | 2025-10-08 | 2025-10-08 |  |  |  |  |  |
| PH07.PR.1160 |  | CFCI Cable Bus | 1d | 2025-10-08 | 2025-10-08 | PH01.M.1000 SS | 2024-09-23 | 2024-09-23 | 02 | 3 |
|  | 8 | **Phase 8 Procurement** |  | 2025-10-08 | 2025-10-08 |  |  |  |  |  |
|  | 1 | **OFCI** |  | 2025-10-08 | 2025-10-08 |  |  |  |  |  |
|  | 1 | **Racking** |  | 2025-10-08 | 2025-10-08 |  |  |  |  |  |
| PH08.PR.1000 |  | OFCI Racking | 62d | 2025-10-08 | 2025-10-08 | PH01.M.1000 SS | 2024-09-30 | 2024-12-30 | 02 | 3 |
|  | 2 | **Mechanical** |  | 2025-10-08 | 2025-10-08 |  |  |  |  |  |
| PH08.PR.1010 |  | OFCI DAHU | 48d | 2025-10-08 | 2025-10-08 | PH01.M.1000 SS | 2024-09-30 | 2024-12-09 | 02 | 3 |
| PH08.PR.1020 |  | OFCI Exhaust Fans | 48d | 2025-10-08 | 2025-10-08 | PH01.M.1000 SS | 2024-09-30 | 2024-12-09 | 02 | 3 |
|  | 3 | **Electrical** |  | 2025-10-08 | 2025-10-08 |  |  |  |  |  |
| PH08.PR.1040 |  | OFCI MV XFMR | 34d | 2025-10-08 | 2025-10-08 | PH01.M.1000 SS, ISSU12.10 FF | 2024-09-30 | 2024-11-18 | 02 | 3 |
| PH08.PR.1050 |  | OFCI Generators | 66d | 2025-10-08 | 2025-10-08 | PH01.M.1000 SS | 2024-09-30 | 2025-01-06 | 02 | 3 |
| PH08.PR.1060 |  | OFCI Busduct | 71d | 2025-10-08 | 2025-10-08 | PH01.M.1000 SS | 2024-09-30 | 2025-01-13 | 02 | 3 |
| PH08.PR.1070 |  | OFCI LV SWGR | 67d | 2025-10-08 | 2025-10-08 | PH01.M.1000 SS | 2024-09-30 | 2025-01-07 | 02 | 3 |
| PH08.PR.1080 |  | OFCI LV XFMR | 15d | 2025-10-08 | 2025-10-08 | PH01.M.1000 SS | 2024-09-30 | 2024-10-21 | 02 | 3 |
| PH08.PR.1090 |  | OFCI LV Panelboards | 15d | 2025-10-08 | 2025-10-08 | PH01.M.1000 SS | 2024-09-30 | 2024-10-21 | 02 | 3 |
| PH08.PR.1100 |  | OFCI PDC | 71d | 2025-10-08 | 2025-10-08 | PH01.M.1000 SS | 2024-09-30 | 2025-01-13 | 02 | 3 |
| PH08.PR.1170 |  | OFCI AMCOP / BACOP | 71d | 2025-10-08 | 2025-10-08 | PH01.M.1000 SS | 2024-09-30 | 2025-01-13 | 02 | 3 |
| PH08.PR.1190 |  | OFCI UPS | 43d | 2025-10-08 | 2025-10-08 | PH01.M.1000 SS | 2024-09-30 | 2024-12-02 | 02 | 1 |

| ID | WBS | Activity | Duration | Start | Finish | Predecessors | Planned start | Planned finish | 06 -GC - Building Levels | 05 -GC - Building Phase |
| --- | --- | --- | --- | --- | --- | --- | --- | --- | --- | --- |
|  | 2 | **CFCI** |  | 2025-10-08 | 2025-10-08 |  |  |  |  |  |
|  | 2 | **Mechanical** |  | 2025-10-08 | 2025-10-08 |  |  |  |  |  |
| PH08.PR.1130 |  | CFCI VFDs | 47d | 2025-10-08 | 2025-10-08 | PH01.M.1000 SS | 2024-09-23 | 2024-11-29 | 02 | 3 |
| PH08.PR.1140 |  | CFCI Split Units | 0d | 2025-10-08 | 2025-10-08 | PH01.PR.1140 FF, PH01.M.1000 SS | 2024-03-26 | 2024-03-26 | 02 | 3 |
|  | 3 | **Electrical** |  | 2025-10-08 | 2025-10-08 |  |  |  |  |  |
| PH08.PR.1160 |  | CFCI Cable Bus | 1d | 2025-10-08 | 2025-10-08 | PH01.M.1000 SS | 2024-09-23 | 2024-09-23 | 02 | 3 |
|  | 9 | **Phase 9 Procurement** |  | 2025-10-08 | 2025-10-08 |  |  |  |  |  |
|  | 1 | **OFCI** |  | 2025-10-08 | 2025-10-08 |  |  |  |  |  |
|  | 1 | **Racking** |  | 2025-10-08 | 2025-10-08 |  |  |  |  |  |
| PH09.PR.1000 |  | OFCI Racking | 62d | 2025-10-08 | 2025-10-08 | PH01.M.1000 SS | 2024-09-30 | 2024-12-30 | 02 | 3 |
|  | 2 | **Mechanical** |  | 2025-10-08 | 2025-10-08 |  |  |  |  |  |
| PH09.PR.1010 |  | OFCI DAHU | 48d | 2025-10-08 | 2025-10-08 | PH01.M.1000 SS | 2024-09-30 | 2024-12-09 | 02 | 3 |
| PH09.PR.1020 |  | OFCI Exhaust Fans | 48d | 2025-10-08 | 2025-10-08 | PH01.M.1000 SS | 2024-09-30 | 2024-12-09 | 02 | 3 |
|  | 3 | **Electrical** |  | 2025-10-08 | 2025-10-08 |  |  |  |  |  |
| PH09.PR.1040 |  | OFCI MV XFMR | 43d | 2025-10-08 | 2025-10-08 | PH01.M.1000 SS | 2024-09-30 | 2024-12-02 | 02 | 3 |
| PH09.PR.1050 |  | OFCI Generators | 66d | 2025-10-08 | 2025-10-08 | PH01.M.1000 SS | 2024-09-30 | 2025-01-06 | 02 | 3 |
| PH09.PR.1060 |  | OFCI Busduct | 71d | 2025-10-08 | 2025-10-08 | PH01.M.1000 SS | 2024-09-30 | 2025-01-13 | 02 | 3 |
| PH09.PR.1070 |  | OFCI LV SWGR | 67d | 2025-10-08 | 2025-10-08 | PH01.M.1000 SS | 2024-09-30 | 2025-01-07 | 02 | 3 |
| PH09.PR.1080 |  | OFCI LV XFMR | 15d | 2025-10-08 | 2025-10-08 | PH01.M.1000 SS | 2024-09-30 | 2024-10-21 | 02 | 3 |
| PH09.PR.1090 |  | OFCI LV Panelboards | 15d | 2025-10-08 | 2025-10-08 | PH01.M.1000 SS | 2024-09-30 | 2024-10-21 | 02 | 3 |
| PH09.PR.1100 |  | OFCI PDC | 71d | 2025-10-08 | 2025-10-08 | PH01.M.1000 SS | 2024-09-30 | 2025-01-13 | 02 | 3 |
| PH09.PR.1170 |  | OFCI AMCOP / BACOP | 71d | 2025-10-08 | 2025-10-08 | PH01.M.1000 SS | 2024-09-30 | 2025-01-13 | 02 | 3 |
| PH09.PR.1190 |  | OFCI UPS | 43d | 2025-10-08 | 2025-10-08 | PH01.M.1000 SS | 2024-09-30 | 2024-12-02 | 02 | 1 |
|  | 2 | **CFCI** |  | 2025-10-08 | 2025-10-08 |  |  |  |  |  |
|  | 2 | **Mechanical** |  | 2025-10-08 | 2025-10-08 |  |  |  |  |  |
| PH09.PR.1130 |  | CFCI VFDs | 47d | 2025-10-08 | 2025-10-08 | PH01.M.1000 SS | 2024-09-23 | 2024-11-29 | 02 | 3 |
| PH09.PR.1140 |  | CFCI Split Units | 0d | 2025-10-08 | 2025-10-08 | PH01.PR.1140 FF, PH01.M.1000 SS | 2024-03-26 | 2024-03-26 | 02 | 3 |

| ID | WBS | Activity | Duration | Start | Finish | Predecessors | Planned start | Planned finish | 06 -GC - Building Levels | 05 -GC - Building Phase |
| --- | --- | --- | --- | --- | --- | --- | --- | --- | --- | --- |
|  | 3 | **Electrical** |  | 2025-10-08 | 2025-10-08 |  |  |  |  |  |
| PH09.PR.1160 |  | CFCI Cable Bus | 1d | 2025-10-08 | 2025-10-08 | PH01.M.1000 SS | 2024-09-23 | 2024-09-23 | 02 | 3 |
|  | 10 | **Phase 10 Procurement** |  | 2025-10-08 | 2025-10-08 |  |  |  |  |  |
|  | 1 | **OFCI** |  | 2025-10-08 | 2025-10-08 |  |  |  |  |  |
|  | 1 | **Racking** |  | 2025-10-08 | 2025-10-08 |  |  |  |  |  |
| PH10.PR.1000 |  | OFCI Racking | 85d | 2025-10-08 | 2025-10-08 | PH01.M.1000 SS | 2024-09-30 | 2025-02-03 | 02 | 3 |
|  | 2 | **Mechanical** |  | 2025-10-08 | 2025-10-08 |  |  |  |  |  |
| PH10.PR.1010 |  | OFCI DAHU | 73d | 2025-10-08 | 2025-10-08 | ISSUE23.10 FF, PH01.M.1000 SS | 2024-09-30 | 2025-01-15 | 02 | 3 |
| PH10.PR.1020 |  | OFCI Exhaust Fans | 48d | 2025-10-08 | 2025-10-08 | PH01.M.1000 SS | 2024-09-30 | 2024-12-09 | 02 | 3 |
|  | 3 | **Electrical** |  | 2025-10-08 | 2025-10-08 |  |  |  |  |  |
| PH10.PR.1040 |  | OFCI MV XFMR | 43d | 2025-10-08 | 2025-10-08 | PH01.M.1000 SS | 2024-09-30 | 2024-12-02 | 02 | 3 |
| PH10.PR.1050 |  | OFCI Generators | 66d | 2025-10-08 | 2025-10-08 | PH01.M.1000 SS | 2024-09-30 | 2025-01-06 | 02 | 3 |
| PH10.PR.1060 |  | OFCI Busduct | 85d | 2025-10-08 | 2025-10-08 | PH01.M.1000 SS | 2024-09-30 | 2025-02-03 | 02 | 3 |
| PH10.PR.1070 |  | OFCI LV SWGR | 86d | 2025-10-08 | 2025-10-08 | PH01.M.1000 SS | 2024-09-30 | 2025-02-04 | 02 | 3 |
| PH10.PR.1080 |  | OFCI LV XFMR | 15d | 2025-10-08 | 2025-10-08 | PH01.M.1000 SS | 2024-09-30 | 2024-10-21 | 02 | 3 |
| PH10.PR.1090 |  | OFCI LV Panelboards | 15d | 2025-10-08 | 2025-10-08 | PH01.M.1000 SS | 2024-09-30 | 2024-10-21 | 02 | 3 |
| PH10.PR.1100 |  | OFCI PDC | 90d | 2025-10-08 | 2025-10-08 | PH01.M.1000 SS, ISSU13.10 FF | 2024-09-30 | 2025-02-10 | 02 | 3 |
| PH10.PR.1170 |  | OFCI AMCOP / BACOP | 85d | 2025-10-08 | 2025-10-08 | PH01.M.1000 SS | 2024-09-30 | 2025-02-03 | 02 | 3 |
| PH10.PR.1190 |  | OFCI UPS | 66d | 2025-10-08 | 2025-10-08 | PH01.M.1000 SS | 2024-09-30 | 2025-01-06 | 02 | 1 |
|  | 2 | **CFCI** |  | 2025-10-08 | 2025-10-08 |  |  |  |  |  |
|  | 2 | **Mechanical** |  | 2025-10-08 | 2025-10-08 |  |  |  |  |  |
| PH10.PR.1130 |  | CFCI VFDs | 47d | 2025-10-08 | 2025-10-08 | PH01.M.1000 SS | 2024-09-23 | 2024-11-29 | 02 | 3 |
| PH10.PR.1140 |  | CFCI Split Units | 0d | 2025-10-08 | 2025-10-08 | PH01.PR.1140 FF, PH01.M.1000 SS | 2024-03-26 | 2024-03-26 | 02 | 3 |
|  | 3 | **Electrical** |  | 2025-10-08 | 2025-10-08 |  |  |  |  |  |
| PH10.PR.1160 |  | CFCI Cable Bus | 1d | 2025-10-08 | 2025-10-08 | PH01.M.1000 SS | 2024-09-23 | 2024-09-23 | 02 | 3 |

| ID | WBS | Activity | Type | Duration | Start | Finish | Predecessors | Planned start | Planned finish | 06 -GC - Building Levels | 05 -GC - Building Phase | ISSUES | SCHDULE UPDATE |
| --- | --- | --- | --- | --- | --- | --- | --- | --- | --- | --- | --- | --- | --- |
|  | CON | **Construction** |  |  | 2025-10-08 | 2025-10-08 |  |  |  |  |  |  |  |
|  | PH1 | **Phase 1 Construction** |  |  | 2025-10-08 | 2025-10-08 |  |  |  |  |  |  |  |
|  | 2 | **Site** |  |  | 2025-10-08 | 2025-10-08 |  |  |  |  |  |  |  |
|  | 1 | **Mobilization** |  |  | 2025-10-08 | 2025-10-08 |  |  |  |  |  |  |  |
| PH01.SS.1000 |  | Site survey (establish control points) |  | 2d | 2025-10-08 | 2025-10-08 | GC.1000 SS | 2024-08-26 | 2024-08-27 | 02 | 1 |  |  |
| PH01.SS.1010 |  | Trade Mobilization |  | 7d | 2025-10-08 | 2025-10-08 | PH01.M.1000 SS, PH01.SS.1110 SS+3d | 2024-09-16 | 2024-09-24 | 02 | 1 |  |  |
| PH01.SS.1020 |  | Laydown area |  | 5d | 2025-10-08 | 2025-10-08 | PH01.SS.1110 SS+1d | 2024-08-26 | 2024-08-30 | 02 | 1 |  |  |
| PH01.SS.1030 |  | Temporary power install |  | 5d | 2025-10-08 | 2025-10-08 | PH01.M.1000 SS | 2024-09-16 | 2024-09-20 | 02 | 1 |  |  |
| PH01.SS.1040 |  | Install temporary fencing |  | 5d | 2025-10-08 | 2025-10-08 | PH01.SS.1110 SS+5d | 2024-08-27 | 2024-09-03 | 02 | 1 |  |  |
| PH01.SS.1110 |  | GC Mobilization |  | 7d | 2025-10-08 | 2025-10-08 | PH01.M.1120 SS | 2024-08-20 | 2024-08-28 | 02 | 1 |  |  |
| PH01.SS.1120 |  | Trade Trailer Install |  | 5d | 2025-10-08 | 2025-10-08 | PH01.SS.1010 | 2024-10-07 | 2024-10-11 | 02 | 1 |  |  |
|  | 2 | **Generator Yard** |  |  | 2025-10-08 | 2025-10-08 |  |  |  |  |  |  |  |
|  | 2 | **Generators-Phase 1** |  |  | 2025-10-08 | 2025-10-08 |  |  |  |  |  |  |  |
| PH01-103 |  | Phase 1 Sidewalk Demo Start | milestone | 0d | 2025-10-08 | 2025-10-08 | ISSU09.20 SS | 2024-09-23 | 2024-09-23 |  |  | ISSU09 | ELIASE |
| PH01.GEN.1010 |  | Gen Yard Layout generator pads |  | 2d | 2025-10-08 | 2025-10-08 | PH01.M.1000 SS | 2024-09-16 | 2024-09-17 | 02 | 1 |  | ELIASE |
| PH01.GEN.1020 |  | Gen Yard Excavate generator pads |  | 2d | 2025-10-08 | 2025-10-08 | PH01-103 SS+1d, ISSU09.20 SS, ISSU09.30 SS+1d, PH01.GEN.1010, ISSU06.50 SS | 2024-09-24 | 2024-09-25 | 02 | 1 |  | ELIASE |
| PH01.GEN.1030 |  | Gen Yard Form generator pads |  | 3d | 2025-10-08 | 2025-10-08 | PH01.GEN.1020 | 2024-10-01 | 2024-10-03 | 02 | 1 |  | ELIASE |
| PH01.GEN.1040 |  | Gen Yard Install Grounding |  | 2d | 2025-10-08 | 2025-10-08 | PH01.GEN.1030 SS+2d | 2024-10-03 | 2024-10-04 | 02 | 1 |  | ELIASE |
| PH01.GEN.1050 |  | Gen Yard Install rebar and anchor bolts |  | 3d | 2025-10-08 | 2025-10-08 | PH01.GEN.1040 SS | 2024-10-03 | 2024-10-07 | 02 | 1 |  | ELIASE |
| PH01.GEN.1060 |  | Gen Yard Electrical inspection |  | 1d | 2025-10-08 | 2025-10-08 | PH01.GEN.1040 | 2024-10-09 | 2024-10-09 | 02 | 1 |  | ELIASE |
| PH01.GEN.1070 |  | Gen Yard Rebar inspection |  | 1d | 2025-10-08 | 2025-10-08 | PH01.GEN.1050 | 2024-10-10 | 2024-10-10 | 02 | 1 |  | ELIASE |
| PH01.GEN.1080 |  | Gen Yard Pour concrete |  | 1d | 2025-10-08 | 2025-10-08 | PH01.GEN.1070 FF, PH01.GEN.1060 | 2024-10-10 | 2024-10-10 | 02 | 1 |  | ELIASE |
| PH01.GEN.1090 |  | Gen Yard Remove forms |  | 2d | 2025-10-08 | 2025-10-08 | PH01.GEN.1080 | 2024-10-11 | 2024-10-15 | 02 | 1 |  | ELIASE |
| PH01.GEN.1100 |  | Gen Yard Install generators |  | 2d | 2025-10-08 | 2025-10-08 | PH01.GEN.1090, PH01.PR.1050 FF | 2024-10-16 | 2024-10-17 | 02 | 1 |  | ELIASE |
| PH01.GEN.1110 |  | Gen Yard Anchor generators |  | 2d | 2025-10-08 | 2025-10-08 | PH01.GEN.1100 | 2024-10-18 | 2024-10-21 | 02 | 1 |  | ELIASE |
| PH01.GEN.1120 |  | Gen Yard Install Cable Bus from Generator to Electrical Room |  | 10d | 2025-10-08 | 2025-10-08 | PH01.XFMR.1100 SS, PH01.PR.1160, PH01.XFMR.1090 | 2024-11-26 | 2024-12-10 | 02 | 1 |  | ELIASE |
| PH01.GEN.1140 |  | Gen Yard Install generators Exhaust Duct |  | 2d | 2025-10-08 | 2025-10-08 | PH01.GEN.1100, PH01.GEN.1090 | 2024-12-16 | 2024-12-17 | 02 | 1 |  | ELIASE |

| ID | WBS | Activity | Type | Duration | Start | Finish | Predecessors | Planned start | Planned finish | ISSUES | SCHDULE UPDATE | 06 -GC - Building Levels | 05 -GC - Building Phase |
| --- | --- | --- | --- | --- | --- | --- | --- | --- | --- | --- | --- | --- | --- |
|  | CONCRT | **Generator Pads Phases 2 - 10** |  |  | 2025-10-08 | 2025-10-08 |  |  |  |  |  |  |  |
| PH01-104 |  | Phase 1 Sidewalk Demo Start | milestone | 0d | 2025-10-08 | 2025-10-08 | ISSU09.20 SS | 2024-09-30 | 2024-09-30 | ISSU09 | ELIASE |  |  |
| PH2-10.GEN.1130 |  | Gen Yard Layout generator pads PH 2-10 |  | 2d | 2025-10-08 | 2025-10-08 | PH01.M.1000 SS, PH01.GEN.1010 SS | 2024-09-16 | 2024-09-17 |  | ELIASE | 02 | 1 |
| PH2-10.GEN.1140 |  | Gen Yard Excavate generator pads PH 2-10 |  | 2d | 2025-10-08 | 2025-10-08 | PH01-104 SS+1d, PH2-10.GEN.1130, ISSU06.50 | 2024-10-08 | 2024-10-09 |  | ELIASE | 02 | 1 |
| PH2-10.GEN.1150 |  | Gen Yard Form generator pads PH 2-10 |  | 3d | 2025-10-08 | 2025-10-08 | PH2-10.GEN.1140 | 2024-10-10 | 2024-10-15 |  | ELIASE | 02 | 1 |
| PH2-10.GEN.1160 |  | Gen Yard Install Grounding PH 2-10 |  | 2d | 2025-10-08 | 2025-10-08 | PH2-10.GEN.1150 SS+2d | 2024-10-15 | 2024-10-16 |  | ELIASE | 02 | 1 |
| PH2-10.GEN.1170 |  | Gen Yard Electrical inspection PH 2-10 |  | 1d | 2025-10-08 | 2025-10-08 | PH2-10.GEN.1160 FF | 2024-11-04 | 2024-11-04 |  | ELIASE | 02 | 1 |
| PH2-10.GEN.1180 |  | Gen Yard Install rebar and anchor bolts PH 2-10 |  | 5d | 2025-10-08 | 2025-10-08 | PH2-10.GEN.1160 SS+2d | 2024-10-17 | 2024-10-23 |  | ELIASE | 02 | 1 |
| PH2-10.GEN.1190 |  | Gen Yard Rebar inspection PH 2-10 |  | 1d | 2025-10-08 | 2025-10-08 | PH2-10.GEN.1180 | 2024-11-04 | 2024-11-04 |  | ELIASE | 02 | 1 |
| PH2-10.GEN.1200 |  | Gen Yard Pour concrete PH 2-10 |  | 1d | 2025-10-08 | 2025-10-08 | PH2-10.GEN.1190, PH2-10.GEN.1170 | 2024-11-05 | 2024-11-05 |  | ELIASE | 02 | 1 |
| PH2-10.GEN.1210 |  | Gen Yard Remove forms PH 2-10 |  | 2d | 2025-10-08 | 2025-10-08 | PH2-10.GEN.1200 SS | 2024-11-05 | 2024-11-06 |  | ELIASE | 02 | 1 |
| PH2-10.GEN.1220 |  | Gen Yard Install Remaining Anchor Bolts For Catwalk PH 2-10 |  | 2d | 2025-10-08 | 2025-10-08 | PH01.GEN.1100, PH2-10.GEN.1210 | 2024-11-25 | 2024-11-26 |  | ELIASE | 02 | 1 |
| PH2-10.GEN.1230 |  | Gen Yard Install Catwalk PH 2-10 |  | 3d | 2025-10-08 | 2025-10-08 | PH2-10.GEN.1220, PH10.PR.1050 FF+1d | 2025-01-08 | 2025-01-10 |  | ELIASE | 02 | 1 |
| PH2-10.GEN.1240 |  | Gen Yard Install Catwalk Stair PH 1-10 |  | 14d | 2025-10-08 | 2025-10-08 | PH2-10.GEN.1230 | 2025-01-21 | 2025-02-07 |  | ELIASE | 02 | 1 |
|  | 3 | **MV Switch Gear** |  |  | 2025-10-08 | 2025-10-08 |  |  |  |  |  |  |  |
| PH01.SWGR.1060 |  | MV SWGR Install Gear |  | 3d | 2025-10-08 | 2025-10-08 | PH01.M.1000 SS, PH01.PR.1030 | 2024-10-07 | 2024-10-09 |  | ELIASE | 02 | 1 |
| PH01.SWGR.1070 |  | MV SWGR Pull and Terminate from Utility |  | 10d | 2025-10-08 | 2025-10-08 | ISSU10.30, PH01.SWGR.1060 | 2024-11-25 | 2024-12-09 |  | ELIASE | 02 | 1 |
|  | 4 | **MV Transformers-Phase 1** |  |  | 2025-10-08 | 2025-10-08 |  |  |  |  |  |  |  |
| PH01.XFMR.1000 |  | XFMR Layout transformer pads |  | 2d | 2025-10-08 | 2025-10-08 | PH01.M.1000 SS, ISSU06.40 | 2024-09-16 | 2024-09-17 |  | ELIASE | 02 | 1 |
| PH01.XFMR.1010 |  | XFMR Excavate transformer pads |  | 2d | 2025-10-08 | 2025-10-08 | PH01.XFMR.1000 | 2024-09-16 | 2024-09-17 |  | ELIASE | 02 | 1 |
| PH01.XFMR.1020 |  | XFMR Form transformer pads |  | 3d | 2025-10-08 | 2025-10-08 | PH01.XFMR.1010 | 2024-09-18 | 2024-09-20 |  | ELIASE | 02 | 1 |
| PH01.XFMR.1030 |  | XFMR Install grounding |  | 2d | 2025-10-08 | 2025-10-08 | PH01.XFMR.1020 | 2024-09-24 | 2024-09-25 |  | ELIASE | 02 | 1 |
| PH01.XFMR.1040 |  | XFMR Install rebar transformer pad |  | 3d | 2025-10-08 | 2025-10-08 | PH01.XFMR.1030 FF | 2024-09-26 | 2024-09-30 |  | ELIASE | 02 | 1 |
| PH01.XFMR.1050 |  | XFMR Electrical inspection |  | 1d | 2025-10-08 | 2025-10-08 | PH01.XFMR.1030 | 2024-10-08 | 2024-10-08 |  | ELIASE | 02 | 1 |
| PH01.XFMR.1060 |  | XFMR Rebar inspection |  | 1d | 2025-10-08 | 2025-10-08 | PH01.XFMR.1040, PH01.XFMR.1050 | 2024-10-09 | 2024-10-09 |  | ELIASE | 02 | 1 |
| PH01.XFMR.1070 |  | XFMR Pour concrete |  | 1d | 2025-10-08 | 2025-10-08 | PH01.XFMR.1060 | 2024-10-10 | 2024-10-10 |  | ELIASE | 02 | 1 |
| PH01.XFMR.1080 |  | XFMR Remove forms |  | 2d | 2025-10-08 | 2025-10-08 | PH01.XFMR.1070 FF | 2024-10-11 | 2024-10-15 |  | ELIASE | 02 | 1 |
| PH01.XFMR.1090 |  | XFMR Install transformer |  | 2d | 2025-10-08 | 2025-10-08 | PH01.PR.1040, PH01.XFMR.1080, PH01.XFMR.1120 | 2024-11-06 | 2024-11-07 |  | ELIASE | 02 | 1 |
| PH01.XFMR.1100 |  | XFMR Install cable bus to electrical room |  | 10d | 2025-10-08 | 2025-10-08 | PH01.PR.1160, PH01.XFMR.1090 | 2024-11-26 | 2024-12-10 |  | ELIASE | 02 | 1 |
| PH01.XFMR.1110 |  | XFMR Pull and terminate to MV SWGR |  | 10d | 2025-10-08 | 2025-10-08 | PH01.XFMR.1090 | 2024-11-08 | 2024-11-22 |  | ELIASE | 02 | 1 |
| PH01.XFMR.1120 |  | Core Drill and Run Control Conduit from second level PH1 - PH5 |  | 5d | 2025-10-08 | 2025-10-08 | PH01.M.1000 SS | 2024-09-16 | 2024-09-20 |  | ELIASE | 02 | 1 |

| ID | WBS | Activity | Duration | Start | Finish | Predecessors | Planned start | Planned finish | Calendar | SCHDULE UPDATE | 06 -GC - Building Levels | 05 -GC - Building Phase | user_text |
| --- | --- | --- | --- | --- | --- | --- | --- | --- | --- | --- | --- | --- | --- |
|  | 1 | **Structural Steel in Generator Yard Phases 1 - 10** |  | 2025-10-08 | 2025-10-08 |  |  |  |  |  |  |  |  |
| PH1-10-1000 |  | Excavate Footers for Structural Steel Section 1 | 2d | 2025-10-08 | 2025-10-08 | PH01.M.1000 SS | 2024-09-16 | 2024-09-17 |  | ELIASE |  |  |  |
| PH1-10-1010 |  | Form Footers for Structural Steel Section 1 | 2d | 2025-10-08 | 2025-10-08 | PH1-10-1000 | 2024-09-24 | 2024-09-25 |  | ELIASE |  |  |  |
| PH1-10-1020 |  | Rebar & Anchors for Structural Steel Footers Section 1 | 2d | 2025-10-08 | 2025-10-08 | PH1-10-1010 | 2024-09-26 | 2024-09-27 |  | ELIASE |  |  |  |
| PH1-10-1030 |  | Pour Footers for Structural Steel Section 1 | 2d | 2025-10-08 | 2025-10-08 | PH1-10-1020 | 2024-10-07 | 2024-10-08 |  | ELIASE |  |  |  |
| PH1-10-1040 |  | Excavate Footers for Structural Steel Section 2 | 2d | 2025-10-08 | 2025-10-08 | PH1-10-1030 | 2024-10-09 | 2024-10-10 |  | ELIASE |  |  |  |
| PH1-10-1050 |  | Form Footers for Structural Steel Section 2 | 2d | 2025-10-08 | 2025-10-08 | PH1-10-1040 | 2024-10-11 | 2024-10-15 |  | ELIASE |  |  |  |
| PH1-10-1060 |  | Rebar & Anchors for Structural Steel Footers Section 2 | 2d | 2025-10-08 | 2025-10-08 | PH1-10-1050 SS | 2024-10-15 | 2024-10-16 |  | ELIASE |  |  |  |
| PH1-10-1070 |  | Pour Footers for Structural Steel Section 2 | 1d | 2025-10-08 | 2025-10-08 | PH1-10-1060 | 2024-10-17 | 2024-10-17 |  | ELIASE |  |  |  |
| PH1-10-1080 |  | Excavate Footers for Structural Steel Section 3 | 2d | 2025-10-08 | 2025-10-08 | PH1-10-1070 | 2024-10-18 | 2024-10-21 |  | ELIASE |  |  |  |
| PH1-10-1090 |  | Erect & Detail Section 1 Structural Steel in Generator Yard | 10d | 2025-10-08 | 2025-10-08 | PH01.PR.1110, PH1-10-1030, PH01.GEN.1080, PH01.M.1000 SS | 2024-11-04 | 2024-11-18 |  | ELIASE |  |  |  |
| PH1-10-1100 |  | Form Footers for Structural Steel Section 3 | 2d | 2025-10-08 | 2025-10-08 | PH1-10-1080 | 2024-10-21 | 2024-10-22 |  | ELIASE |  |  |  |
| PH1-10-1110 |  | Rebar & Anchors for Structural Steel Footers Section 3 | 2d | 2025-10-08 | 2025-10-08 | PH1-10-1100 | 2024-10-23 | 2024-10-24 |  | ELIASE |  |  |  |
| PH1-10-1120 |  | Pour Footers for Structural Steel Section 3 | 1d | 2025-10-08 | 2025-10-08 | PH1-10-1110 | 2024-11-04 | 2024-11-04 |  | ELIASE |  |  |  |
| PH1-10-1130 |  | Erect & Detail Section 2 Structural Steel in Generator Yard | 12d | 2025-10-08 | 2025-10-08 | PH1-10-1070, PH1-10-1090 FF, PH2-10.GEN.1200 | 2024-11-19 | 2024-12-05 |  | ELIASE |  |  |  |
| PH1-10-1140 |  | Erect & Detail Section 3 Structural Steel in Generator Yard | 12d | 2025-10-08 | 2025-10-08 | PH1-10-1120 FF, PH1-10-1130 FF | 2024-12-06 | 2024-12-23 |  | ELIASE |  |  |  |
|  | 3 | **IW Tanks** |  | 2025-10-08 | 2025-10-08 |  |  |  |  |  |  |  |  |
| PH01.IW.1000 |  | IW Install IW tanks (3 simutaneously) | 15d | 2025-10-08 | 2025-10-08 | PH01.PR.1150 | 2024-10-10 | 2024-10-31 |  | ELIASE | 02 | 1 |  |
| PH01.IW.1010 |  | IW Make IW connections | 15d | 2025-10-08 | 2025-10-08 | PH01.IW.1000 | 2024-11-25 | 2024-12-16 |  | ELIASE | 02 | 1 |  |
| PH01.IW.1020 |  | IW Fill and test IW tanks | 11d | 2025-10-08 | 2025-10-08 | PH01.IW.1010 FF | 2024-12-16 | 2024-12-31 |  | ELIASE | 02 | 1 |  |
|  | 1 | **Office Area** |  | 2025-10-08 | 2025-10-08 |  |  |  |  |  |  |  |  |
|  | 1 | **Level 1** |  | 2025-10-08 | 2025-10-08 |  |  |  |  |  |  |  |  |
| PH01.L1.1000 |  | Office L1 Install IW Piping | 15d | 2025-10-08 | 2025-10-08 | PH01.L1.1441, PH01.M.1000 SS | 2024-09-23 | 2024-10-11 |  |  | 02 | 1 |  |
| PH01.L1.1010 |  | Office L1 Install OH electrical and fire alarm Hangers | 5d | 2025-10-08 | 2025-10-08 | PH01.L1.1100 SS+3d, PH01.M.1000 SS | 2024-10-30 | 2024-11-05 |  |  | 02 | 1 | Level 2 Office area will run |
| PH01.L1.1020 |  | Office L1 Install OH fire protection Hangers | 5d | 2025-10-08 | 2025-10-08 | PH01.L1.1100 SS+3d, PH01.L1.1360 SS+3d, PH01.M.1000 SS | 2024-10-30 | 2024-11-05 |  |  | 02 | 1 | simutaneously with Level 1 |
| PH01.L1.1030 |  | Office L1 Layout walls | 5d | 2025-10-08 | 2025-10-08 | PH01.M.1110 SS | 2024-09-17 | 2024-09-23 |  |  | 02 | 1 |  |
| PH01.L1.1040 |  | Office L1 Frame walls | 15d | 2025-10-08 | 2025-10-08 | PH01.L1.1443 FF, PH01.L1.1340 SS, PH01.L1.1030, PH01.M.1000 SS | 2024-09-23 | 2024-10-11 |  |  | 02 | 1 |  |
| PH01.L1.1050 |  | Office L1 Wall Electrical rough-in | 10d | 2025-10-08 | 2025-10-08 | PH01.L1.1040 FF | 2024-10-07 | 2024-10-21 |  |  | 02 | 1 |  |
| PH01.L1.1060 |  | Office L1 Wall Mechanical rough-in | 10d | 2025-10-08 | 2025-10-08 | PH01.L1.1040 FF | 2024-10-07 | 2024-10-21 |  |  | 02 | 1 |  |
| PH01.L1.1070 |  | Office L1 Wall Plumbing rough-in | 10d | 2025-10-08 | 2025-10-08 | PH01.L1.1040 FF | 2024-10-07 | 2024-10-21 |  |  | 02 | 1 |  |
| PH01.L1.1080 |  | Office L1 In wall inspection | 2d | 2025-10-08 | 2025-10-08 | PH01.L1.1070, PH01.L1.1060, PH01.L1.1050 | 2024-10-28 | 2024-10-29 |  |  | 02 | 1 |  |
| PH01.L1.1090 |  | Office L1 Install Below 12 ft drywall | 8d | 2025-10-08 | 2025-10-08 | PH01.L1.1150 SS+5d, PH01.L1.1380 SS+3d, PH01.L1.1130 FF, PH01.L1.1130, PH01.L1.1080 | 2024-11-19 | 2024-11-29 |  |  | 02 | 1 |  |
| PH01.L1.1100 |  | Office L1 Finish Above 12 ft Drywall | 10d | 2025-10-08 | 2025-10-08 | PH01.L1.1360 FF+5d | 2024-10-25 | 2024-11-07 |  |  | 02 | 1 |  |
| PH01.L1.1110 |  | Office L1 Install fire protection drops | 5d | 2025-10-08 | 2025-10-08 | PH01.L1.1410, PH01.L1.1330 SS+5d, PH01.L1.1100 | 2024-12-09 | 2024-12-13 |  |  | 02 | 1 |  |
| PH01.L1.1120 |  | Office L1 Install above ceiling plumbing | 0d | 2025-10-08 | 2025-10-08 | PH01.L1.1330 FF, PH01.L1.1100 | 2024-12-27 | 2024-12-27 |  |  | 02 | 1 |  |
| PH01.L1.1130 |  | Office L1 Install above ceiling ductwork | 10d | 2025-10-08 | 2025-10-08 | PH01.L1.1390, PH01.L1.1100 FF+5d | 2024-11-04 | 2024-11-18 |  |  | 02 | 1 |  |
| PH01.L1.1140 |  | Office L1 Install HVAC equipment | 3d | 2025-10-08 | 2025-10-08 | PH01.L1.1330 SS+5d, PH01.L1.1130, PH01.L1.1100 | 2024-12-09 | 2024-12-11 |  |  | 02 | 1 |  |
| PH01.L1.1150 |  | Office L1 Install above ceiling electrical + Tray | 10d | 2025-10-08 | 2025-10-08 | PH01.L1.1400 SS+4d, PH01.L1.1100 | 2024-11-04 | 2024-11-18 |  |  | 02 | 1 |  |
| PH01.L1.1160 |  | Office L1 Install ceiling wire | 5d | 2025-10-08 | 2025-10-08 | PH01.L1.1100 | 2024-12-09 | 2024-12-13 |  |  | 02 | 1 |  |
| PH01.L1.1170 |  | Office L1 Make connections to HVAC equipment | 5d | 2025-10-08 | 2025-10-08 | PH01.L1.1140 | 2024-12-13 | 2024-12-18 | Calendar 06 - 6 Day Work Week w/ Mass. Holidays |  | 02 | 1 |  |
| PH01.L1.1180 |  | Office L1 Install ACT grid | 4d | 2025-10-08 | 2025-10-08 | PH01.L1.1020, PH01.L1.1010, PH01.L1.1000, PH01.L1.1160, PH01.L1.1170 SS+3d | 2024-12-28 | 2025-01-02 | Calendar 06 - 6 Day Work Week w/ Mass. Holidays |  | 02 | 1 |  |
| PH01.L1.1190 |  | Office L1 Install sprinkler heads | 5d | 2025-10-08 | 2025-10-08 | PH01.L1.1180 | 2024-12-23 | 2024-12-30 |  |  | 02 | 1 |  |
| PH01.L1.1200 |  | Office L1 Install lighting | 7d | 2025-10-08 | 2025-10-08 | PH01.L1.1180 SS | 2024-12-23 | 2024-12-31 | Calendar 06 - 6 Day Work Week w/ Mass. Holidays |  | 02 | 1 |  |
| PH01.L1.1210 |  | Office L1 Above ceiling inspection | 2d | 2025-10-08 | 2025-10-08 | PH01.L1.1020, PH01.L1.1010, PH01.L1.1350, PH01.L1.1150, PH01.L1.1200, PH01.L1.1120, PH01.L1.1110 | 2024-12-31 | 2025-01-02 |  |  | 02 | 1 |  |
| PH01.L1.1220 |  | Office L1 Install ACT Tiles | 3d | 2025-10-08 | 2025-10-08 | PH01.L1.1190, PH01.L1.1210 | 2025-01-21 | 2025-01-23 | Calendar 06 - 6 Day Work Week w/ Mass. Holidays |  | 02 | 1 |  |
| PH01.L1.1230 |  | Office L1 Install Millwork | 2d | 2025-10-08 | 2025-10-08 | PH01.L1.1180 SS | 2025-01-21 | 2025-01-22 | Calendar 06 - 6 Day Work Week w/ Mass. Holidays |  | 02 | 1 |  |
| PH01.L1.1240 |  | Office L1 Electrical trim out | 5d | 2025-10-08 | 2025-10-08 | PH01.L1.1220 FF, WTHR-10 | 2025-01-09 | 2025-01-14 | Calendar 06 - 6 Day Work Week w/ Mass. Holidays |  | 02 | 1 |  |
| PH01.L1.1250 |  | Office L1 HVAC Trim out | 10d | 2025-10-08 | 2025-10-08 | PH01.L1.1180 | 2024-12-23 | 2025-01-07 |  |  | 02 | 1 |  |
| PH01.L1.1260 |  | Office L1 Plumbing trim out | 6d | 2025-10-08 | 2025-10-08 | PH01.L1.1230 FF, PH01.L1.1453 FF, WTHR-10 | 2025-01-03 | 2025-01-10 |  |  | 02 | 1 |  |
| PH01.L1.1270 |  | Office L1 Install doors and hardware | 6d | 2025-10-08 | 2025-10-08 | PH01.L1.1220 FF, WTHR-10 | 2025-01-03 | 2025-01-10 |  |  | 02 | 1 |  |
| PH01.L1.1280 |  | Office L1 Paint second coat | 2d | 2025-10-08 | 2025-10-08 | PH01.L1.1220, PH01.L1.1260, PH01.L1.1270, PH01.L1.1250, PH01.L1.1240 SS+3d, PH01.L1.1290 | 2025-02-10 | 2025-02-11 | Calendar 06 - 6 Day Work Week w/ Mass. Holidays |  | 02 | 1 |  |
| PH01.L1.1290 |  | Office L1 Install Flooring | 2d | 2025-10-08 | 2025-10-08 | PH01.L1.1230 | 2025-02-03 | 2025-02-04 | Calendar 06 - 6 Day Work Week w/ Mass. Holidays |  | 02 | 1 |  |
| PH01.L1.1300 |  | Office L1 Install furniture | 2d | 2025-10-08 | 2025-10-08 | PH01.L1.1320 | 2025-03-03 | 2025-03-04 | Calendar 06 - 6 Day Work Week w/ Mass. Holidays |  | 02 | 1 |  |
| PH01.L1.1310 |  | Office L1 Make furniture connections | 2d | 2025-10-08 | 2025-10-08 | PH01.L1.1300 | 2025-03-05 | 2025-03-06 | Calendar 06 - 6 Day Work Week w/ Mass. Holidays |  | 02 | 1 |  |
| PH01.L1.1320 |  | Office L1 Clean up | 1d | 2025-10-08 | 2025-10-08 | PH01.L1.1280 | 2025-02-18 | 2025-02-18 |  |  | 02 | 1 |  |
| PH01.L1.1330 |  | Office L1 Paint Below 12 ft Drywall | 10d | 2025-10-08 | 2025-10-08 | PH01.L1.1370 FF+5d, PH01.L1.1090, PH01.L1.1100 SS+8d | 2024-12-02 | 2024-12-13 |  |  | 02 | 1 |  |
| PH01.L1.1340 |  | Office L1 Install HVAC hangers | 5d | 2025-10-08 | 2025-10-08 | PH01.L1.1030 | 2024-09-16 | 2024-09-20 |  |  | 02 | 1 |  |
| PH01.L1.1350 |  | Office L1 Install refrigeration lines | 10d | 2025-10-08 | 2025-10-08 | PH01.L1.1100 | 2024-11-04 | 2024-11-18 |  |  | 02 | 1 |  |
| PH01.L1.1360 |  | Office L1 Install Above 12 ft Drywall | 6d | 2025-10-08 | 2025-10-08 | PH01.L1.1070 FF | 2024-10-24 | 2024-10-31 |  |  | 02 | 1 |  |
| PH01.L1.1370 |  | Office L1 Finish Below 12 ft Drywall | 10d | 2025-10-08 | 2025-10-08 | PH01.L1.1090 FF+5d | 2024-11-22 | 2024-12-06 |  |  | 02 | 1 |  |
| PH01.L1.1380 |  | Office L1 Insulate above ceiling ductwork | 5d | 2025-10-08 | 2025-10-08 | PH01.L1.1130 FF+2d | 2024-11-14 | 2024-11-20 |  |  | 02 | 1 |  |
| PH01.L1.1390 |  | Office L1 Install above ceiling ductwork Hangers | 5d | 2025-10-08 | 2025-10-08 | PH01.L1.1100 SS+3d | 2024-10-30 | 2024-11-05 | 5 day Work week Mon-Fri Specific Holidays |  | 02 | 1 |  |
| PH01.L1.1400 |  | Office L1 Install OH electrical and fire alarm | 5d | 2025-10-08 | 2025-10-08 | PH01.L1.1010 | 2024-10-24 | 2024-10-30 |  |  | 02 | 1 | Level 2 Office area will run |
| PH01.L1.1410 |  | Office L1 Install OH fire protection | 5d | 2025-10-08 | 2025-10-08 | PH01.L1.1020 | 2024-10-24 | 2024-10-30 |  |  | 02 | 1 | simutaneously with Level 1 |
| PH01.L1.1420 |  | Office L1 Testing Doors and Hardware | 3d | 2025-10-08 | 2025-10-08 | PH01.L1.1270 SS+2d | 2025-02-03 | 2025-02-05 | Calendar 06 - 6 Day Work Week w/ Mass. Holidays |  | 02 | 1 |  |
| PH01.L1.1430 |  | Office L1 Install NEA Doors | 5d | 2025-10-08 | 2025-10-08 | PH01.L1.1170 FF | 2024-12-23 | 2024-12-30 |  |  | 02 | 1 |  |
| PH01.L1.1440 |  | Office L1 Saw Cutting For Plumbing | 10d | 2025-10-08 | 2025-10-08 | PH01.L1.1030 | 2024-09-16 | 2024-09-27 |  |  | 02 | 1 |  |
| PH01.L1.1441 |  | Office L1 Layout IW Piping | 5d | 2025-10-08 | 2025-10-08 | PH01.M.1000 SS | 2024-09-16 | 2024-09-20 |  |  | 02 | 1 |  |
| PH01.L1.1442 |  | Office L1 Drain Install | 4d | 2025-10-08 | 2025-10-08 | PH01.L1.1440 FF+2d | 2024-10-02 | 2024-10-07 |  |  | 02 | 1 |  |
| PH01.L1.1443 |  | Office L1 Slab On Grade Infill | 3d | 2025-10-08 | 2025-10-08 | PH01.L1.1442 FF+2d | 2024-10-07 | 2024-10-09 |  |  | 02 | 1 |  |

| ID | WBS | Activity | Duration | Start | Finish | Predecessors | Planned start | Planned finish | Calendar | 06 -GC - Building Levels | 05 -GC - Building Phase | user_text |
| --- | --- | --- | --- | --- | --- | --- | --- | --- | --- | --- | --- | --- |
| PH01.L1.1453 |  | Office L1 Install Bathroom Tiles | 4d | 2025-10-08 | 2025-10-08 | PH01.L1.1120 | 2025-01-06 | 2025-01-09 | Calendar 06 - 6 Day Work Week w/ Mass. Holidays | 02 | 1 |  |
|  | 2 | **Level 2** |  | 2025-10-08 | 2025-10-08 |  |  |  |  |  |  |  |
| PH01.L2.1000 |  | Office L2 Install IW Piping | 15d | 2025-10-08 | 2025-10-08 | PH02.L2.1445, PH01.M.1000 SS | 2024-09-23 | 2024-10-11 |  | 02 | 1 |  |
| PH01.L2.1010 |  | Office L2 Install OH electrical and fire alarm Hangers | 5d | 2025-10-08 | 2025-10-08 | PH01.L2.1100 SS+3d, PH01.L2.1080 FF, PH01.L2.1080, PH01.M.1000 SS | 2024-10-22 | 2024-10-28 |  | 02 | 1 | Level 2 Office area will run |
| PH01.L2.1020 |  | Office L2 Install OH fire protection Hangers | 5d | 2025-10-08 | 2025-10-08 | PH01.L2.1100 SS+3d, PH01.L2.1360 SS+3d, PH01.L2.1080, PH01.M.1000 SS | 2024-10-22 | 2024-10-28 |  | 02 | 1 | simutaneously with Level 1 |
| PH01.L2.1030 |  | Office L2 Layout walls | 5d | 2025-10-08 | 2025-10-08 | PH01.M.1000 SS, PH01.M.1110 SS | 2024-09-16 | 2024-09-20 |  | 02 | 1 |  |
| PH01.L2.1040 |  | Office L2 Frame walls | 15d | 2025-10-08 | 2025-10-08 | PH01.L2.1340 FF, PH01.L2.1030 | 2024-09-23 | 2024-10-11 |  | 02 | 1 |  |
| PH01.L2.1050 |  | Office L2 Wall Electrical rough-in | 10d | 2025-10-08 | 2025-10-08 | PH01.L2.1040 FF | 2024-09-25 | 2024-10-08 |  | 02 | 1 |  |
| PH01.L2.1060 |  | Office L2 Wall Mechanical rough-in | 10d | 2025-10-08 | 2025-10-08 | PH01.L2.1040 FF | 2024-09-25 | 2024-10-08 |  | 02 | 1 |  |
| PH01.L2.1070 |  | Office L2 Wall Plumbing rough-in | 10d | 2025-10-08 | 2025-10-08 | PH01.L2.1040 FF | 2024-09-25 | 2024-10-08 |  | 02 | 1 |  |
| PH01.L2.1080 |  | Office L2 In wall inspection | 2d | 2025-10-08 | 2025-10-08 | PH01.L2.1070, PH01.L2.1060, PH01.L2.1050 | 2024-10-09 | 2024-10-10 |  | 02 | 1 |  |
| PH01.L2.1090 |  | Office L2 Install Below 12 ft drywall | 8d | 2025-10-08 | 2025-10-08 | PH01.L2.1150 SS+5d, PH01.L2.1380 SS+3d, PH01.L2.1130 FF, PH01.L2.1130, PH01.L2.1080 | 2024-11-05 | 2024-11-18 |  | 02 | 1 |  |
| PH01.L2.1100 |  | Office L2 Finish Above 12 ft Drywall | 10d | 2025-10-08 | 2025-10-08 | PH01.L2.1360 FF+5d | 2024-10-17 | 2024-10-30 |  | 02 | 1 |  |
| PH01.L2.1110 |  | Office L2 Install fire protection drops | 5d | 2025-10-08 | 2025-10-08 | PH01.L2.1410, PH01.L2.1330 SS+5d, PH01.L2.1100 | 2024-11-25 | 2024-12-02 |  | 02 | 1 |  |
| PH01.L2.1120 |  | Office L2 Install above ceiling plumbing | 5d | 2025-10-08 | 2025-10-08 | PH01.L2.1330 SS+5d, PH01.L2.1100 | 2024-11-25 | 2024-12-02 |  | 02 | 1 |  |
| PH01.L2.1130 |  | Office L2 Install above ceiling ductwork | 10d | 2025-10-08 | 2025-10-08 | PH01.L2.1390, PH01.L2.1100 FF+5d | 2024-10-17 | 2024-10-31 |  | 02 | 1 |  |
| PH01.L2.1140 |  | Office L2 Install HVAC equipment | 3d | 2025-10-08 | 2025-10-08 | PH01.L2.1330 SS+5d, PH01.L2.1130, PH01.L2.1100 | 2024-11-25 | 2024-11-27 |  | 02 | 1 |  |
| PH01.L2.1150 |  | Office L2 Install above ceiling electrical + Tray | 10d | 2025-10-08 | 2025-10-08 | PH01.L2.1400 SS+3d, PH01.L2.1100 | 2024-10-28 | 2024-11-08 |  | 02 | 1 |  |
| PH01.L2.1160 |  | Office L2 Install ceiling wire | 5d | 2025-10-08 | 2025-10-08 | PH01.L2.1100 | 2024-11-25 | 2024-12-03 |  | 02 | 1 |  |
| PH01.L2.1170 |  | Office L2 Make connections to HVAC equipment | 5d | 2025-10-08 | 2025-10-08 | PH01.L2.1140 | 2024-11-29 | 2024-12-05 |  | 02 | 1 |  |
| PH01.L2.1180 |  | Office L2 Install ACT grid | 7d | 2025-10-08 | 2025-10-08 | PH01.L2.1020, PH01.L2.1010, PH01.L2.1000, PH01.L2.1160, PH01.L2.1170 SS+4d, PH01.L2.1170 FF | 2024-12-09 | 2024-12-17 |  | 02 | 1 |  |
| PH01.L2.1190 |  | Office L2 Install sprinkler heads | 5d | 2025-10-08 | 2025-10-08 | PH01.L2.1180 | 2024-12-23 | 2024-12-28 | Calendar 06 - 6 Day Work Week w/ Mass. Holidays | 02 | 1 |  |
| PH01.L2.1200 |  | Office L2 Install lighting | 8d | 2025-10-08 | 2025-10-08 | PH01.L2.1180 FF | 2024-12-18 | 2024-12-30 |  | 02 | 1 |  |
| PH01.L2.1210 |  | Office L2 Above ceiling inspection | 2d | 2025-10-08 | 2025-10-08 | PH01.L2.1020, PH01.L2.1010, PH01.L2.1350, PH01.L2.1150, PH01.L2.1200, PH01.L2.1120, PH01.L2.1110, WTHR-10 | 2024-12-27 | 2024-12-30 |  | 02 | 1 |  |
| PH01.L2.1220 |  | Office L2 Install ACT Tiles | 4d | 2025-10-08 | 2025-10-08 | PH01.L2.1190, PH01.L2.1210 | 2024-12-31 | 2025-01-04 | Calendar 06 - 6 Day Work Week w/ Mass. Holidays | 02 | 1 |  |
| PH01.L2.1230 |  | Office L2 Install millwork | 2d | 2025-10-08 | 2025-10-08 | PH01.L2.1220 SS, PH01.L2.1180 SS+2d | 2025-01-21 | 2025-01-22 | Calendar 06 - 6 Day Work Week w/ Mass. Holidays | 02 | 1 |  |
| PH01.L2.1240 |  | Office L2 Electrical trim out | 5d | 2025-10-08 | 2025-10-08 | PH01.L2.1220 SS, WTHR-10 | 2024-12-31 | 2025-01-06 | Calendar 06 - 6 Day Work Week w/ Mass. Holidays | 02 | 1 |  |
| PH01.L2.1250 |  | Office L2 HVAC Trim out | 10d | 2025-10-08 | 2025-10-08 | PH01.L2.1180 FF | 2024-12-18 | 2025-01-02 |  | 02 | 1 |  |
| PH01.L2.1260 |  | Office L2 Plumbing trim out | 3d | 2025-10-08 | 2025-10-08 | PH01.L2.1230 FF, PH01.L2.1440 FF, WTHR-10 | 2025-01-03 | 2025-01-06 | Calendar 06 - 6 Day Work Week w/ Mass. Holidays | 02 | 1 |  |
| PH01.L2.1270 |  | Office L2 Install doors and hardware | 6d | 2025-10-08 | 2025-10-08 | PH01.L2.1180, WTHR-10 | 2024-12-23 | 2024-12-31 |  | 02 | 1 |  |
| PH01.L2.1280 |  | Office L2 Paint second coat | 2d | 2025-10-08 | 2025-10-08 | PH01.L2.1220, PH01.L2.1260, PH01.L2.1270, PH01.L2.1250, PH01.L2.1240, PH01.L2.1290 | 2025-01-23 | 2025-01-24 | Calendar 06 - 6 Day Work Week w/ Mass. Holidays | 02 | 1 |  |
| PH01.L2.1290 |  | Office L2 Install flooring | 5d | 2025-10-08 | 2025-10-08 | PH01.L2.1270 FF | 2025-01-02 | 2025-01-07 | Calendar 06 - 6 Day Work Week w/ Mass. Holidays | 02 | 1 |  |
| PH01.L2.1300 |  | Office L2 Install furniture | 2d | 2025-10-08 | 2025-10-08 | PH01.L2.1320 | 2025-03-03 | 2025-03-04 | Calendar 06 - 6 Day Work Week w/ Mass. Holidays | 02 | 1 |  |
| PH01.L2.1310 |  | Office L2 Make furniture connections | 2d | 2025-10-08 | 2025-10-08 | PH01.L2.1300 | 2025-03-05 | 2025-03-06 | Calendar 06 - 6 Day Work Week w/ Mass. Holidays | 02 | 1 |  |
| PH01.L2.1320 |  | Office L2 Clean up | 1d | 2025-10-08 | 2025-10-08 | PH01.L2.1280 | 2025-02-18 | 2025-02-18 | Calendar 06 - 6 Day Work Week w/ Mass. Holidays | 02 | 1 |  |
| PH01.L2.1330 |  | Office L2 Paint Below 12 ft Drywall | 10d | 2025-10-08 | 2025-10-08 | PH01.L2.1370 FF+5d, PH01.L2.1090, PH01.L2.1100 SS+8d | 2024-11-18 | 2024-12-02 |  | 02 | 1 |  |
| PH01.L2.1340 |  | Office L2 Install HVAC hangers | 5d | 2025-10-08 | 2025-10-08 | PH01.M.1000 SS | 2024-09-23 | 2024-09-27 |  | 02 | 1 |  |
| PH01.L2.1350 |  | Office L2 Install refrigeration lines | 10d | 2025-10-08 | 2025-10-08 | PH01.L2.1130, PH01.L2.1100 | 2024-10-31 | 2024-11-15 |  | 02 | 1 |  |
| PH01.L2.1360 |  | Office L2 Install Above 12 ft Drywall | 8d | 2025-10-08 | 2025-10-08 | PH01.L2.1080 | 2024-10-11 | 2024-10-23 |  | 02 | 1 |  |
| PH01.L2.1370 |  | Office L2 Finish Below 12 ft Drywall | 10d | 2025-10-08 | 2025-10-08 | PH01.L2.1090 FF+5d | 2024-11-08 | 2024-11-25 |  | 02 | 1 |  |
| PH01.L2.1380 |  | Office L2 Insulate above ceiling ductwork | 5d | 2025-10-08 | 2025-10-08 | PH01.L2.1130 | 2024-10-31 | 2024-11-07 |  | 02 | 1 |  |
| PH01.L2.1390 |  | Office L2 Install above ceiling ductwork Hangers | 5d | 2025-10-08 | 2025-10-08 | PH01.L2.1100 SS+3d, PH01.L2.1080 | 2024-10-22 | 2024-10-28 | 5 day Work week Mon-Fri Specific Holidays | 02 | 1 |  |
| PH01.L2.1400 |  | Office L2 Install OH electrical and fire alarm | 5d | 2025-10-08 | 2025-10-08 | PH01.L2.1010 | 2024-10-21 | 2024-10-25 |  | 02 | 1 | Level 2 Office area will run |
| PH01.L2.1410 |  | Office L2 Install OH fire protection | 5d | 2025-10-08 | 2025-10-08 | PH01.L2.1020 | 2024-10-28 | 2024-11-01 |  | 02 | 1 | simutaneously with Level 1 |
| PH01.L2.1420 |  | Office L2 Testing Doors and Hardware | 6d | 2025-10-08 | 2025-10-08 | PH01.L2.1270 SS+2d, WTHR-10 | 2024-12-26 | 2025-01-03 |  | 02 | 1 |  |
| PH01.L2.1430 |  | Office L2 Install NEA Doors | 5d | 2025-10-08 | 2025-10-08 | PH01.L2.1170 FF+3d | 2024-12-04 | 2024-12-10 |  | 02 | 1 |  |
| PH01.L2.1440 |  | Office L2 Install Bathroom Tiles | 4d | 2025-10-08 | 2025-10-08 | PH01.L2.1120, PH01.L2.1210 SS, WTHR-10 | 2025-01-06 | 2025-01-09 | Calendar 06 - 6 Day Work Week w/ Mass. Holidays | 02 | 1 |  |
| PH02.L2.1445 |  | Office L2 Layout IW Piping | 5d | 2025-10-08 | 2025-10-08 | PH01.L2.1030 | 2024-09-16 | 2024-09-20 |  | 02 | 1 |  |

| ID | WBS | Activity | Duration | Start | Finish | Predecessors | Planned start | Planned finish | 06 -GC - Building Levels | 05 -GC - Building Phase | user_text |
| --- | --- | --- | --- | --- | --- | --- | --- | --- | --- | --- | --- |
|  | 3 | **Roof** |  | 2025-10-08 | 2025-10-08 |  |  |  |  |  |  |
| PH01.RF.1000 |  | Roof Install exhaust fans | 2d | 2025-10-08 | 2025-10-08 | PH01.PR.1020 | 2024-10-08 | 2024-10-09 | 02 | 1 |  |
| PH01.RF.1010 |  | Roof Install exhaust fan electrical | 20d | 2025-10-08 | 2025-10-08 | PH01.RF.1000 | 2024-10-10 | 2024-11-07 | 02 | 1 |  |
| PH01.RF.1020 |  | Roof Install DOAS | 6d | 2025-10-08 | 2025-10-08 | PH01.PR.1120 | 2024-11-07 | 2024-11-15 | 02 | 1 |  |
| PH01.RF.1030 |  | Roof Install DOAS electrical | 2d | 2025-10-08 | 2025-10-08 | PH01.RF.1120, PH01.RF.1020 | 2024-11-20 | 2024-11-21 | 02 | 1 |  |
| PH01.RF.1040 |  | Roof Install condenser units | 15d | 2025-10-08 | 2025-10-08 | PH09.PR.1140, PH08.PR.1140, PH07.PR.1140, PH06.PR.1140, PH05.PR.1140, PH04.PR.1140, PH03.PR.1140, PH10.PR.1140, PH02.PR.1140, PH01.PR.1140 | 2024-09-23 | 2024-10-11 | 02 | 1 |  |
| PH01.RF.1050 |  | Roof Install condenser unit electrical | 15d | 2025-10-08 | 2025-10-08 | PH01.RF.1040 SS+2d | 2024-09-25 | 2024-10-16 | 02 | 1 |  |
| PH01.RF.1060 |  | Roof Install Refrigeration Piping | 15d | 2025-10-08 | 2025-10-08 | PH01.RF.1050 SS+2d, PH01.RF.1040 SS+2d | 2024-10-02 | 2024-10-23 | 02 | 1 |  |
| PH01.RF.1070 |  | Roof Install VRF | 10d | 2025-10-08 | 2025-10-08 | PH01.RF.1040 SS+4d | 2024-10-28 | 2024-11-08 | 02 | 1 |  |
| PH01.RF.1110 |  | Roof Roofing patch back | 1d | 2025-10-08 | 2025-10-08 | PH01.RF.1070 | 2024-11-18 | 2024-11-18 | 02 | 1 |  |
| PH01.RF.1120 |  | Roof Duct installation | 1d | 2025-10-08 | 2025-10-08 | PH01.RF.1110 | 2024-11-19 | 2024-11-19 | 02 | 1 |  |
|  | 4 | **Electrical Rooms** |  | 2025-10-08 | 2025-10-08 |  |  |  |  |  |  |
|  | 1 | **C1.1** |  | 2025-10-08 | 2025-10-08 |  |  |  |  |  |  |
| PH01.C1.136 |  | ER C1.1 Install sprinkler heads | 5d | 2025-10-08 | 2025-10-08 | PH01.C1.1860 | 2024-10-16 | 2024-10-22 | 02 | 1 |  |
| PH01.C1.1860 |  | ER C1.1 Install Fire Protection | 1d | 2025-10-08 | 2025-10-08 | PH01.C1.1960, ISSU07.50 | 2024-10-15 | 2024-10-15 | 02 | 1 | All electrical rooms will |
| PH01.C1.1870 |  | ER C1.1 Layout and frame walls | 2d | 2025-10-08 | 2025-10-08 | PH01.M.1000 SS | 2024-09-23 | 2024-09-24 | 02 | 1 | start simutaneously |
| PH01.C1.1880 |  | ER C1.1 Install OAD ductwork Transitions | 6d | 2025-10-08 | 2025-10-08 | PH01.C1.2090 | 2024-09-25 | 2024-10-02 | 02 | 1 |  |
| PH01.C1.1890 |  | ER C1.1 Electrical rough-in | 3d | 2025-10-08 | 2025-10-08 | PH01.C1.1870, PH01.C1.1880 | 2024-10-03 | 2024-10-07 | 02 | 1 |  |
| PH01.C1.1900 |  | ER C1.1 Mechanical rough-in | 2d | 2025-10-08 | 2025-10-08 | PH01.C1.1870, PH01.C1.1880 | 2024-10-03 | 2024-10-04 | 02 | 1 |  |
| PH01.C1.1910 |  | ER C1.1 Fire alarm rough-in | 2d | 2025-10-08 | 2025-10-08 | PH01.C1.1870, PH01.C1.1880 | 2024-10-03 | 2024-10-04 | 02 | 1 |  |
| PH01.C1.1920 |  | ER C1.1 Plumbing rough-in | 2d | 2025-10-08 | 2025-10-08 | PH01.C1.1880, PH01.C1.1870 | 2024-10-03 | 2024-10-04 | 02 | 1 |  |
| PH01.C1.1930 |  | ER C1.1 In wall inspection | 1d | 2025-10-08 | 2025-10-08 | PH01.C1.1910, PH01.C1.1900, PH01.C1.1890, PH01.C1.1920 | 2024-10-08 | 2024-10-08 | 02 | 1 |  |
| PH01.C1.1940 |  | ER C1.1 Install drywall | 3d | 2025-10-08 | 2025-10-08 | PH01.C1.1930 | 2024-10-09 | 2024-10-11 | 02 | 1 |  |
| PH01.C1.1950 |  | ER C1.1 Finish drywall | 5d | 2025-10-08 | 2025-10-08 | PH01.C1.1940 | 2024-10-15 | 2024-10-21 | 02 | 1 |  |
| PH01.C1.1960 |  | ER C1.1 Paint drywall | 2d | 2025-10-08 | 2025-10-08 | PH01.C1.1950 | 2024-10-22 | 2024-10-23 | 02 | 1 |  |
| PH01.C1.1970 |  | ER C1.1 Install OAD dampers + Ductwork | 3d | 2025-10-08 | 2025-10-08 | PH01.C1.1960, PH01.C1.1950 | 2024-10-24 | 2024-10-28 | 02 | 1 |  |
| PH01.C1.1980 |  | ER C1.1 Install split units | 3d | 2025-10-08 | 2025-10-08 | PH01.C1.1970 | 2024-10-28 | 2024-10-30 | 02 | 1 |  |
| PH01.C1.1990 |  | ER C1.1 Install Busway and OH electrical supports | 10d | 2025-10-08 | 2025-10-08 | PH01.C1.1960 SS, PH01.C1.1950 | 2024-10-15 | 2024-10-28 | 02 | 1 |  |
| PH01.C1.2000 |  | ER C1.1 Install Electrical SWGR | 5d | 2025-10-08 | 2025-10-08 | PH01.C1.2130, PH01.C1.1990, PH01.PR.1180 | 2024-10-25 | 2024-10-31 | 02 | 1 |  |
| PH01.C1.2020 |  | ER C1.1 Install electrical Panels and Disconnects | 5d | 2025-10-08 | 2025-10-08 | PH01.C1.1990, PH01.C1.2000, PH01.PR.1190 | 2024-11-01 | 2024-11-07 | 02 | 1 |  |
| PH01.C1.2030 |  | ER C1.1 Pull and Terminate Feeders | 5d | 2025-10-08 | 2025-10-08 | PH01.C1.2020 | 2024-12-02 | 2024-12-06 | 02 | 1 |  |
| PH01.C1.2040 |  | ER C1.1 Install lighting | 3d | 2025-10-08 | 2025-10-08 | PH01.C1.2130 | 2024-11-12 | 2024-11-14 | 02 | 1 |  |
| PH01.C1.2050 |  | ER C1.1 Install accessories (shepherds hook, fire ext) | 1d | 2025-10-08 | 2025-10-08 | PH01.C1.2040 FF, PH01.C1.2040 | 2024-12-23 | 2024-12-23 | 02 | 1 |  |
| PH01.C1.2070 |  | ER C1.1 Clean electrical room | 1d | 2025-10-08 | 2025-10-08 | PH01.C1.2150, PH01.C1.2120, PH01.C1.2040, PH01.C1.1980, PH01.C1.2050, PH01.C1.2030 | 2025-01-06 | 2025-01-06 | 02 | 1 |  |
| PH01.C1.2090 |  | ER C1.1 Install Plenum on Louvers | 2d | 2025-10-08 | 2025-10-08 | PH01.M.1000 SS | 2024-09-23 | 2024-09-24 | 02 | 1 | start simutaneously |
| PH01.C1.2100 |  | ER C1.1 Install Vesda Piping System | 5d | 2025-10-08 | 2025-10-08 | PH01.C1.1960 | 2024-10-15 | 2024-10-21 | 02 | 1 |  |
| PH01.C1.2110 |  | ER C1.1 Install Refrigerant Lines | 5d | 2025-10-08 | 2025-10-08 | PH01.C1.1960 | 2024-10-15 | 2024-10-21 | 02 | 1 |  |
| PH01.C1.2120 |  | ER C1.1 Install ERV | 2d | 2025-10-08 | 2025-10-08 | PH01.C1.2110 | 2024-11-12 | 2024-11-13 | 02 | 1 |  |
| PH01.C1.2130 |  | ER C1.1 Install Cable Trays | 5d | 2025-10-08 | 2025-10-08 | PH01.C1.1990 | 2024-10-21 | 2024-10-25 | 02 | 1 |  |
| PH01.C1.2140 |  | ER C1.1 Install Fire Alarm + Vesda Panel | 3d | 2025-10-08 | 2025-10-08 | PH01.C1.2100 | 2024-10-21 | 2024-10-23 | 02 | 1 |  |
| PH01.C1.2150 |  | ER C1.1 Install Control BMS & EPMS | 4d | 2025-10-08 | 2025-10-08 | PH01.C1.2130 | 2024-11-12 | 2024-11-15 | 02 | 1 |  |

Notes:
- PH01.RF.1050: user_text8: Half installed, waiting to actualize for second half to complete

| ID | WBS | Activity | Duration | Start | Finish | Predecessors | Planned start | Planned finish | 06 -GC - Building Levels | 05 -GC - Building Phase | user_text |
| --- | --- | --- | --- | --- | --- | --- | --- | --- | --- | --- | --- |
|  | 2 | **C2.1** |  | 2025-10-08 | 2025-10-08 |  |  |  |  |  |  |
| PH01.C2.136 |  | ER C2.1 Install sprinkler heads | 5d | 2025-10-08 | 2025-10-08 | PH01.C2.1860 | 2024-10-18 | 2024-10-24 | 02 | 1 |  |
| PH01.C2.1860 |  | ER C2.1 Install Fire Protection | 1d | 2025-10-08 | 2025-10-08 | PH01.C2.1960 | 2024-10-17 | 2024-10-17 | 02 | 1 | All electrical rooms will |
| PH01.C2.1870 |  | ER C2.1 Layout and frame walls | 2d | 2025-10-08 | 2025-10-08 | PH01.M.1000 SS | 2024-09-23 | 2024-09-24 | 02 | 1 | start simutaneously |
| PH01.C2.1880 |  | ER C2.1 Install OAD ductwork Transitions | 6d | 2025-10-08 | 2025-10-08 | PH01.C2.2090 | 2024-09-24 | 2024-10-01 | 02 | 1 |  |
| PH01.C2.1890 |  | ER C2.1 Electrical rough-in | 3d | 2025-10-08 | 2025-10-08 | PH01.C2.1870, PH01.C2.1880 | 2024-10-02 | 2024-10-04 | 02 | 1 |  |
| PH01.C2.1900 |  | ER C2.1 Mechanical rough-in | 3d | 2025-10-08 | 2025-10-08 | PH01.C2.1870, PH01.C2.1880 | 2024-10-02 | 2024-10-04 | 02 | 1 |  |
| PH01.C2.1910 |  | ER C2.1 Fire alarm rough-in | 3d | 2025-10-08 | 2025-10-08 | PH01.C2.1870, PH01.C2.1880 | 2024-10-02 | 2024-10-04 | 02 | 1 |  |
| PH01.C2.1920 |  | ER C2.1 Plumbing rough-in | 3d | 2025-10-08 | 2025-10-08 | PH01.C2.1880, PH01.C2.1870 | 2024-10-02 | 2024-10-04 | 02 | 1 |  |
| PH01.C2.1930 |  | ER C2.1 In wall inspection | 1d | 2025-10-08 | 2025-10-08 | PH01.C2.1910, PH01.C2.1900, PH01.C2.1890, PH01.C2.1920 | 2024-10-07 | 2024-10-07 | 02 | 1 |  |
| PH01.C2.1940 |  | ER C2.1 Install drywall | 3d | 2025-10-08 | 2025-10-08 | PH01.C2.1930 | 2024-10-08 | 2024-10-10 | 02 | 1 |  |
| PH01.C2.1950 |  | ER C2.1 Finish drywall | 5d | 2025-10-08 | 2025-10-08 | PH01.C2.1940 | 2024-10-11 | 2024-10-18 | 02 | 1 |  |
| PH01.C2.1960 |  | ER C2.1 Paint drywall | 2d | 2025-10-08 | 2025-10-08 | PH01.C2.1950 | 2024-10-15 | 2024-10-16 | 02 | 1 |  |
| PH01.C2.1970 |  | ER C2.1 Install OAD dampers + Ductwork | 3d | 2025-10-08 | 2025-10-08 | PH01.C2.1960, PH01.C2.1950 | 2024-10-17 | 2024-10-21 | 02 | 1 |  |
| PH01.C2.1980 |  | ER C2.1 Install split units | 3d | 2025-10-08 | 2025-10-08 | PH01.C2.1990, PH01.C2.1970 | 2024-10-28 | 2024-10-30 | 02 | 1 |  |
| PH01.C2.1990 |  | ER C2.1 Install Busway and OH electrical supports (Please Look at C.1) | 1d | 2025-10-08 | 2025-10-08 | PH01.C2.1960 SS, PH01.C2.1950 | 2024-10-15 | 2024-10-15 | 02 | 1 |  |
| PH01.C2.2000 |  | ER C2.1 Install Electrical SWGR | 5d | 2025-10-08 | 2025-10-08 | PH01.C2.2130, PH01.C2.1990 | 2024-10-23 | 2024-10-29 | 02 | 1 |  |
| PH01.C2.2020 |  | ER C2.1 Install electrical Panels and Disconnects | 5d | 2025-10-08 | 2025-10-08 | PH01.C2.1990, PH01.C2.2000, PH01.PR.1190 | 2024-10-30 | 2024-11-05 | 02 | 1 |  |
| PH01.C2.2030 |  | ER C2.1 Pull and Terminate Feeders | 5d | 2025-10-08 | 2025-10-08 | PH01.C2.2020 | 2024-12-02 | 2024-12-06 | 02 | 1 |  |
| PH01.C2.2040 |  | ER C2.1 Install lighting | 3d | 2025-10-08 | 2025-10-08 | PH01.C2.2130 | 2024-11-12 | 2024-11-14 | 02 | 1 |  |
| PH01.C2.2050 |  | ER C2.1 Install accessories (shepherds hook, fire ext) | 1d | 2025-10-08 | 2025-10-08 | PH01.C2.2040 FF, PH01.C2.2040 | 2024-12-23 | 2024-12-23 | 02 | 1 |  |
| PH01.C2.2070 |  | ER C2.1 Clean electrical room | 1d | 2025-10-08 | 2025-10-08 | PH01.C2.2150, PH01.C2.2120, PH01.C2.2040, PH01.C2.1980, PH01.C2.2050, PH01.C2.2030 | 2025-01-06 | 2025-01-06 | 02 | 1 |  |
| PH01.C2.2090 |  | ER C2.1 Install Plenum on Louvers | 2d | 2025-10-08 | 2025-10-08 | PH01.M.1000 SS | 2024-09-23 | 2024-09-24 | 02 | 1 | start simutaneously |
| PH01.C2.2100 |  | ER C2.1 Install Vesda Piping System | 5d | 2025-10-08 | 2025-10-08 | PH01.C2.1960 | 2024-10-17 | 2024-10-23 | 02 | 1 |  |
| PH01.C2.2110 |  | ER C2.1 Install Refrigerantion Lines | 5d | 2025-10-08 | 2025-10-08 | PH01.C2.1960 | 2024-10-17 | 2024-10-23 | 02 | 1 |  |
| PH01.C2.2120 |  | ER C2.1 Install ERV | 2d | 2025-10-08 | 2025-10-08 | PH01.C2.2110 | 2024-11-12 | 2024-11-13 | 02 | 1 |  |
| PH01.C2.2130 |  | ER C2.1 Install Cable Trays | 2d | 2025-10-08 | 2025-10-08 | PH01.C2.1990 | 2024-10-21 | 2024-10-22 | 02 | 1 |  |
| PH01.C2.2140 |  | ER C2.1 Install Fire Alarm + Vesda Panel | 3d | 2025-10-08 | 2025-10-08 | PH01.C2.2100 | 2024-10-21 | 2024-10-23 | 02 | 1 |  |
| PH01.C2.2150 |  | ER C2.1 Install Control BMS & EPMS | 4d | 2025-10-08 | 2025-10-08 | PH01.C2.2130 | 2024-11-12 | 2024-11-15 | 02 | 1 |  |

| ID | WBS | Activity | Duration | Start | Finish | Predecessors | Planned start | Planned finish | 06 -GC - Building Levels | 05 -GC - Building Phase | user_text |
| --- | --- | --- | --- | --- | --- | --- | --- | --- | --- | --- | --- |
|  | 3 | **E2.1** |  | 2025-10-08 | 2025-10-08 |  |  |  |  |  |  |
| PH01.EA.136 |  | ER E2.1 Install sprinkler heads | 5d | 2025-10-08 | 2025-10-08 | PH01.EA.1860 | 2024-10-15 | 2024-10-21 | 02 | 1 |  |
| PH01.EA.1860 |  | ER E2.1 Install fire protection | 1d | 2025-10-08 | 2025-10-08 | PH01.EA.1960 | 2024-10-11 | 2024-10-11 | 02 | 1 | All electrical rooms will |
| PH01.EA.1870 |  | ER E2.1 Layout and frame walls | 2d | 2025-10-08 | 2025-10-08 | PH01.M.1000 SS | 2024-09-23 | 2024-09-24 | 02 | 1 | start simutaneously |
| PH01.EA.1880 |  | ER E2.1 Install OAD ductwork Transitions | 6d | 2025-10-08 | 2025-10-08 | PH01.EA.2090 FF, PH01.M.1000 SS | 2024-09-23 | 2024-09-30 | 02 | 1 |  |
| PH01.EA.1890 |  | ER E2.1 Electrical rough-in | 3d | 2025-10-08 | 2025-10-08 | PH01.EA.1870, PH01.EA.1880 | 2024-09-30 | 2024-10-02 | 02 | 1 |  |
| PH01.EA.1900 |  | ER E2.1 Mechanical rough-in | 3d | 2025-10-08 | 2025-10-08 | PH01.EA.1870, PH01.EA.1880 | 2024-09-30 | 2024-10-02 | 02 | 1 |  |
| PH01.EA.1910 |  | ER E2.1 Fire alarm rough-in | 3d | 2025-10-08 | 2025-10-08 | PH01.EA.1870, PH01.EA.1880 | 2024-09-30 | 2024-10-02 | 02 | 1 |  |
| PH01.EA.1920 |  | ER E2.1 Plumbing rough-in | 3d | 2025-10-08 | 2025-10-08 | PH01.EA.1880, PH01.EA.1870 | 2024-09-30 | 2024-10-02 | 02 | 1 |  |
| PH01.EA.1930 |  | ER E2.1 In wall inspection | 1d | 2025-10-08 | 2025-10-08 | PH01.EA.1910, PH01.EA.1900, PH01.EA.1890, PH01.EA.1920 | 2024-10-01 | 2024-10-01 | 02 | 1 |  |
| PH01.EA.1940 |  | ER E2.1 Install drywall | 3d | 2025-10-08 | 2025-10-08 | PH01.EA.1930 | 2024-10-02 | 2024-10-04 | 02 | 1 |  |
| PH01.EA.1950 |  | ER E2.1 Finish drywall | 5d | 2025-10-08 | 2025-10-08 | PH01.EA.1940 SS+2d | 2024-10-04 | 2024-10-10 | 02 | 1 |  |
| PH01.EA.1960 |  | ER E2.1 Paint drywall | 2d | 2025-10-08 | 2025-10-08 | PH01.EA.1950 | 2024-10-09 | 2024-10-10 | 02 | 1 |  |
| PH01.EA.1970 |  | ER E2.1 Install OAD dampers + Ductwork | 3d | 2025-10-08 | 2025-10-08 | PH01.EA.1960, PH01.EA.1950 | 2024-10-11 | 2024-10-16 | 02 | 1 |  |
| PH01.EA.1980 |  | ER E2.1 Install split units | 3d | 2025-10-08 | 2025-10-08 | PH01.EA.1970 | 2024-10-28 | 2024-10-30 | 02 | 1 |  |
| PH01.EA.1990 |  | ER E2.1 Install Busway and OH electrical supports | 5d | 2025-10-08 | 2025-10-08 | PH01.EA.1960 SS, PH01.PR.1060, PH01.EA.1950 | 2024-10-09 | 2024-10-16 | 02 | 1 |  |
| PH01.EA.2000 |  | ER E2.1 Install Electrical SWGR | 2d | 2025-10-08 | 2025-10-08 | PH01.EA.2130, PH01.PR.1070, PH01.EA.1990 | 2024-10-24 | 2024-10-25 | 02 | 1 |  |
| PH01.EA.2010 |  | ER E2.1 Install Feeder tray | 10d | 2025-10-08 | 2025-10-08 | PH01.EA.1990, PH01.EA.2000 | 2024-10-28 | 2024-11-08 | 02 | 1 |  |
| PH01.EA.2020 |  | ER E2.1 Install electrical panels and disconnects | 5d | 2025-10-08 | 2025-10-08 | PH01.PR.1170, PH01.EA.2010, PH01.PR.1190 | 2024-11-04 | 2024-11-08 | 02 | 1 |  |
| PH01.EA.2030 |  | ER E2.1 Pull and terminate feeders | 10d | 2025-10-08 | 2025-10-08 | PH01.EA.2010 SS, PH01.EA.2010 FF | 2024-12-02 | 2024-12-13 | 02 | 1 |  |
| PH01.EA.2040 |  | ER E2.1 Install lighting | 3d | 2025-10-08 | 2025-10-08 | PH01.EA.2020, PH01.EA.2130 | 2024-11-22 | 2024-11-26 | 02 | 1 |  |
| PH01.EA.2050 |  | ER E2.1 Install accessories (shepherds hook, fire ext) | 1d | 2025-10-08 | 2025-10-08 | PH01.EA.2040 FF | 2024-12-23 | 2024-12-23 | 02 | 1 |  |
| PH01.EA.2070 |  | ER E2.1 Clean electrical room | 1d | 2025-10-08 | 2025-10-08 | PH01.EA.2150, PH01.EA.2120, PH01.EA.2040, PH01.EA.1980, PH01.EA.2050, PH01.EA.2030 | 2025-01-06 | 2025-01-06 | 02 | 1 |  |
| PH01.EA.2090 |  | ER E2.1 Install Plenum on Louvers | 2d | 2025-10-08 | 2025-10-08 | PH01.M.1000 SS | 2024-09-18 | 2024-09-19 | 02 | 1 | start simutaneously |
| PH01.EA.2100 |  | ER E2.1 Install Vesda Piping System | 5d | 2025-10-08 | 2025-10-08 | PH01.EA.1960 | 2024-10-11 | 2024-10-18 | 02 | 1 |  |
| PH01.EA.2110 |  | ER E2.1 Install Refrigerantion Lines | 5d | 2025-10-08 | 2025-10-08 | PH01.EA.1960 | 2024-10-11 | 2024-10-18 | 02 | 1 |  |
| PH01.EA.2120 |  | ER E2.1 Install ERV | 2d | 2025-10-08 | 2025-10-08 | PH01.EA.2110, PH01.EA.2130 | 2024-11-26 | 2024-11-27 | 02 | 1 |  |
| PH01.EA.2130 |  | ER E2.1 Install Cable Trays | 5d | 2025-10-08 | 2025-10-08 | PH01.EA.1990 | 2024-10-18 | 2024-10-24 | 02 | 1 |  |
| PH01.EA.2140 |  | ER E2.1 Install Fire Alarm + Vesda Panel | 3d | 2025-10-08 | 2025-10-08 | PH01.EA.2100 | 2024-10-21 | 2024-10-23 | 02 | 1 |  |
| PH01.EA.2150 |  | ER E2.1 Install Control BMS & EPMS | 4d | 2025-10-08 | 2025-10-08 | PH01.EA.1960, PH01.EA.2130 | 2024-11-22 | 2024-11-27 | 02 | 1 |  |

| ID | WBS | Activity | Duration | Start | Finish | Predecessors | Planned start | Planned finish | user_text | 06 -GC - Building Levels | 05 -GC - Building Phase |
| --- | --- | --- | --- | --- | --- | --- | --- | --- | --- | --- | --- |
|  | 5 | **DAHU Galleries** |  | 2025-10-08 | 2025-10-08 |  |  |  |  |  |  |
|  | 1 | **DAHU Gallery North** |  | 2025-10-08 | 2025-10-08 |  |  |  |  |  |  |
| PH01.DAHU.1000 |  | DAHU North Install Fire Protection & VESDA | 2d | 2025-10-08 | 2025-10-08 | PH01.M.1000 SS | 2024-09-23 | 2024-09-24 | DAHU North and South will | 02 | 1 |
| PH01.DAHU.1010 |  | DAHU North Install IW Piping | 4d | 2025-10-08 | 2025-10-08 | PH01.M.1000 SS | 2024-09-23 | 2024-09-26 | work simutaneously | 02 | 1 |
| PH01.DAHU.1020 |  | DAHU North Install Outside Air Reference Piping | 3d | 2025-10-08 | 2025-10-08 | PH01.DAHU.1010 SS+2d | 2024-09-25 | 2024-09-27 |  | 02 | 1 |
| PH01.DAHU.1030 |  | DAHU North Frame DAHU wall and CSH Catwalk | 6d | 2025-10-08 | 2025-10-08 | PH01.M.1000 SS | 2024-10-07 | 2024-10-15 |  | 02 | 1 |
| PH01.DAHU.1040 |  | DAHU North CSH Electrical rough-in | 5d | 2025-10-08 | 2025-10-08 | PH01.DAHU.1030 SS+2d | 2024-10-09 | 2024-10-16 |  | 02 | 1 |
| PH01.DAHU.1050 |  | DAHU North CSH Fire protection/alarm and VESDA rough-in | 3d | 2025-10-08 | 2025-10-08 | PH01.DAHU.1000 | 2024-09-25 | 2024-09-27 |  | 02 | 1 |
| PH01.DAHU.1060 |  | DAHU North CSH In wall inspection | 1d | 2025-10-08 | 2025-10-08 | PH01.DAHU.1040, PH01.DAHU.1050 FF, PH01.DAHU.1050 | 2024-10-17 | 2024-10-17 |  | 02 | 1 |
| PH01.DAHU.1070 |  | DAHU North Install CSH drywall | 6d | 2025-10-08 | 2025-10-08 | PH01.DAHU.1060, ISSU08.80 FF | 2024-10-18 | 2024-10-25 |  | 02 | 1 |
| PH01.DAHU.1080 |  | DAHU North Finish CSH drywall | 13d | 2025-10-08 | 2025-10-08 | PH01.DAHU.1070 | 2024-10-28 | 2024-11-14 |  | 02 | 1 |
| PH01.DAHU.1090 |  | DAHU North Install DAHUs | 2d | 2025-10-08 | 2025-10-08 | PH01.DAHU.1700, PH01.DAHU.1680, PH01.DAHU.1670, PH01.DAHU.1000, PH01.PR.1010 | 2024-10-24 | 2024-10-25 |  | 02 | 1 |
| PH01.DAHU.1100 |  | DAHU North Install CSH Railing | 2d | 2025-10-08 | 2025-10-08 | PH01.DAHU.1420 | 2024-11-18 | 2024-11-19 |  | 02 | 1 |
| PH01.DAHU.1120 |  | DAHU North Pull and terminate VFDs from electrical room | 5d | 2025-10-08 | 2025-10-08 | PH01.PR.1130, PH01.DAHU.1090 | 2024-10-28 | 2024-11-01 |  | 02 | 1 |
| PH01.DAHU.1130 |  | DAHU North Make DAHU Plumbing Connections | 3d | 2025-10-08 | 2025-10-08 | PH01.DAHU.1690, PH01.DAHU.1720, PH01.DAHU.1090 | 2024-10-31 | 2024-11-04 |  | 02 | 1 |
| PH01.DAHU.1140 |  | DAHU North Install Feeder Trays (DAHU, VFD, Communications) | 5d | 2025-10-08 | 2025-10-08 | PH01.DAHU.1420, PH01.DH.1190 SS | 2024-11-12 | 2024-11-18 |  | 02 | 1 |
| PH01.DAHU.1150 |  | DAHU North Pull DAHU Feeders | 2d | 2025-10-08 | 2025-10-08 | PH01.DH.1200 SS, PH01.DAHU.1140 | 2024-11-19 | 2024-11-20 |  | 02 | 1 |
| PH01.DAHU.1160 |  | DAHU North Make DAHU Electrical Connections | 2d | 2025-10-08 | 2025-10-08 | PH01.DAHU.1150 | 2024-11-21 | 2024-11-22 |  | 02 | 1 |
| PH01.DAHU.1170 |  | DAHU North Make DAHU Controls Connections | 3d | 2025-10-08 | 2025-10-08 | PH01.DAHU.1160 | 2024-11-25 | 2024-11-27 |  | 02 | 1 |
| PH01.DAHU.1180 |  | DAHU North Install Temporary Wall | 2d | 2025-10-08 | 2025-10-08 | PH01.DAHU.1170 | 2024-11-29 | 2024-12-02 |  | 02 | 1 |
| PH01.DAHU.1190 |  | DAHU North Install CSH ladders | 2d | 2025-10-08 | 2025-10-08 | PH01.DAHU.1170 | 2024-11-29 | 2024-12-02 |  | 02 | 1 |
| PH01.DAHU.1200 |  | DAHU North Clean DAHU Gallery and CSH | 2d | 2025-10-08 | 2025-10-08 | PH01.DAHU.1730, PH01.DAHU.1180, PH01.DAHU.1190, PH01.DAHU.1100, PH01.DAHU.1160 | 2024-12-04 | 2024-12-05 |  | 02 | 1 |
| PH01.DAHU.1420 |  | DAHU North Paint CSH drywall | 5d | 2025-10-08 | 2025-10-08 | PH01.DAHU.1080 | 2024-11-19 | 2024-11-25 |  | 02 | 1 |
| PH01.DAHU.1650 |  | DAHU North Coredrilling On 2nd Floor | 5d | 2025-10-08 | 2025-10-08 | PH01.M.1000 SS | 2024-09-23 | 2024-09-27 | DAHU North and South will | 02 | 1 |
| PH01.DAHU.1660 |  | DAHU North Install Floor Drains 2nd Floor | 2d | 2025-10-08 | 2025-10-08 | PH01.DAHU.1650 | 2024-10-15 | 2024-10-16 | DAHU North and South will | 02 | 1 |
| PH01.DAHU.1670 |  | DAHU North Concrete Infill 2nd Floor | 2d | 2025-10-08 | 2025-10-08 | PH01.DAHU.1660 | 2024-10-17 | 2024-10-18 | DAHU North and South will | 02 | 1 |
| PH01.DAHU.1680 |  | DAHU North Install OAD Damper | 4d | 2025-10-08 | 2025-10-08 | PH01.DAHU.1010 | 2024-10-15 | 2024-10-18 |  | 02 | 1 |
| PH01.DAHU.1690 |  | DAHU North Install Sprinkler Feed Lines | 4d | 2025-10-08 | 2025-10-08 | PH01.DAHU.1680 | 2024-10-21 | 2024-10-24 |  | 02 | 1 |
| PH01.DAHU.1700 |  | DAHU North Install Low Point Drain | 4d | 2025-10-08 | 2025-10-08 | PH01.DAHU.1660 | 2024-10-21 | 2024-10-24 |  | 02 | 1 |
| PH01.DAHU.1720 |  | DAHU North Install IW Drops | 3d | 2025-10-08 | 2025-10-08 | PH01.DAHU.1090 | 2024-10-28 | 2024-10-30 |  | 02 | 1 |
| PH01.DAHU.1730 |  | DAHU North Install VESDA Panels | 2d | 2025-10-08 | 2025-10-08 | PH01.DAHU.1180 | 2024-12-02 | 2024-12-03 |  | 02 | 1 |

| ID | WBS | Activity | Duration | Start | Finish | Predecessors | Planned start | Planned finish | user_text | 06 -GC - Building Levels | 05 -GC - Building Phase |
| --- | --- | --- | --- | --- | --- | --- | --- | --- | --- | --- | --- |
|  | 2 | **DAHU Gallery South** |  | 2025-10-08 | 2025-10-08 |  |  |  |  |  |  |
| PH01.DAHU.1430 |  | DAHU South Install fire protection and VESDA | 2d | 2025-10-08 | 2025-10-08 | PH01.M.1000 SS | 2024-09-23 | 2024-09-24 | DAHU North and South will | 02 | 1 |
| PH01.DAHU.1440 |  | DAHU South Install IW Piping | 4d | 2025-10-08 | 2025-10-08 | PH01.M.1000 SS | 2024-09-23 | 2024-09-26 | work simutaneously | 02 | 1 |
| PH01.DAHU.1450 |  | DAHU South Install Outside Air Reference Piping | 3d | 2025-10-08 | 2025-10-08 | PH01.DAHU.1440 FF | 2024-09-24 | 2024-09-26 |  | 02 | 1 |
| PH01.DAHU.1460 |  | DAHU South Frame DAHU wall and CSH catwalk | 6d | 2025-10-08 | 2025-10-08 | PH01.M.1000 SS | 2024-10-07 | 2024-10-15 |  | 02 | 1 |
| PH01.DAHU.1470 |  | DAHU South CSH Fire protection/alarm and VESDA rough-in | 3d | 2025-10-08 | 2025-10-08 | PH01.DAHU.1460 | 2024-10-16 | 2024-10-18 |  | 02 | 1 |
| PH01.DAHU.1480 |  | DAHU South CSH Electrical rough-in | 3d | 2025-10-08 | 2025-10-08 | PH01.DAHU.1430 FF | 2024-09-23 | 2024-09-25 |  | 02 | 1 |
| PH01.DAHU.1490 |  | DAHU South CSH In wall inspection | 1d | 2025-10-08 | 2025-10-08 | PH01.DAHU.1480, PH01.DAHU.1470 FF, PH01.DAHU.1470 | 2024-10-21 | 2024-10-21 |  | 02 | 1 |
| PH01.DAHU.1500 |  | DAHU South Install CSH drywall | 6d | 2025-10-08 | 2025-10-08 | PH01.DAHU.1810, PH01.DAHU.1490 | 2024-10-28 | 2024-11-04 |  | 02 | 1 |
| PH01.DAHU.1510 |  | DAHU South Finish CSH drywall | 10d | 2025-10-08 | 2025-10-08 | PH01.DAHU.1500 SS+2d | 2024-10-30 | 2024-11-13 |  | 02 | 1 |
| PH01.DAHU.1520 |  | DAHU South Paint CSH drywall | 4d | 2025-10-08 | 2025-10-08 | PH01.DAHU.1510 | 2024-11-12 | 2024-11-15 |  | 02 | 1 |
| PH01.DAHU.1530 |  | DAHU South Install DAHUs | 2d | 2025-10-08 | 2025-10-08 | PH01.DAHU.1430, PH01.PR.1010 | 2024-11-18 | 2024-11-19 |  | 02 | 1 |
| PH01.DAHU.1540 |  | DAHU South Install CSH Railing | 2d | 2025-10-08 | 2025-10-08 | PH01.DAHU.1530 | 2024-11-18 | 2024-11-19 |  | 02 | 1 |
| PH01.DAHU.1550 |  | DAHU South Install VFDs | 3d | 2025-10-08 | 2025-10-08 | PH01.PR.1130, PH01.DAHU.1530 | 2024-11-18 | 2024-11-20 |  | 02 | 1 |
| PH01.DAHU.1560 |  | DAHU South Make DAHU plumbing connections | 5d | 2025-10-08 | 2025-10-08 | PH01.DAHU.1530 | 2024-10-23 | 2024-10-29 |  | 02 | 1 |
| PH01.DAHU.1570 |  | DAHU South Pull and terminate VFDs from Electrical Room | 5d | 2025-10-08 | 2025-10-08 | PH01.DAHU.1550 FF | 2024-11-18 | 2024-11-22 |  | 02 | 1 |
| PH01.DAHU.1580 |  | DAHU South Install feeder trays (DAHU, VFD, communications) | 5d | 2025-10-08 | 2025-10-08 | PH01.DAHU.1530 | 2024-10-21 | 2024-10-25 |  | 02 | 1 |
| PH01.DAHU.1590 |  | DAHU South Pull DAHU Feeders | 2d | 2025-10-08 | 2025-10-08 | PH01.DH.1200 SS, PH01.DAHU.1580 | 2024-11-04 | 2024-11-05 |  | 02 | 1 |
| PH01.DAHU.1600 |  | DAHU South Make DAHU electrical connections | 2d | 2025-10-08 | 2025-10-08 | PH01.DAHU.1590 | 2024-11-06 | 2024-11-07 |  | 02 | 1 |
| PH01.DAHU.1610 |  | DAHU South Make DAHU controls connections | 3d | 2025-10-08 | 2025-10-08 | PH01.DAHU.1600 | 2024-11-08 | 2024-11-13 |  | 02 | 1 |
| PH01.DAHU.1620 |  | DAHU South Install temporary wall | 2d | 2025-10-08 | 2025-10-08 | PH01.DAHU.1610 | 2024-11-13 | 2024-11-14 |  | 02 | 1 |
| PH01.DAHU.1630 |  | DAHU South Install CSH Ladders | 2d | 2025-10-08 | 2025-10-08 | PH01.DAHU.1610 | 2024-11-18 | 2024-11-19 |  | 02 | 1 |
| PH01.DAHU.1640 |  | DAHU South Clean DAHU gallery and CSH | 2d | 2025-10-08 | 2025-10-08 | PH01.DAHU.1520, PH01.DAHU.1800, PH01.DAHU.1620, PH01.DAHU.1630, PH01.DAHU.1540, PH01.DAHU.1600 | 2024-11-25 | 2024-11-26 |  | 02 | 1 |
| PH01.DAHU.1740 |  | DAHU South Coredrilling On 2nd Floor | 5d | 2025-10-08 | 2025-10-08 | PH01.M.1000 SS | 2024-10-07 | 2024-10-11 | DAHU North and South will | 02 | 1 |
| PH01.DAHU.1750 |  | DAHU South Install Floor Drains 2nd Floor | 2d | 2025-10-08 | 2025-10-08 | PH01.DAHU.1740 | 2024-10-18 | 2024-10-21 | DAHU North and South will | 02 | 1 |
| PH01.DAHU.1760 |  | DAHU South Install IW Drops | 3d | 2025-10-08 | 2025-10-08 | PH01.DAHU.1530, PH01.DAHU.1440 | 2024-10-28 | 2024-10-30 | work simutaneously | 02 | 1 |
| PH01.DAHU.1770 |  | DAHU South Install Sprinkler Lines | 4d | 2025-10-08 | 2025-10-08 | PH01.DAHU.1760 FF, PH01.DAHU.1530 | 2024-10-28 | 2024-10-31 |  | 02 | 1 |
| PH01.DAHU.1800 |  | DAHU South Install VESDA Panels | 2d | 2025-10-08 | 2025-10-08 | PH01.DAHU.1620 | 2024-11-18 | 2024-11-19 |  | 02 | 1 |
| PH01.DAHU.1810 |  | DAHU South Concrete Infill 2nd Floor | 2d | 2025-10-08 | 2025-10-08 | PH01.DAHU.1750 | 2024-10-22 | 2024-10-23 | DAHU North and South will | 02 | 1 |

| ID | WBS | Activity | Duration | Start | Finish | Predecessors | Planned start | Planned finish | 06 -GC - Building Levels | 05 -GC - Building Phase | user_text |
| --- | --- | --- | --- | --- | --- | --- | --- | --- | --- | --- | --- |
|  | 6 | **Data Hall Gallery** |  | 2025-10-08 | 2025-10-08 |  |  |  |  |  |  |
| PH01.DH.1000 |  | Data Hall Install upper temp wall | 2d | 2025-10-08 | 2025-10-08 | PH01.DH.1410 | 2024-10-28 | 2024-10-29 | 02 | 1 |  |
| PH01.DH.1010 |  | Data Hall Rough-in electrical for exhaust fans | 10d | 2025-10-08 | 2025-10-08 | PH01.M.1000 SS | 2024-09-23 | 2024-10-04 | 02 | 1 |  |
| PH01.DH.1020 |  | Data Hall Install exhaust fan drip pans | 5d | 2025-10-08 | 2025-10-08 | PH01.DH.1010 | 2024-09-23 | 2024-09-27 | 02 | 1 |  |
| PH01.DH.1030 |  | Data Hall Install Fire Protection (high) | 5d | 2025-10-08 | 2025-10-08 | PH01.DH.1020 SS+3d | 2024-09-26 | 2024-10-02 | 02 | 1 |  |
| PH01.DH.1040 |  | Data Hall Pipe exhaust fans drip pans | 4d | 2025-10-08 | 2025-10-08 | PH01.DH.1020 | 2024-09-30 | 2024-10-03 | 02 | 1 |  |
| PH01.DH.1050 |  | Data Hall Layout and frame B/E/3.5 line walls | 5d | 2025-10-08 | 2025-10-08 | PH01.M.1000 SS | 2024-09-16 | 2024-09-20 | 02 | 1 |  |
| PH01.DH.1060 |  | Data Hall In wall rough-in | 5d | 2025-10-08 | 2025-10-08 | PH01.DH.1050 SS | 2024-09-23 | 2024-09-27 | 02 | 1 |  |
| PH01.DH.1070 |  | Data Hall In wall inspection | 1d | 2025-10-08 | 2025-10-08 | PH01.DH.1060 | 2024-09-30 | 2024-09-30 | 02 | 1 |  |
| PH01.DH.1080 |  | Data Hall Install Drywall on B/E/3.5 line walls | 5d | 2025-10-08 | 2025-10-08 | PH01.DH.1070 | 2024-10-01 | 2024-10-07 | 02 | 1 |  |
| PH01.DH.1090 |  | Data Hall Finish B/E/3.5 line walls | 7d | 2025-10-08 | 2025-10-08 | PH01.DH.1460, PH01.DH.1080 | 2024-10-15 | 2024-10-23 | 02 | 1 |  |
| PH01.DH.1100 |  | Data Hall Frame exhaust plenum | 10d | 2025-10-08 | 2025-10-08 | PH01.DH.1050 SS | 2024-09-23 | 2024-10-04 | 02 | 1 |  |
| PH01.DH.1110 |  | Data Hall Rough-in exhaust plenum | 2d | 2025-10-08 | 2025-10-08 | PH01.DH.1100 | 2024-09-30 | 2024-10-01 | 02 | 1 |  |
| PH01.DH.1120 |  | Data Hall Install Drywall on Exterior Exhaust Plenum | 7d | 2025-10-08 | 2025-10-08 | PH01.DH.1110 | 2024-10-02 | 2024-10-10 | 02 | 1 |  |
| PH01.DH.1130 |  | Data Hall Finish exterior exhaust plenum | 10d | 2025-10-08 | 2025-10-08 | PH01.DH.1120 | 2024-10-08 | 2024-10-22 | 02 | 1 |  |
| PH01.DH.1140 |  | Data Hall Install Lower temp wall and doors | 3d | 2025-10-08 | 2025-10-08 | PH01.DH.1290, PH01.DH.1000, PH01.DH.1120, PH01.DH.1130, PH01.DH.1230 | 2024-12-23 | 2024-12-26 | 02 | 1 |  |
| PH01.DH.1150 |  | Data Hall Install return air dampers | 3d | 2025-10-08 | 2025-10-08 | PH01.DH.1380 SS, PH01.DH.1090 | 2024-10-21 | 2024-10-23 | 02 | 1 |  |
| PH01.DH.1160 |  | Data Hall Install supply air dampers | 3d | 2025-10-08 | 2025-10-08 | PH01.DH.1150 | 2024-10-24 | 2024-10-28 | 02 | 1 |  |
| PH01.DH.1170 |  | Data Hall Install fire protection (low) | 5d | 2025-10-08 | 2025-10-08 | PH01.DH.1180, PH01.DH.1150 SS+2d | 2024-10-28 | 2024-11-01 | 02 | 1 |  |
| PH01.DH.1180 |  | Data Hall Install Racking | 8d | 2025-10-08 | 2025-10-08 | PH01.DH.1040, PH01.DH.1450, PH01.DH.1440, PH01.DH.1080, PH01.DH.1030, PH01.PR.1000 | 2024-10-15 | 2024-10-24 | 02 | 1 |  |
| PH01.DH.1190 |  | Data Hall Install DAHU feeder tray | 10d | 2025-10-08 | 2025-10-08 | PH01.DH.1180 | 2024-10-25 | 2024-11-07 | 02 | 1 |  |
| PH01.DH.1200 |  | Data Hall Pull DAHU feeders | 2d | 2025-10-08 | 2025-10-08 | PH01.DH.1190 | 2024-11-04 | 2024-11-05 | 02 | 1 |  |
| PH01.DH.1210 |  | Data Hall Install vertical communication risers | 3d | 2025-10-08 | 2025-10-08 | PH01.DH.1200 | 2024-11-12 | 2024-11-14 | 02 | 1 |  |
| PH01.DH.1220 |  | Data Hall Install guardrails at Risers | 2d | 2025-10-08 | 2025-10-08 | PH01.DH.1210 | 2024-12-02 | 2024-12-03 | 02 | 1 |  |
| PH01.DH.1230 |  | Data Hall Install ACT grid | 4d | 2025-10-08 | 2025-10-08 | PH01.DH.1500, PH01.DH.1270 | 2024-11-01 | 2024-11-06 | 02 | 1 |  |
| PH01.DH.1240 |  | Data Hall Electrical Ceiling rough-in | 5d | 2025-10-08 | 2025-10-08 | PH01.DH.1170, PH01.DH.1230 | 2024-11-04 | 2024-11-08 | 02 | 1 |  |
| PH01.DH.1250 |  | Data Hall Install Fire protection Sprinkler Heads | 4d | 2025-10-08 | 2025-10-08 | PH01.DH.1230 | 2024-10-29 | 2024-11-01 | 02 | 1 |  |
| PH01.DH.1260 |  | Data Hall Fire alarm and VESDA rough-in | 4d | 2025-10-08 | 2025-10-08 | PH01.DH.1230 | 2024-11-21 | 2024-11-26 | 02 | 1 |  |
| PH01.DH.1270 |  | Data Hall Install upper twin wall | 5d | 2025-10-08 | 2025-10-08 | PH01.DH.1180 | 2024-10-25 | 2024-10-31 | 02 | 1 |  |
| PH01.DH.1280 |  | Data Hall Install Ceiling Tiles | 4d | 2025-10-08 | 2025-10-08 | PH01.DH.1510, PH01.DH.1230, PH01.DH.1250, PH01.DH.1240, PH01.DH.1270 | 2024-11-15 | 2024-11-20 | 02 | 1 |  |
| PH01.DH.1290 |  | Data Hall Install Basket Tray | 10d | 2025-10-08 | 2025-10-08 | PH01.DH.1050 | 2024-11-19 | 2024-12-03 | 02 | 1 | Changed from 15 to 10 |
| PH01.DH.1300 |  | Data Hall Pull branch circuit and PDC feeders | 12d | 2025-10-08 | 2025-10-08 | PH01.DH.1290 FF | 2024-11-22 | 2024-12-10 | 02 | 1 | Changed from 15 to 10 |
| PH01.DH.1310 |  | Data Hall Install PDC cabinets | 3d | 2025-10-08 | 2025-10-08 | PH01.DH.1230, PH01.PR.1100 | 2024-11-18 | 2024-11-20 | 02 | 1 |  |
| PH01.DH.1320 |  | Data Hall Terminate PDC cabinets | 5d | 2025-10-08 | 2025-10-08 | PH01.DH.1310, PH01.DH.1300 FF | 2024-12-04 | 2024-12-10 | 02 | 1 |  |
| PH01.DH.1330 |  | Data Hall Install PDC Whips and labels | 12d | 2025-10-08 | 2025-10-08 | PH01.DH.1290 SS+5d, PH01.PR.1100 | 2024-11-26 | 2024-12-12 | 02 | 1 | Data hall is driving out the |
| PH01.DH.1340 |  | Data Hall Perform PDC Whip Checks | 2d | 2025-10-08 | 2025-10-08 | PH01.DH.1330, PH01.DH.1320 | 2024-12-23 | 2024-12-24 | 02 | 1 | NEA data in the milestones |
| PH01.DH.1350 |  | Data Hall Install lower twin wall and doors | 5d | 2025-10-08 | 2025-10-08 | PH01.DH.1360 SS+1d, PH01.DH.1180, PH01.DH.1390 | 2024-12-26 | 2025-01-02 | 02 | 1 | Changed from 7 to 5 |
| PH01.DH.1360 |  | Data Hall Install Perfect Positioning | 2d | 2025-10-08 | 2025-10-08 | PH01.DH.1320, PH01.DH.1340 FF+1d | 2024-12-24 | 2024-12-26 | 02 | 1 | Must complete by 10/23/23 |
| PH01.DH.1370 |  | Data Hall Clean data hall | 2d | 2025-10-08 | 2025-10-08 | PH01.DH.1490, PH01.DH.1480, PH01.DH.1280, PH01.DH.1410, PH01.DH.1140, PH01.DH.1220, PH01.DH.1360, PH01.DH.1350 | 2025-01-06 | 2025-01-07 | 02 | 1 |  |
| PH01.DH.1380 |  | Data Hall Paint B/E/3.5 line walls | 5d | 2025-10-08 | 2025-10-08 | PH01.DH.1090 | 2024-10-24 | 2024-10-30 | 02 | 1 |  |
| PH01.DH.1390 |  | Data Hall Install Drywall on Interior Exhaust Plenum | 12d | 2025-10-08 | 2025-10-08 | PH01.DH.1110 | 2024-10-15 | 2024-10-30 | 02 | 1 |  |
| PH01.DH.1400 |  | Data Hall Finish interior exhaust plenum | 15d | 2025-10-08 | 2025-10-08 | PH01.DH.1390 | 2024-10-21 | 2024-11-08 | 02 | 1 | Changed from 20 to 15 |
| PH01.DH.1410 |  | Data Hall Paint exterior exhaust plenum | 5d | 2025-10-08 | 2025-10-08 | PH01.DH.1130 | 2024-10-15 | 2024-10-21 | 02 | 1 |  |
| PH01.DH.1420 |  | Data Hall Paint Interior Exhaust plenum | 5d | 2025-10-08 | 2025-10-08 | PH01.DH.1400 | 2024-10-28 | 2024-11-01 | 02 | 1 |  |
| PH01.DH.1430 |  | Data Hall Install High VESDA Pipes | 4d | 2025-10-08 | 2025-10-08 | PH01.DH.1030 | 2024-09-30 | 2024-10-03 | 02 | 1 |  |
| PH01.DH.1440 |  | Data Hall Install Fire Protection (Low) | 5d | 2025-10-08 | 2025-10-08 | PH01.DH.1030 | 2024-09-30 | 2024-10-04 | 02 | 1 |  |
| PH01.DH.1450 |  | Data Hall Hang Wire for Ceiling Grid | 4d | 2025-10-08 | 2025-10-08 | PH01.DH.1440 SS+2d | 2024-10-02 | 2024-10-07 | 02 | 1 |  |
| PH01.DH.1460 |  | Data Hall Install Dampers/Screens | 3d | 2025-10-08 | 2025-10-08 | PH01.DH.1530, PH01.DH.1080 SS | 2024-10-11 | 2024-10-16 | 02 | 1 |  |
| PH01.DH.1470 |  | Data Hall Install BMS Panel | 3d | 2025-10-08 | 2025-10-08 | PH01.DH.1090 | 2024-11-18 | 2024-11-20 | 02 | 1 |  |
| PH01.DH.1480 |  | Data Hall Install VESDA Panels | 2d | 2025-10-08 | 2025-10-08 | PH01.DH.1420, PH01.DH.1260, PH01.DH.1500 | 2024-11-29 | 2024-12-02 | 02 | 1 | NEA data in the milestones |
| PH01.DH.1490 |  | Data Hall Pull & Terminate VESDA Wiring | 2d | 2025-10-08 | 2025-10-08 | PH01.DH.1480 | 2024-12-23 | 2024-12-24 | 02 | 1 | NEA data in the milestones |
| PH01.DH.1500 |  | Data Hall Install Lower VESDA Pipes | 4d | 2025-10-08 | 2025-10-08 | PH01.DH.1430 | 2024-10-04 | 2024-10-09 | 02 | 1 |  |
| PH01.DH.1510 |  | Data Hall Install Back Draft Damper | 4d | 2025-10-08 | 2025-10-08 | PH01.DH.1230 | 2024-10-29 | 2024-11-01 | 02 | 1 |  |
| PH01.DH.1520 |  | Data Hall Install BMS/EPMS | 5d | 2025-10-08 | 2025-10-08 | PH01.DH.1470 FF, PH01.DH.1210 | 2024-11-15 | 2024-11-21 | 02 | 1 |  |
| PH01.DH.1530 |  | Data Hall Paint B/E/3.5 line walls Below Ceiling Grid | 1d | 2025-10-08 | 2025-10-08 | PH01.DH.1080 | 2024-10-10 | 2024-10-10 | 02 | 1 |  |

| ID | WBS | Activity | Duration | Start | Finish | Predecessors | Planned start | Planned finish | Calendar | user_text | 06 -GC - Building Levels | 05 -GC - Building Phase | SCHDULE UPDATE |
| --- | --- | --- | --- | --- | --- | --- | --- | --- | --- | --- | --- | --- | --- |
|  | 7 | **Startup and Commissioning** |  | 2025-10-08 | 2025-10-08 |  |  |  |  |  |  |  |  |
| PH01.SU.1000 |  | OWNER FOD Walks | 1d | 2025-10-08 | 2025-10-08 | PH01.GEN.1120, PH01.XFMR.1100, PH01.C2.2070, PH01.C1.2070, PH01.GEN.1110, PH01.RF.1060, PH01.DAHU.1570, PH01.DAHU.1640, PH01.EA.2070 SS, PH01.XFMR.1110, PH01.SWGR.1070, PH01.DAHU.1120, PH01.RF.1050, PH01.RF.1030, PH01.RF.1010, PH2-10.GEN.1210, ISSU15.10, ISSU14.20, ISSU19.40, ISSU20.40, ISSU21.30 FF, ISSU14.40 | 2025-02-11 | 2025-02-11 |  | Must begin by 10/09/23 | 02 | 1 |  |
| PH01.SU.1010 |  | Energization | 7d | 2025-10-08 | 2025-10-08 | PH01.SU.1000 SS+1d, ISSU16.10 | 2025-02-10 | 2025-02-19 |  | Must complete by 10/16/23 | 02 | 1 |  |
| PH01.SU.1030 |  | L4-L5 Commissioning | 10d | 2025-10-08 | 2025-10-08 | PH01.SU.1010, PH01.SU.1050, PH01.DH.1370, PH01.M.1070 | 2025-03-24 | 2025-04-04 |  |  | 02 | 1 |  |
| PH01.SU.1040 |  | Comissioning Complete | 1d | 2025-10-08 | 2025-10-08 | PH01.SU.1030 FF+1d | 2025-04-25 | 2025-04-25 |  |  | 02 | 1 |  |
| PH01.SU.1050 |  | Startup activities for NEA TCO | 10d | 2025-10-08 | 2025-10-08 | PH01.SU.1010 | 2025-02-18 | 2025-03-03 |  |  | 02 | 1 |  |
|  | INSPECTIONS | **Final Inspections** |  | 2025-10-08 | 2025-10-08 |  |  |  |  |  |  |  |  |
| PH01.1000 |  | Fire Protection Final Inspection | 5d | 2025-10-08 | 2025-10-08 | PH01.C2.136, PH01.C1.136, PH01.DAHU.1770, PH01.EA.136, PH01.DAHU.1050, PH01.DAHU.1430, PH01.DH.1250, PH01.SU.1010, PH01.DAHU.1640, PH01.DAHU.1200, PH01.EA.2070, PH01.C2.2070, PH01.C1.2070, PH01.L2.1320 SS, PH01.L1.1320 SS, PH01.DH.1370 | 2025-02-18 | 2025-02-24 |  | Must complete by 10/16/23 | 02 | 1 |  |
| PH01.1010 |  | Electrical Final Inspection | 2d | 2025-10-08 | 2025-10-08 | PH01.DAHU.1570, PH01.DAHU.1610, PH01.DAHU.1550, PH01.SU.1010, PH01.DAHU.1640, PH01.DAHU.1200, PH01.EA.2070, PH01.C2.2070, PH01.C1.2070, PH01.L2.1320, PH01.L1.1320, PH01.DH.1370 | 2025-02-19 | 2025-02-20 |  | Must complete by 10/16/23 | 02 | 1 |  |
| PH01.1020 |  | Fire Alarm Final Inspection | 2d | 2025-10-08 | 2025-10-08 | PH01.C2.2140, PH01.C1.2140, PH01.EA.2140, PH01.SU.1010, PH01.DAHU.1640, PH01.DAHU.1200, PH01.EA.2070, PH01.C2.2070, PH01.C1.2070, PH01.L2.1320, PH01.L1.1320, PH01.DH.1370 | 2025-02-19 | 2025-02-20 |  | Must complete by 10/16/23 | 02 | 1 |  |
| PH01.1030 |  | Mechanical Final Inspection | 2d | 2025-10-08 | 2025-10-08 | PH01.DAHU.1610, PH01.DAHU.1570, PH01.DAHU.1550, PH01.SU.1010, PH01.DAHU.1640, PH01.DAHU.1200, PH01.EA.2070, PH01.C2.2070, PH01.C1.2070, PH01.L2.1320, PH01.L1.1320, PH01.DH.1370 | 2025-02-19 | 2025-02-20 |  | Must complete by 10/16/23 | 02 | 1 |  |
| PH01.1040 |  | Plumbing Final Inspection | 2d | 2025-10-08 | 2025-10-08 | PH01.DAHU.1560, PH01.SU.1010, PH01.DAHU.1640, PH01.DAHU.1200, PH01.EA.2070, PH01.C2.2070, PH01.C1.2070, PH01.L2.1320, PH01.L1.1320, PH01.DH.1370 | 2025-02-19 | 2025-02-20 |  | Must complete by 10/16/23 | 02 | 1 |  |
| PH01.1050 |  | Special Inspections Sign-off | 2d | 2025-10-08 | 2025-10-08 | PH1-10-1090, PH2-10.GEN.1230 | 2025-02-18 | 2025-02-19 |  | Must complete by 10/16/23 | 02 | 1 |  |
|  | PH2 | **Phase 2 Construction** |  | 2025-10-08 | 2025-10-08 |  |  |  |  |  |  |  |  |
|  | 2 | **Site** |  | 2025-10-08 | 2025-10-08 |  |  |  |  |  |  |  |  |
|  | 2 | **Generator Yard** |  | 2025-10-08 | 2025-10-08 |  |  |  |  |  |  |  |  |
|  | 2 | **Generators-Phase 2** |  | 2025-10-08 | 2025-10-08 |  |  |  |  |  |  |  |  |
| PH02.GEN.1100 |  | Gen Yard Install generators | 2d | 2025-10-08 | 2025-10-08 | PH02.PR.1050, PH2-10.GEN.1210 | 2024-12-02 | 2024-12-03 |  |  | 02 | 1 | ELIASE |
| PH02.GEN.1110 |  | Gen Yard Anchor generators | 2d | 2025-10-08 | 2025-10-08 | PH02.GEN.1100 FF | 2024-12-11 | 2024-12-12 |  |  | 02 | 1 | ELIASE |
| PH02.GEN.1120 |  | Gen Yard Install cable bus from generator to electrical room | 8d | 2025-10-08 | 2025-10-08 | PH02.PR.1160, PH02.XFMR.1100 FF, PH02.GEN.1110, PH02.GEN.1130 | 2025-01-06 | 2025-01-15 |  |  | 02 | 1 | ELIASE |
| PH02.GEN.1130 |  | Gen Yard Install generators Exhaust Duct | 2d | 2025-10-08 | 2025-10-08 | PH02.GEN.1100 | 2024-12-19 | 2024-12-20 |  |  | 02 | 1 | ELIASE |
|  | 4 | **MV Transformers-Phase 2** |  | 2025-10-08 | 2025-10-08 |  |  |  |  |  |  |  |  |
| PH02.XFMR.1100 |  | XFMR Install cable bus to electrical room | 8d | 2025-10-08 | 2025-10-08 | PH02.PR.1160, PH02.XFMR.1110 FF | 2025-01-06 | 2025-01-14 | Calendar 06 - 6 Day Work Week w/ Mass. Holidays |  | 02 | 1 | ELIASE |
| PH02.XFMR.1110 |  | XFMR Pull and terminate to MV SWGR | 10d | 2025-10-08 | 2025-10-08 | PH02.PR.1045 | 2024-11-06 | 2024-11-20 |  |  | 02 | 1 | ELIASE |

| ID | WBS | Activity | Duration | Start | Finish | Predecessors | Planned start | Planned finish | 06 -GC - Building Levels | 05 -GC - Building Phase | user_text |
| --- | --- | --- | --- | --- | --- | --- | --- | --- | --- | --- | --- |
|  | 3 | **Electrical Room E2.2** |  | 2025-10-08 | 2025-10-08 |  |  |  |  |  |  |
| PH02.EA.136 |  | ER E2.2 Install sprinkler heads | 5d | 2025-10-08 | 2025-10-08 | PH02.EA.1860 | 2024-11-05 | 2024-11-12 | 02 | 1 |  |
| PH02.EA.1860 |  | ER E2.2 Install fire protection | 1d | 2025-10-08 | 2025-10-08 | PH02.EA.1960 | 2024-11-04 | 2024-11-04 | 02 | 1 | All electrical rooms will |
| PH02.EA.1870 |  | ER E2.2 Layout and frame walls | 2d | 2025-10-08 | 2025-10-08 | PH02.M.1000 SS | 2024-10-28 | 2024-10-29 | 02 | 1 | start simutaneously |
| PH02.EA.1880 |  | ER E2.2 Install OAD ductwork Transitions | 6d | 2025-10-08 | 2025-10-08 | PH02.M.1000 SS, PH02.EA.2090 | 2024-10-30 | 2024-11-06 | 02 | 1 |  |
| PH02.EA.1890 |  | ER E2.2 Electrical rough-in | 1d | 2025-10-08 | 2025-10-08 | PH02.EA.1870 SS, PH02.EA.1880 SS | 2024-10-21 | 2024-10-21 | 02 | 1 |  |
| PH02.EA.1900 |  | ER E2.2 Mechanical rough-in | 1d | 2025-10-08 | 2025-10-08 | PH02.EA.1870 SS, PH02.EA.1880 SS | 2024-10-21 | 2024-10-21 | 02 | 1 |  |
| PH02.EA.1910 |  | ER E2.2 Fire alarm rough-in | 1d | 2025-10-08 | 2025-10-08 | PH02.EA.1870 SS, PH02.EA.1880 SS | 2024-10-21 | 2024-10-21 | 02 | 1 |  |
| PH02.EA.1920 |  | ER E2.2 Plumbing rough-in | 1d | 2025-10-08 | 2025-10-08 | PH02.EA.1880 SS, PH02.EA.1870 SS | 2024-10-21 | 2024-10-21 | 02 | 1 |  |
| PH02.EA.1930 |  | ER E2.2 In wall inspection | 1d | 2025-10-08 | 2025-10-08 | PH02.EA.1910, PH02.EA.1900, PH02.EA.1890, PH02.EA.1920 | 2024-10-22 | 2024-10-22 | 02 | 1 |  |
| PH02.EA.1940 |  | ER E2.2 Install drywall | 3d | 2025-10-08 | 2025-10-08 | PH02.EA.1930 | 2024-10-23 | 2024-10-25 | 02 | 1 |  |
| PH02.EA.1950 |  | ER E2.2 Finish drywall | 5d | 2025-10-08 | 2025-10-08 | PH02.EA.1940 | 2024-10-28 | 2024-11-01 | 02 | 1 |  |
| PH02.EA.1960 |  | ER E2.2 Paint drywall | 2d | 2025-10-08 | 2025-10-08 | PH02.EA.1950 | 2024-11-04 | 2024-11-05 | 02 | 1 |  |
| PH02.EA.1970 |  | ER E2.2 Install OAD dampers + Ductwork | 3d | 2025-10-08 | 2025-10-08 | PH02.EA.1960, PH02.EA.1950 | 2024-11-04 | 2024-11-06 | 02 | 1 |  |
| PH02.EA.1980 |  | ER E2.2 Install split units | 3d | 2025-10-08 | 2025-10-08 | PH02.EA.1970 | 2024-11-12 | 2024-11-14 | 02 | 1 |  |
| PH02.EA.1990 |  | ER E2.2 Install Busway and OH electrical supports | 5d | 2025-10-08 | 2025-10-08 | PH02.PR.1060, PH02.EA.1960 SS, PH02.EA.1950 | 2024-11-04 | 2024-11-08 | 02 | 1 |  |
| PH02.EA.2000 |  | ER E2.2 Install Electrical SWGR | 2d | 2025-10-08 | 2025-10-08 | PH02.PR.1070, PH02.EA.2130, PH02.EA.1990 | 2024-11-18 | 2024-11-19 | 02 | 1 |  |
| PH02.EA.2010 |  | ER E2.2 Install Feeder tray | 5d | 2025-10-08 | 2025-10-08 | PH02.EA.1990, PH02.EA.2000 | 2024-11-20 | 2024-11-26 | 02 | 1 |  |
| PH02.EA.2020 |  | ER E2.2 Install electrical panels and disconnects | 5d | 2025-10-08 | 2025-10-08 | PH02.PR.1170, PH02.EA.2010, PH02.PR.1190 | 2024-11-25 | 2024-12-02 | 02 | 1 |  |
| PH02.EA.2030 |  | ER E2.2 Pull and terminate feeders | 10d | 2025-10-08 | 2025-10-08 | PH02.EA.2010 SS+2d, PH02.EA.2010 FF | 2024-11-22 | 2024-12-06 | 02 | 1 |  |
| PH02.EA.2040 |  | ER E2.2 Install lighting | 3d | 2025-10-08 | 2025-10-08 | PH02.EA.2020, PH02.EA.2030 | 2024-12-20 | 2024-12-24 | 02 | 1 |  |
| PH02.EA.2050 |  | ER E2.2 Install accessories (shepherds hook, fire ext) | 1d | 2025-10-08 | 2025-10-08 | PH02.EA.2040 FF, PH02.EA.2040 | 2024-12-26 | 2024-12-26 | 02 | 1 |  |
| PH02.EA.2070 |  | ER E2.2 Clean electrical room | 1d | 2025-10-08 | 2025-10-08 | PH02.EA.2150, PH02.EA.2120, PH02.EA.2040, PH02.EA.1980, PH02.EA.2050 | 2025-02-18 | 2025-02-18 | 02 | 1 |  |
| PH02.EA.2090 |  | ER E2.2 Install Plenum on Louvers | 2d | 2025-10-08 | 2025-10-08 | PH02.M.1000 SS | 2024-10-28 | 2024-10-29 | 02 | 1 | start simutaneously |
| PH02.EA.2100 |  | ER E2.2 Install Vesda Piping System | 5d | 2025-10-08 | 2025-10-08 | PH02.EA.1960 | 2024-11-04 | 2024-11-08 | 02 | 1 |  |
| PH02.EA.2110 |  | ER E2.2 Install Refrigerantion Lines | 5d | 2025-10-08 | 2025-10-08 | PH02.EA.1960 | 2024-11-04 | 2024-11-08 | 02 | 1 |  |
| PH02.EA.2120 |  | ER E2.2 Install ERV | 2d | 2025-10-08 | 2025-10-08 | PH02.EA.2030, PH02.EA.2110 | 2024-12-20 | 2024-12-23 | 02 | 1 |  |
| PH02.EA.2130 |  | ER E2.2 Install Cable Trays | 5d | 2025-10-08 | 2025-10-08 | PH02.EA.1980 SS+2d, PH02.EA.1980 FF | 2024-11-14 | 2024-11-20 | 02 | 1 |  |
| PH02.EA.2140 |  | ER E2.2 Install Fire Alarm + Vesda Panel | 3d | 2025-10-08 | 2025-10-08 | PH02.EA.2100 | 2024-11-18 | 2024-11-20 | 02 | 1 |  |
| PH02.EA.2150 |  | ER E2.2 Install Control BMS & EPMS | 4d | 2025-10-08 | 2025-10-08 | PH02.EA.2030 | 2024-12-20 | 2024-12-26 | 02 | 1 |  |

| ID | WBS | Activity | Duration | Start | Finish | Predecessors | Planned start | Planned finish | user_text | 06 -GC - Building Levels | 05 -GC - Building Phase |
| --- | --- | --- | --- | --- | --- | --- | --- | --- | --- | --- | --- |
|  | 5 | **DAHU Galleries** |  | 2025-10-08 | 2025-10-08 |  |  |  |  |  |  |
|  | 1 | **DAHU Gallery North** |  | 2025-10-08 | 2025-10-08 |  |  |  |  |  |  |
| PH02.DAHU.1000 |  | DAHU North Install Fire Protection & VESDA | 2d | 2025-10-08 | 2025-10-08 | PH02.M.1000 SS | 2024-10-21 | 2024-10-22 | DAHU North and South will | 02 | 1 |
| PH02.DAHU.1010 |  | DAHU North Install IW Piping | 4d | 2025-10-08 | 2025-10-08 | PH02.M.1000 SS | 2024-10-21 | 2024-10-24 | work simutaneously | 02 | 1 |
| PH02.DAHU.1020 |  | DAHU North Install Outside Air Reference Piping | 3d | 2025-10-08 | 2025-10-08 | PH02.DAHU.1010 SS+2d | 2024-10-23 | 2024-10-25 |  | 02 | 1 |
| PH02.DAHU.1030 |  | DAHU North Frame DAHU wall and CSH catwalk | 6d | 2025-10-08 | 2025-10-08 | PH02.M.1000 SS | 2024-10-21 | 2024-10-28 |  | 02 | 1 |
| PH02.DAHU.1040 |  | DAHU North CSH Electrical rough-in | 5d | 2025-10-08 | 2025-10-08 | PH02.DAHU.1030 SS+2d | 2024-10-23 | 2024-10-29 |  | 02 | 1 |
| PH02.DAHU.1050 |  | DAHU North CSH Fire protection/alarm and VESDA rough-in | 3d | 2025-10-08 | 2025-10-08 | PH02.DAHU.1030 SS+2d | 2024-10-23 | 2024-10-25 |  | 02 | 1 |
| PH02.DAHU.1060 |  | DAHU North CSH In wall inspection | 1d | 2025-10-08 | 2025-10-08 | PH02.DAHU.1040, PH02.DAHU.1050 FF, PH02.DAHU.1050 | 2024-10-28 | 2024-10-28 |  | 02 | 1 |
| PH02.DAHU.1070 |  | DAHU North Install CSH drywall | 6d | 2025-10-08 | 2025-10-08 | PH02.DAHU.1060 | 2024-10-29 | 2024-11-05 |  | 02 | 1 |
| PH02.DAHU.1080 |  | DAHU North Finish CSH drywall | 13d | 2025-10-08 | 2025-10-08 | PH02.DAHU.1070 | 2024-11-18 | 2024-12-05 |  | 02 | 1 |
| PH02.DAHU.1090 |  | DAHU North Install DAHUs | 2d | 2025-10-08 | 2025-10-08 | PH02.PR.1010, PH02.DAHU.1680, PH02.DAHU.1000 | 2024-12-06 | 2024-12-09 |  | 02 | 1 |
| PH02.DAHU.1100 |  | DAHU North Install CSH railing | 2d | 2025-10-08 | 2025-10-08 | PH02.DAHU.1420 | 2024-12-02 | 2024-12-03 |  | 02 | 1 |
| PH02.DAHU.1120 |  | DAHU North Pull and terminate VFDs from electrical room | 5d | 2025-10-08 | 2025-10-08 | PH02.PR.1130, PH02.DAHU.1090 | 2024-11-25 | 2024-12-02 |  | 02 | 1 |
| PH02.DAHU.1130 |  | DAHU North Make DAHU Plumbing Connections | 3d | 2025-10-08 | 2025-10-08 | PH02.DAHU.1700, PH02.DAHU.1720, PH02.DAHU.1090 | 2024-11-07 | 2024-11-12 |  | 02 | 1 |
| PH02.DAHU.1140 |  | DAHU North Install Feeder Trays (DAHU, VFD, Communications) | 5d | 2025-10-08 | 2025-10-08 | PH02.DAHU.1420, PH02.DH.1190 SS | 2024-12-02 | 2024-12-06 |  | 02 | 1 |
| PH02.DAHU.1150 |  | DAHU North Pull DAHU Feeders | 2d | 2025-10-08 | 2025-10-08 | PH02.DH.1200 SS, PH02.DAHU.1140 | 2024-12-09 | 2024-12-10 |  | 02 | 1 |
| PH02.DAHU.1160 |  | DAHU North Make DAHU Electrical Connections | 2d | 2025-10-08 | 2025-10-08 | PH02.DAHU.1150 | 2024-12-16 | 2024-12-17 |  | 02 | 1 |
| PH02.DAHU.1170 |  | DAHU North Make DAHU Controls Connections | 3d | 2025-10-08 | 2025-10-08 | PH02.DAHU.1160 | 2024-12-18 | 2024-12-20 |  | 02 | 1 |
| PH02.DAHU.1180 |  | DAHU North Install Temporary Wall | 2d | 2025-10-08 | 2025-10-08 | PH02.DAHU.1170 | 2024-12-23 | 2024-12-24 |  | 02 | 1 |
| PH02.DAHU.1190 |  | DAHU North Install CSH ladders | 2d | 2025-10-08 | 2025-10-08 | PH02.DAHU.1170 | 2024-12-23 | 2024-12-24 |  | 02 | 1 |
| PH02.DAHU.1200 |  | DAHU North Clean DAHU Gallery and CSH | 1d | 2025-10-08 | 2025-10-08 | PH02.DAHU.1730, PH02.DAHU.1180, PH02.DAHU.1190, PH02.DAHU.1100, PH02.DAHU.1160 | 2025-02-18 | 2025-02-18 |  | 02 | 1 |
| PH02.DAHU.1420 |  | DAHU North Paint CSH drywall | 5d | 2025-10-08 | 2025-10-08 | PH02.DAHU.1080 | 2024-11-25 | 2024-12-02 |  | 02 | 1 |
| PH02.DAHU.1650 |  | DAHU North Coredrilling On 2nd Floor | 5d | 2025-10-08 | 2025-10-08 | PH02.M.1000 SS | 2024-10-21 | 2024-10-25 | DAHU North and South will | 02 | 1 |
| PH02.DAHU.1660 |  | DAHU North Install Floor Drains 2nd Floor | 2d | 2025-10-08 | 2025-10-08 | PH02.DAHU.1650 | 2024-10-28 | 2024-10-29 | DAHU North and South will | 02 | 1 |
| PH02.DAHU.1670 |  | DAHU North Concrete Infill 2nd Floor | 2d | 2025-10-08 | 2025-10-08 | PH02.DAHU.1660 | 2024-10-28 | 2024-10-29 | DAHU North and South will | 02 | 1 |
| PH02.DAHU.1680 |  | DAHU North Install OAD Damper | 4d | 2025-10-08 | 2025-10-08 | PH02.DAHU.1010 | 2024-10-25 | 2024-10-30 |  | 02 | 1 |
| PH02.DAHU.1690 |  | DAHU North Install Sprinkler Feed Lines | 4d | 2025-10-08 | 2025-10-08 | PH02.DAHU.1680 | 2024-10-28 | 2024-10-31 |  | 02 | 1 |
| PH02.DAHU.1700 |  | DAHU North Install Low Point Drain | 4d | 2025-10-08 | 2025-10-08 | PH02.DAHU.1670, PH02.DAHU.1690 FF | 2024-10-30 | 2024-11-04 |  | 02 | 1 |
| PH02.DAHU.1720 |  | DAHU North Install IW Drops | 3d | 2025-10-08 | 2025-10-08 | PH02.DAHU.1090 | 2024-10-28 | 2024-10-30 |  | 02 | 1 |
| PH02.DAHU.1730 |  | DAHU North Install VESDA Panels | 2d | 2025-10-08 | 2025-10-08 | PH02.DAHU.1180 | 2024-12-26 | 2024-12-27 |  | 02 | 1 |

| ID | WBS | Activity | Duration | Start | Finish | Predecessors | Planned start | Planned finish | Constraint | user_text | 06 -GC - Building Levels | 05 -GC - Building Phase |
| --- | --- | --- | --- | --- | --- | --- | --- | --- | --- | --- | --- | --- |
|  | 2 | **DAHU Gallery South** |  | 2025-10-08 | 2025-10-08 |  |  |  |  |  |  |  |
| PH02.DAHU.1430 |  | DAHU South Install fire protection and VESDA | 2d | 2025-10-08 | 2025-10-08 | PH02.M.1000 SS | 2024-10-21 | 2024-10-22 |  | DAHU North and South will | 02 | 1 |
| PH02.DAHU.1440 |  | DAHU South Install IW Piping | 4d | 2025-10-08 | 2025-10-08 | PH02.M.1000 SS | 2024-10-21 | 2024-10-24 |  | work simutaneously | 02 | 1 |
| PH02.DAHU.1450 |  | DAHU South Install Outside Air Reference Piping | 3d | 2025-10-08 | 2025-10-08 | PH02.DAHU.1440 FF | 2024-10-22 | 2024-10-24 |  |  | 02 | 1 |
| PH02.DAHU.1460 |  | DAHU South Frame DAHU wall and CSH catwalk | 5d | 2025-10-08 | 2025-10-08 | PH02.M.1000 SS | 2024-10-21 | 2024-10-25 |  |  | 02 | 1 |
| PH02.DAHU.1470 |  | DAHU South CSH Fire protection/alarm and VESDA rough-in | 3d | 2025-10-08 | 2025-10-08 | PH02.DAHU.1460 | 2024-10-28 | 2024-10-30 |  |  | 02 | 1 |
| PH02.DAHU.1480 |  | DAHU South CSH Electrical rough-in | 3d | 2025-10-08 | 2025-10-08 | PH02.DAHU.1460 SS | 2024-10-21 | 2024-10-23 |  |  | 02 | 1 |
| PH02.DAHU.1490 |  | DAHU South CSH In wall inspection | 1d | 2025-10-08 | 2025-10-08 | PH02.DAHU.1480, PH02.DAHU.1470 FF, PH02.DAHU.1470 | 2024-10-31 | 2024-10-31 |  |  | 02 | 1 |
| PH02.DAHU.1500 |  | DAHU South Install CSH drywall | 6d | 2025-10-08 | 2025-10-08 | PH02.DAHU.1810, PH02.DAHU.1490 | 2024-11-01 | 2024-11-08 |  |  | 02 | 1 |
| PH02.DAHU.1510 |  | DAHU South Finish CSH drywall | 10d | 2025-10-08 | 2025-10-08 | PH02.DAHU.1500 | 2024-11-12 | 2024-11-25 |  |  | 02 | 1 |
| PH02.DAHU.1520 |  | DAHU South Paint CSH drywall | 4d | 2025-10-08 | 2025-10-08 | PH02.DAHU.1510 | 2024-11-25 | 2024-11-29 |  |  | 02 | 1 |
| PH02.DAHU.1530 |  | DAHU South Install DAHUs | 2d | 2025-10-08 | 2025-10-08 | PH02.PR.1010, PH02.DAHU.1430 | 2024-12-04 | 2024-12-05 |  |  | 02 | 1 |
| PH02.DAHU.1540 |  | DAHU South Install CSH railing | 2d | 2025-10-08 | 2025-10-08 | PH02.DAHU.1520, PH02.DAHU.1530 | 2024-12-02 | 2024-12-03 |  |  | 02 | 1 |
| PH02.DAHU.1550 |  | DAHU South Install VFDs | 3d | 2025-10-08 | 2025-10-08 | PH02.PR.1130, PH02.DAHU.1530 | 2024-12-05 | 2024-12-09 | finish on or after 2024-12-09 |  | 02 | 1 |
| PH02.DAHU.1560 |  | DAHU South Make DAHU plumbing connections | 5d | 2025-10-08 | 2025-10-08 | PH02.DAHU.1760 SS+2d, PH02.DAHU.1530 | 2024-10-30 | 2024-11-05 |  |  | 02 | 1 |
| PH02.DAHU.1570 |  | DAHU South Pull and terminate VFDs from electrical room | 5d | 2025-10-08 | 2025-10-08 | PH02.DAHU.1550 | 2024-12-19 | 2024-12-26 |  |  | 02 | 1 |
| PH02.DAHU.1580 |  | DAHU South Install feeder trays (DAHU, VFD, communications) | 5d | 2025-10-08 | 2025-10-08 | PH02.DAHU.1530 | 2024-10-28 | 2024-11-01 |  |  | 02 | 1 |
| PH02.DAHU.1590 |  | DAHU South Pull DAHU Feeders | 2d | 2025-10-08 | 2025-10-08 | PH02.DH.1200 SS, PH02.DAHU.1580 | 2024-11-27 | 2024-11-29 |  |  | 02 | 1 |
| PH02.DAHU.1600 |  | DAHU South Make DAHU electrical connections | 2d | 2025-10-08 | 2025-10-08 | PH02.DAHU.1590 | 2024-12-02 | 2024-12-03 |  |  | 02 | 1 |
| PH02.DAHU.1610 |  | DAHU South Make DAHU controls connections | 3d | 2025-10-08 | 2025-10-08 | PH02.DAHU.1600 | 2024-12-05 | 2024-12-09 |  |  | 02 | 1 |
| PH02.DAHU.1620 |  | DAHU South Install temporary wall | 2d | 2025-10-08 | 2025-10-08 | PH02.DAHU.1610 | 2024-12-16 | 2024-12-17 |  |  | 02 | 1 |
| PH02.DAHU.1630 |  | DAHU South Install CSH ladders | 2d | 2025-10-08 | 2025-10-08 | PH02.DAHU.1610 | 2024-12-23 | 2024-12-24 |  |  | 02 | 1 |
| PH02.DAHU.1640 |  | DAHU South Clean DAHU gallery and CSH | 1d | 2025-10-08 | 2025-10-08 | PH02.DAHU.1800, PH02.DAHU.1620, PH02.DAHU.1630 FF, PH02.DAHU.1540, PH02.DAHU.1600 | 2025-02-18 | 2025-02-18 |  |  | 02 | 1 |
| PH02.DAHU.1740 |  | DAHU South Coredrilling On 2nd Floor | 5d | 2025-10-08 | 2025-10-08 | PH02.M.1000 SS | 2024-10-21 | 2024-10-25 |  | DAHU North and South will | 02 | 1 |
| PH02.DAHU.1750 |  | DAHU South Install Floor Drains 2nd Floor | 2d | 2025-10-08 | 2025-10-08 | PH02.DAHU.1740 | 2024-10-28 | 2024-10-29 |  | DAHU North and South will | 02 | 1 |
| PH02.DAHU.1760 |  | DAHU South Install IW Drops | 3d | 2025-10-08 | 2025-10-08 | PH02.DAHU.1530, PH02.DAHU.1440 | 2024-10-28 | 2024-10-30 |  | work simutaneously | 02 | 1 |
| PH02.DAHU.1770 |  | DAHU South Install Sprinkler Lines | 4d | 2025-10-08 | 2025-10-08 | PH02.DAHU.1530 | 2024-10-28 | 2024-10-31 |  |  | 02 | 1 |
| PH02.DAHU.1800 |  | DAHU South Install VESDA Panels | 2d | 2025-10-08 | 2025-10-08 | PH02.DAHU.1620 | 2024-12-18 | 2024-12-19 |  |  | 02 | 1 |
| PH02.DAHU.1810 |  | DAHU South Concrete Infill 2nd Floor | 2d | 2025-10-08 | 2025-10-08 | PH02.DAHU.1750 | 2024-10-28 | 2024-10-29 |  | DAHU North and South will | 02 | 1 |

| ID | WBS | Activity | Duration | Start | Finish | Predecessors | Planned start | Planned finish | 06 -GC - Building Levels | 05 -GC - Building Phase | user_text |
| --- | --- | --- | --- | --- | --- | --- | --- | --- | --- | --- | --- |
|  | 6 | **Data Hall Gallery** |  | 2025-10-08 | 2025-10-08 |  |  |  |  |  |  |
| PH02.DH.1000 |  | Data Hall Install upper temp wall | 2d | 2025-10-08 | 2025-10-08 | PH02.DH.1410 | 2024-11-19 | 2024-11-20 | 02 | 1 |  |
| PH02.DH.1010 |  | Data Hall Rough-in electrical for exhaust fans | 5d | 2025-10-08 | 2025-10-08 | PH01.DH.1010 SS | 2024-09-23 | 2024-09-27 | 02 | 1 |  |
| PH02.DH.1020 |  | Data Hall Install exhaust fan drip pans | 5d | 2025-10-08 | 2025-10-08 | PH02.DH.1010 SS+2d | 2024-09-23 | 2024-09-27 | 02 | 1 |  |
| PH02.DH.1030 |  | Data Hall Install Fire Protection (high) | 5d | 2025-10-08 | 2025-10-08 | PH02.DH.1020 SS+3d | 2024-09-26 | 2024-10-02 | 02 | 1 |  |
| PH02.DH.1040 |  | Data Hall Pipe exhaust fans drip pans | 4d | 2025-10-08 | 2025-10-08 | PH02.DH.1020 | 2024-09-30 | 2024-10-03 | 02 | 1 |  |
| PH02.DH.1050 |  | Data Hall Layout and frame B/E/3.5 line walls | 5d | 2025-10-08 | 2025-10-08 | PH02.M.1000 SS | 2024-10-21 | 2024-10-25 | 02 | 1 |  |
| PH02.DH.1060 |  | Data Hall In wall rough-in | 5d | 2025-10-08 | 2025-10-08 | PH02.DH.1050 SS | 2024-10-21 | 2024-10-25 | 02 | 1 |  |
| PH02.DH.1070 |  | Data Hall In wall inspection | 1d | 2025-10-08 | 2025-10-08 | PH02.DH.1060 | 2024-10-28 | 2024-10-28 | 02 | 1 |  |
| PH02.DH.1080 |  | Data Hall Install Drywall on B/E/3.5 line walls | 5d | 2025-10-08 | 2025-10-08 | PH02.DH.1070 FF | 2024-10-29 | 2024-11-04 | 02 | 1 |  |
| PH02.DH.1090 |  | Data Hall Finish B/E/3.5 line walls | 7d | 2025-10-08 | 2025-10-08 | PH02.DH.1460, PH02.DH.1080 SS+3d, PH02.DH.1080 FF | 2024-10-31 | 2024-11-08 | 02 | 1 |  |
| PH02.DH.1100 |  | Data Hall Frame exhaust plenum | 10d | 2025-10-08 | 2025-10-08 | PH02.DH.1050 SS | 2024-10-21 | 2024-11-01 | 02 | 1 |  |
| PH02.DH.1110 |  | Data Hall Rough-in exhaust plenum | 2d | 2025-10-08 | 2025-10-08 | PH02.DH.1100 | 2024-10-28 | 2024-10-29 | 02 | 1 |  |
| PH02.DH.1120 |  | Data Hall Install Drywall on Exterior Exhaust Plenum | 7d | 2025-10-08 | 2025-10-08 | PH02.DH.1110 | 2024-10-30 | 2024-11-07 | 02 | 1 |  |
| PH02.DH.1130 |  | Data Hall Finish exterior exhaust plenum | 10d | 2025-10-08 | 2025-10-08 | PH02.DH.1120 | 2024-11-07 | 2024-11-21 | 02 | 1 |  |
| PH02.DH.1140 |  | Data Hall Install Lower temp wall and doors | 3d | 2025-10-08 | 2025-10-08 | PH02.DH.1290, PH02.DH.1000, PH02.DH.1120, PH02.DH.1130, PH02.DH.1230 | 2024-12-20 | 2024-12-24 | 02 | 1 |  |
| PH02.DH.1150 |  | Data Hall Install return air dampers | 3d | 2025-10-08 | 2025-10-08 | PH02.DH.1380 SS, PH02.DH.1090 | 2024-11-12 | 2024-11-14 | 02 | 1 |  |
| PH02.DH.1160 |  | Data Hall Install Supply Air Dampers | 3d | 2025-10-08 | 2025-10-08 | PH02.DH.1150 | 2024-11-15 | 2024-11-19 | 02 | 1 |  |
| PH02.DH.1170 |  | Data Hall Install fire protection (low) | 5d | 2025-10-08 | 2025-10-08 | PH02.DH.1180, PH02.DH.1150 | 2024-11-15 | 2024-11-21 | 02 | 1 |  |
| PH02.DH.1180 |  | Data Hall Install Racking | 8d | 2025-10-08 | 2025-10-08 | PH02.PR.1000, PH02.DH.1040, PH02.DH.1450, PH02.DH.1440, PH02.DH.1080, PH02.DH.1030 | 2024-10-31 | 2024-11-12 | 02 | 1 |  |
| PH02.DH.1190 |  | Data Hall Install DAHU feeder tray | 10d | 2025-10-08 | 2025-10-08 | PH02.DH.1180 | 2024-11-13 | 2024-11-26 | 02 | 1 |  |
| PH02.DH.1200 |  | Data Hall Pull DAHU feeders | 2d | 2025-10-08 | 2025-10-08 | PH02.DH.1190 | 2024-11-27 | 2024-11-29 | 02 | 1 |  |
| PH02.DH.1210 |  | Data Hall Install vertical communication risers | 3d | 2025-10-08 | 2025-10-08 | PH02.DH.1200 | 2024-12-02 | 2024-12-04 | 02 | 1 |  |
| PH02.DH.1220 |  | Data Hall Install guardrails at risers | 2d | 2025-10-08 | 2025-10-08 | PH02.DH.1210 | 2024-12-02 | 2024-12-03 | 02 | 1 |  |
| PH02.DH.1230 |  | Data Hall Install ACT grid | 4d | 2025-10-08 | 2025-10-08 | PH02.DH.1500, PH02.DH.1270 | 2024-11-18 | 2024-11-21 | 02 | 1 |  |
| PH02.DH.1240 |  | Data Hall Electrical ceiling rough-in | 5d | 2025-10-08 | 2025-10-08 | PH02.DH.1470, PH02.DH.1170, PH02.DH.1230 | 2024-11-22 | 2024-11-29 | 02 | 1 |  |
| PH02.DH.1250 |  | Data Hall Install Fire protection Sprinkler Heads | 4d | 2025-10-08 | 2025-10-08 | PH02.DH.1230 | 2024-11-22 | 2024-11-27 | 02 | 1 |  |
| PH02.DH.1260 |  | Data Hall Fire alarm and VESDA rough-in | 4d | 2025-10-08 | 2025-10-08 | PH02.DH.1280 FF, PH02.DH.1230 | 2024-12-06 | 2024-12-11 | 02 | 1 |  |
| PH02.DH.1270 |  | Data Hall Install upper twin wall | 5d | 2025-10-08 | 2025-10-08 | PH02.DH.1180 SS+3d | 2024-11-05 | 2024-11-12 | 02 | 1 |  |
| PH02.DH.1280 |  | Data Hall Install Ceiling Tiles | 4d | 2025-10-08 | 2025-10-08 | PH02.DH.1510, PH02.DH.1230, PH02.DH.1250, PH02.DH.1240, PH02.DH.1270 | 2024-12-02 | 2024-12-05 | 02 | 1 |  |
| PH02.DH.1290 |  | Data Hall Install Basket Tray | 10d | 2025-10-08 | 2025-10-08 | PH02.DH.1280 SS+2d, PH02.DH.1280 FF | 2024-12-04 | 2024-12-17 | 02 | 1 | Changed from 15 to 10 |
| PH02.DH.1300 |  | Data Hall Pull branch circuit and PDC feeders | 10d | 2025-10-08 | 2025-10-08 | PH02.EA.2030 SS, PH02.DH.1290 FF+6d | 2024-12-16 | 2024-12-30 | 02 | 1 | Changed from 15 to 10 |
| PH02.DH.1310 |  | Data Hall Install PDC cabinets | 3d | 2025-10-08 | 2025-10-08 | PH02.PR.1100 FF, PH02.DH.1230 | 2024-12-18 | 2024-12-20 | 02 | 1 |  |
| PH02.DH.1320 |  | Data Hall Terminate PDC cabinets | 5d | 2025-10-08 | 2025-10-08 | PH02.DH.1310, PH02.DH.1300 | 2024-12-31 | 2025-01-07 | 02 | 1 |  |
| PH02.DH.1330 |  | Data Hall Install PDC Whips and labels | 5d | 2025-10-08 | 2025-10-08 | PH02.DH.1290, PH02.PR.1100 FF | 2024-12-20 | 2024-12-27 | 02 | 1 | Data hall is driving out the |
| PH02.DH.1340 |  | Data Hall Perform PDC Whip Checks | 2d | 2025-10-08 | 2025-10-08 | PH02.DH.1330, PH02.DH.1320 FF+1d | 2025-01-07 | 2025-01-08 | 02 | 1 | NEA data in the milestones |
| PH02.DH.1350 |  | Data Hall Install lower twin wall and doors | 5d | 2025-10-08 | 2025-10-08 | PH02.DH.1180, PH02.DH.1390 | 2025-01-09 | 2025-01-15 | 02 | 1 | Changed from 7 to 5 |
| PH02.DH.1360 |  | Data Hall Install Perfect Positioning | 2d | 2025-10-08 | 2025-10-08 | PH02.DH.1320, PH02.DH.1340 | 2025-01-21 | 2025-01-22 | 02 | 1 | Must complete by 10/23/23 |
| PH02.DH.1370 |  | Data Hall Clean data hall | 2d | 2025-10-08 | 2025-10-08 | PH02.DH.1490, PH02.DH.1480, PH02.DH.1280, PH02.DH.1410, PH02.DH.1140, PH02.DH.1220, PH02.DH.1360, PH02.DH.1350 | 2025-01-23 | 2025-01-24 | 02 | 1 |  |
| PH02.DH.1380 |  | Data Hall Paint B/E/3.5 line walls | 5d | 2025-10-08 | 2025-10-08 | PH02.DH.1090 | 2024-11-12 | 2024-11-18 | 02 | 1 |  |
| PH02.DH.1390 |  | Data Hall Install Drywall on Interior Exhaust Plenum | 12d | 2025-10-08 | 2025-10-08 | PH02.DH.1110 | 2024-10-30 | 2024-11-15 | 02 | 1 |  |
| PH02.DH.1400 |  | Data Hall Finish interior exhaust plenum | 15d | 2025-10-08 | 2025-10-08 | PH02.DH.1390 | 2024-11-12 | 2024-12-03 | 02 | 1 | Changed from 20 to 15 |
| PH02.DH.1410 |  | Data Hall Paint exterior exhaust plenum | 5d | 2025-10-08 | 2025-10-08 | PH02.DH.1130 | 2024-11-12 | 2024-11-18 | 02 | 1 |  |
| PH02.DH.1420 |  | Data Hall Paint Interior Exhaust plenum | 5d | 2025-10-08 | 2025-10-08 | PH02.DH.1400 | 2024-11-25 | 2024-12-02 | 02 | 1 |  |
| PH02.DH.1430 |  | Data Hall Install High VESDA Pipes | 4d | 2025-10-08 | 2025-10-08 | PH02.DH.1030 | 2024-09-30 | 2024-10-03 | 02 | 1 |  |
| PH02.DH.1440 |  | Data Hall Install Fire Protection (Low) | 5d | 2025-10-08 | 2025-10-08 | PH02.DH.1030 SS+2d | 2024-09-30 | 2024-10-04 | 02 | 1 |  |
| PH02.DH.1450 |  | Data Hall Hang Wire for Ceiling Grid | 4d | 2025-10-08 | 2025-10-08 | PH02.DH.1440 SS+2d | 2024-10-21 | 2024-10-24 | 02 | 1 |  |
| PH02.DH.1460 |  | Data Hall Install Dampers/Screens | 3d | 2025-10-08 | 2025-10-08 | PH02.DH.1080 SS | 2024-10-28 | 2024-10-30 | 02 | 1 |  |
| PH02.DH.1470 |  | Data Hall Install BMS Panel | 3d | 2025-10-08 | 2025-10-08 | PH02.DH.1090 | 2024-11-12 | 2024-11-14 | 02 | 1 |  |
| PH02.DH.1480 |  | Data Hall Install VESDA Panels | 2d | 2025-10-08 | 2025-10-08 | PH02.DH.1420, PH02.DH.1260, PH02.DH.1280, PH02.DH.1500 | 2024-12-20 | 2024-12-23 | 02 | 1 | NEA data in the milestones |
| PH02.DH.1490 |  | Data Hall Pull & Terminate VESDA Wiring | 2d | 2025-10-08 | 2025-10-08 | PH02.DH.1480 | 2024-12-24 | 2024-12-26 | 02 | 1 | NEA data in the milestones |
| PH02.DH.1500 |  | Data Hall Install Lower VESDA Pipes | 4d | 2025-10-08 | 2025-10-08 | PH02.DH.1430 | 2024-10-21 | 2024-10-24 | 02 | 1 |  |
| PH02.DH.1510 |  | Data Hall Install Back Draft Damper | 4d | 2025-10-08 | 2025-10-08 | PH02.DH.1230 | 2024-11-22 | 2024-11-27 | 02 | 1 |  |
| PH02.DH.1520 |  | Data Hall Install BMS/EPMS | 5d | 2025-10-08 | 2025-10-08 | PH02.DH.1210 | 2024-12-02 | 2024-12-06 | 02 | 1 |  |

| ID | WBS | Activity | Duration | Start | Finish | Predecessors | Planned start | Planned finish | Calendar | user_text | 06 -GC - Building Levels | 05 -GC - Building Phase | SCHDULE UPDATE |
| --- | --- | --- | --- | --- | --- | --- | --- | --- | --- | --- | --- | --- | --- |
|  | 7 | **Startup and Commissioning** |  | 2025-10-08 | 2025-10-08 |  |  |  |  |  |  |  |  |
| PH02.SU.1000 |  | OWNER FOD Walks | 3d | 2025-10-08 | 2025-10-08 | PH02.GEN.1120, PH02.XFMR.1100, PH02.GEN.1110, PH02.DAHU.1570, PH02.XFMR.1110, PH02.DAHU.1120, ISSU15.10, ISSU14.20, ISSU14.40 | 2025-02-05 | 2025-02-07 |  | Must begin by 10/09/23 | 02 | 1 |  |
| PH02.SU.1010 |  | Energization | 7d | 2025-10-08 | 2025-10-08 | PH02.SU.1000 | 2025-02-10 | 2025-02-19 |  | Must complete by 10/16/23 | 02 | 1 |  |
| PH02.SU.1030 |  | L4-L5 Commissioning | 10d | 2025-10-08 | 2025-10-08 | PH02.M.1070, PH02.SU.1010, PH02.SU.1050, PH02.DH.1370 | 2025-04-28 | 2025-05-09 |  |  | 02 | 1 |  |
| PH02.SU.1040 |  | Comissioning Complete | 1d | 2025-10-08 | 2025-10-08 | PH02.SU.1030 | 2025-05-15 | 2025-05-15 |  |  | 02 | 1 |  |
| PH02.SU.1050 |  | Startup activities for H2C | 4d | 2025-10-08 | 2025-10-08 | PH02.M.1060, PH02.SU.1010 | 2025-03-24 | 2025-03-27 |  |  | 02 | 1 |  |
|  | INSPECTIONS | **Final Inspections** |  | 2025-10-08 | 2025-10-08 |  |  |  |  |  |  |  |  |
| PH02.1000 |  | Fire Protection Final Inspection | 2d | 2025-10-08 | 2025-10-08 | PH02.DAHU.1770, PH02.EA.136, PH02.DAHU.1050, PH02.DAHU.1430, PH02.DH.1250, PH02.SU.1010, PH02.EA.2070, PH02.DAHU.1200, PH02.DAHU.1640, PH02.DH.1370 | 2025-02-26 | 2025-02-27 |  | Must complete by 10/16/23 | 02 | 1 |  |
| PH02.1010 |  | Electrical Final Inspection | 2d | 2025-10-08 | 2025-10-08 | PH02.SU.1010, PH02.EA.2070, PH02.DAHU.1200, PH02.DAHU.1640, PH02.DH.1370 | 2025-02-26 | 2025-02-27 |  | Must complete by 10/16/23 | 02 | 1 |  |
| PH02.1020 |  | Fire Alarm Final Inspection | 2d | 2025-10-08 | 2025-10-08 | PH02.EA.2140, PH02.SU.1010, PH02.EA.2070, PH02.DAHU.1200, PH02.DAHU.1640, PH02.DH.1370 | 2025-02-26 | 2025-02-27 |  | Must complete by 10/16/23 | 02 | 1 |  |
| PH02.1030 |  | Mechanical Final Inspection | 2d | 2025-10-08 | 2025-10-08 | PH02.SU.1010, PH02.EA.2070, PH02.DAHU.1200, PH02.DAHU.1640, PH02.DH.1370 | 2025-02-26 | 2025-02-27 |  | Must complete by 10/16/23 | 02 | 1 |  |
| PH02.1040 |  | Plumbing Final Inspection | 2d | 2025-10-08 | 2025-10-08 | PH02.SU.1010, PH02.EA.2070, PH02.DAHU.1200, PH02.DAHU.1640, PH02.DH.1370 | 2025-02-26 | 2025-02-27 |  | Must complete by 10/16/23 | 02 | 1 |  |
| PH02.1050 |  | Special Inspections Sign-off | 2d | 2025-10-08 | 2025-10-08 | PH02.M.1070 | 2025-05-12 | 2025-05-13 |  | Must complete by 10/16/23 | 02 | 1 |  |
|  | PH3 | **Phase 3 Construction** |  | 2025-10-08 | 2025-10-08 |  |  |  |  |  |  |  |  |
|  | 2 | **Site** |  | 2025-10-08 | 2025-10-08 |  |  |  |  |  |  |  |  |
|  | 2 | **Generator Yard** |  | 2025-10-08 | 2025-10-08 |  |  |  |  |  |  |  |  |
|  | 2 | **Generators-Phase 3** |  | 2025-10-08 | 2025-10-08 |  |  |  |  |  |  |  |  |
| PH03.GEN.1100 |  | Gen Yard Install generators | 2d | 2025-10-08 | 2025-10-08 | PH2-10.GEN.1210, PH03.PR.1050 | 2024-11-13 | 2024-11-14 |  |  | 02 | 1 | ELIASE |
| PH03.GEN.1110 |  | Gen Yard Anchor generators | 2d | 2025-10-08 | 2025-10-08 | PH03.GEN.1100, PH03.GEN.1130 | 2024-12-26 | 2024-12-27 |  |  | 02 | 1 | ELIASE |
| PH03.GEN.1120 |  | Gen Yard Install cable bus from generator to electrical room | 8d | 2025-10-08 | 2025-10-08 | PH03.XFMR.1100 FF, PH03.GEN.1110 FF, PH03.PR.1160 | 2025-01-14 | 2025-01-24 |  |  | 02 | 1 | ELIASE |
| PH03.GEN.1130 |  | Gen Yard Install generators Exhaust Duct | 2d | 2025-10-08 | 2025-10-08 | PH03.GEN.1100 | 2024-12-23 | 2024-12-24 |  |  | 02 | 1 | ELIASE |
|  | 4 | **MV Transformers-Phase 3** |  | 2025-10-08 | 2025-10-08 |  |  |  |  |  |  |  |  |
| PH03.XFMR.1100 |  | XFMR Install cable bus to electrical room | 8d | 2025-10-08 | 2025-10-08 | PH03.XFMR.1110, PH03.PR.1160, PH02.XFMR.1100 | 2025-01-15 | 2025-01-24 | Calendar 06 - 6 Day Work Week w/ Mass. Holidays |  | 02 | 1 | ELIASE |
| PH03.XFMR.1110 |  | XFMR Pull and terminate to MV SWGR | 10d | 2025-10-08 | 2025-10-08 | PH03.PR.1040 FF | 2024-11-07 | 2024-11-21 |  |  | 02 | 1 | ELIASE |

| ID | WBS | Activity | Duration | Start | Finish | Predecessors | Planned start | Planned finish | 06 -GC - Building Levels | 05 -GC - Building Phase | user_text |
| --- | --- | --- | --- | --- | --- | --- | --- | --- | --- | --- | --- |
|  | 3 | **Electrical Room E2.3** |  | 2025-10-08 | 2025-10-08 |  |  |  |  |  |  |
| PH03.EA.136 |  | ER E2.3 Install sprinkler heads | 5d | 2025-10-08 | 2025-10-08 | PH03.EA.1860 | 2024-11-12 | 2024-11-18 | 02 | 1 |  |
| PH03.EA.1860 |  | ER E2.3 Install fire protection | 1d | 2025-10-08 | 2025-10-08 | PH03.EA.1960 | 2024-11-29 | 2024-11-29 | 02 | 1 | All electrical rooms will |
| PH03.EA.1870 |  | ER E2.3 Layout and frame walls | 2d | 2025-10-08 | 2025-10-08 | PH03.M.1000 SS | 2024-10-28 | 2024-10-29 | 02 | 1 | start simutaneously |
| PH03.EA.1880 |  | ER E2.3 Install OAD ductwork Transitions | 6d | 2025-10-08 | 2025-10-08 | PH03.EA.2090, PH03.M.1000 SS | 2024-10-30 | 2024-11-06 | 02 | 1 |  |
| PH03.EA.1890 |  | ER E2.3 Electrical rough-in | 3d | 2025-10-08 | 2025-10-08 | PH03.EA.1870, PH03.EA.1880 | 2024-11-07 | 2024-11-12 | 02 | 1 |  |
| PH03.EA.1900 |  | ER E2.3 Mechanical rough-in | 3d | 2025-10-08 | 2025-10-08 | PH03.EA.1870, PH03.EA.1880 | 2024-11-07 | 2024-11-12 | 02 | 1 |  |
| PH03.EA.1910 |  | ER E2.3 Fire alarm rough-in | 3d | 2025-10-08 | 2025-10-08 | PH03.EA.1870, PH03.EA.1880 | 2024-11-07 | 2024-11-12 | 02 | 1 |  |
| PH03.EA.1920 |  | ER E2.3 Plumbing rough-in | 3d | 2025-10-08 | 2025-10-08 | PH03.EA.1880, PH03.EA.1870 | 2024-11-07 | 2024-11-12 | 02 | 1 |  |
| PH03.EA.1930 |  | ER E2.3 In wall inspection | 1d | 2025-10-08 | 2025-10-08 | PH03.EA.1910, PH03.EA.1900, PH03.EA.1890, PH03.EA.1920 | 2024-11-13 | 2024-11-13 | 02 | 1 |  |
| PH03.EA.1940 |  | ER E2.3 Install drywall | 3d | 2025-10-08 | 2025-10-08 | PH03.EA.1930 FF | 2024-11-14 | 2024-11-18 | 02 | 1 |  |
| PH03.EA.1950 |  | ER E2.3 Finish drywall | 5d | 2025-10-08 | 2025-10-08 | PH03.EA.1940 | 2024-11-19 | 2024-11-25 | 02 | 1 |  |
| PH03.EA.1960 |  | ER E2.3 Paint drywall | 2d | 2025-10-08 | 2025-10-08 | PH03.EA.1950 | 2024-11-26 | 2024-11-27 | 02 | 1 |  |
| PH03.EA.1970 |  | ER E2.3 Install OAD dampers + Ductwork | 3d | 2025-10-08 | 2025-10-08 | PH03.EA.1960, PH03.EA.1950 | 2024-11-29 | 2024-12-03 | 02 | 1 |  |
| PH03.EA.1980 |  | ER E2.3 Install split units | 3d | 2025-10-08 | 2025-10-08 | PH03.EA.1970 | 2024-12-02 | 2024-12-04 | 02 | 1 |  |
| PH03.EA.1990 |  | ER E2.3 Install Busway and OH electrical supports | 5d | 2025-10-08 | 2025-10-08 | PH03.EA.1960 SS, PH03.EA.1950, PH03.PR.1060 | 2024-11-26 | 2024-12-03 | 02 | 1 |  |
| PH03.EA.2000 |  | ER E2.3 Install Electrical SWGR | 2d | 2025-10-08 | 2025-10-08 | PH03.EA.2130, PH03.EA.1990, PH03.PR.1070 | 2024-11-27 | 2024-11-29 | 02 | 1 |  |
| PH03.EA.2010 |  | ER E2.3 Install Feeder tray | 5d | 2025-10-08 | 2025-10-08 | PH03.EA.1990, PH03.EA.2000 | 2024-12-02 | 2024-12-06 | 02 | 1 |  |
| PH03.EA.2020 |  | ER E2.3 Install electrical panels and disconnects | 5d | 2025-10-08 | 2025-10-08 | PH03.EA.2010, PH03.PR.1170, PH03.PR.1190 | 2024-12-23 | 2024-12-30 | 02 | 1 |  |
| PH03.EA.2030 |  | ER E2.3 Pull and terminate feeders | 10d | 2025-10-08 | 2025-10-08 | PH03.EA.2010 SS+2d, PH03.EA.2010 FF, WTHR-10 | 2024-12-23 | 2025-01-07 | 02 | 1 |  |
| PH03.EA.2040 |  | ER E2.3 Install lighting | 3d | 2025-10-08 | 2025-10-08 | PH03.EA.2020, PH03.EA.2030 | 2025-01-22 | 2025-01-24 | 02 | 1 |  |
| PH03.EA.2050 |  | ER E2.3 Install accessories (shepherds hook, fire ext) | 1d | 2025-10-08 | 2025-10-08 | PH03.EA.2040 FF | 2025-01-24 | 2025-01-24 | 02 | 1 |  |
| PH03.EA.2070 |  | ER E2.3 Clean electrical room | 1d | 2025-10-08 | 2025-10-08 | PH03.EA.2150, PH03.EA.2120, PH03.EA.2040, PH03.EA.1980, PH03.EA.2050 | 2025-02-18 | 2025-02-18 | 02 | 1 |  |
| PH03.EA.2090 |  | ER E2.3 Install Plenum on Louvers | 2d | 2025-10-08 | 2025-10-08 | PH03.M.1000 SS | 2024-10-28 | 2024-10-29 | 02 | 1 | start simutaneously |
| PH03.EA.2100 |  | ER E2.3 Install Vesda Piping System | 5d | 2025-10-08 | 2025-10-08 | PH03.EA.2160, PH03.EA.1960 | 2024-11-20 | 2024-11-26 | 02 | 1 |  |
| PH03.EA.2110 |  | ER E2.3 Install Refrigerantion Lines | 5d | 2025-10-08 | 2025-10-08 | PH03.EA.1960 | 2024-11-12 | 2024-11-18 | 02 | 1 |  |
| PH03.EA.2120 |  | ER E2.3 Install ERV | 2d | 2025-10-08 | 2025-10-08 | PH03.EA.2030, PH03.EA.2110 | 2025-01-22 | 2025-01-23 | 02 | 1 |  |
| PH03.EA.2130 |  | ER E2.3 Install Cable Trays | 5d | 2025-10-08 | 2025-10-08 | PH03.EA.1970 | 2024-11-20 | 2024-11-26 | 02 | 1 |  |
| PH03.EA.2140 |  | ER E2.3 Install Fire Alarm + Vesda Panel | 3d | 2025-10-08 | 2025-10-08 | PH03.EA.2100 | 2024-11-27 | 2024-12-02 | 02 | 1 |  |
| PH03.EA.2150 |  | ER E2.3 Install Control BMS & EPMS | 4d | 2025-10-08 | 2025-10-08 | PH03.EA.2030 FF | 2025-01-21 | 2025-01-24 | 02 | 1 |  |
| PH03.EA.2160 |  | ER E2.3 Install Oneside Drywall By CSH | 1d | 2025-10-08 | 2025-10-08 | ISSU11.20 | 2024-11-19 | 2024-11-19 | 02 | 1 |  |

| ID | WBS | Activity | Duration | Start | Finish | Predecessors | Planned start | Planned finish | user_text | 06 -GC - Building Levels | 05 -GC - Building Phase |
| --- | --- | --- | --- | --- | --- | --- | --- | --- | --- | --- | --- |
|  | 5 | **DAHU Galleries** |  | 2025-10-08 | 2025-10-08 |  |  |  |  |  |  |
|  | 1 | **DAHU Gallery North** |  | 2025-10-08 | 2025-10-08 |  |  |  |  |  |  |
| PH03.DAHU.1000 |  | DAHU North Install Fire Protection & VESDA | 2d | 2025-10-08 | 2025-10-08 | PH03.M.1000 SS | 2024-10-28 | 2024-10-29 | DAHU North and South will | 02 | 1 |
| PH03.DAHU.1010 |  | DAHU North Install IW Piping | 4d | 2025-10-08 | 2025-10-08 | PH03.M.1000 SS | 2024-10-28 | 2024-10-31 | work simutaneously | 02 | 1 |
| PH03.DAHU.1020 |  | DAHU North Install Outside Air Reference Piping | 3d | 2025-10-08 | 2025-10-08 | PH03.DAHU.1010 SS+2d | 2024-11-12 | 2024-11-14 |  | 02 | 1 |
| PH03.DAHU.1030 |  | DAHU North Frame DAHU wall and CSH catwalk | 6d | 2025-10-08 | 2025-10-08 | PH03.M.1000 SS | 2024-10-28 | 2024-11-04 |  | 02 | 1 |
| PH03.DAHU.1040 |  | DAHU North CSH Electrical rough-in | 5d | 2025-10-08 | 2025-10-08 | PH03.DAHU.1030 SS+2d | 2024-10-30 | 2024-11-05 |  | 02 | 1 |
| PH03.DAHU.1050 |  | DAHU North CSH Fire protection/alarm and VESDA rough-in | 3d | 2025-10-08 | 2025-10-08 | PH03.DAHU.1030 SS+2d | 2024-10-30 | 2024-11-01 |  | 02 | 1 |
| PH03.DAHU.1060 |  | DAHU North CSH In wall inspection | 1d | 2025-10-08 | 2025-10-08 | PH03.DAHU.1040, PH03.DAHU.1050 FF, PH03.DAHU.1050 | 2024-11-15 | 2024-11-15 |  | 02 | 1 |
| PH03.DAHU.1070 |  | DAHU North Install CSH drywall | 6d | 2025-10-08 | 2025-10-08 | PH03.DAHU.1060 | 2024-11-18 | 2024-11-25 |  | 02 | 1 |
| PH03.DAHU.1080 |  | DAHU North Finish CSH drywall | 13d | 2025-10-08 | 2025-10-08 | PH03.DAHU.1070 | 2024-11-25 | 2024-12-12 |  | 02 | 1 |
| PH03.DAHU.1090 |  | DAHU North Install DAHUs | 2d | 2025-10-08 | 2025-10-08 | PH03.DAHU.1700, PH03.DAHU.1690, PH03.DAHU.1680, PH03.DAHU.1670, PH03.DAHU.1000, PH03.DAHU.1080, PH03.DAHU.1420, PH03.PR.1010 | 2024-12-23 | 2024-12-24 |  | 02 | 1 |
| PH03.DAHU.1100 |  | DAHU North Install CSH railing | 2d | 2025-10-08 | 2025-10-08 | PH03.DAHU.1420 | 2024-12-23 | 2024-12-24 |  | 02 | 1 |
| PH03.DAHU.1120 |  | DAHU North Pull and terminate VFDs from electrical room | 5d | 2025-10-08 | 2025-10-08 | PH03.DAHU.1090, PH03.PR.1130 | 2024-12-26 | 2025-01-02 |  | 02 | 1 |
| PH03.DAHU.1130 |  | DAHU North Make DAHU Plumbing Connections | 3d | 2025-10-08 | 2025-10-08 | PH03.DAHU.1720, PH03.DAHU.1090 | 2024-12-31 | 2025-01-03 |  | 02 | 1 |
| PH03.DAHU.1140 |  | DAHU North Install Feeder Trays (DAHU, VFD, Communications) | 5d | 2025-10-08 | 2025-10-08 | PH03.DAHU.1420, PH03.DH.1190 SS | 2024-12-23 | 2024-12-30 |  | 02 | 1 |
| PH03.DAHU.1150 |  | DAHU North Pull DAHU Feeders | 2d | 2025-10-08 | 2025-10-08 | PH03.DH.1200 SS, PH03.DAHU.1140 | 2024-12-31 | 2025-01-02 |  | 02 | 1 |
| PH03.DAHU.1160 |  | DAHU North Make DAHU Electrical Connections | 2d | 2025-10-08 | 2025-10-08 | PH03.DAHU.1150 | 2025-01-03 | 2025-01-06 |  | 02 | 1 |
| PH03.DAHU.1170 |  | DAHU North Make DAHU Controls Connections | 3d | 2025-10-08 | 2025-10-08 | PH03.DAHU.1160 | 2025-01-07 | 2025-01-09 |  | 02 | 1 |
| PH03.DAHU.1180 |  | DAHU North Install Temporary Wall | 2d | 2025-10-08 | 2025-10-08 | PH03.DAHU.1060 | 2025-01-10 | 2025-01-13 |  | 02 | 1 |
| PH03.DAHU.1190 |  | DAHU North Install CSH ladders | 2d | 2025-10-08 | 2025-10-08 | PH03.DAHU.1170 | 2025-01-10 | 2025-01-13 |  | 02 | 1 |
| PH03.DAHU.1200 |  | DAHU North Clean DAHU Gallery and CSH | 2d | 2025-10-08 | 2025-10-08 | PH03.DAHU.1730, PH03.DAHU.1180, PH03.DAHU.1190, PH03.DAHU.1100, PH03.DAHU.1160 | 2025-01-23 | 2025-01-24 |  | 02 | 1 |
| PH03.DAHU.1420 |  | DAHU North Paint CSH drywall | 5d | 2025-10-08 | 2025-10-08 | PH03.DAHU.1080 | 2024-12-16 | 2024-12-20 |  | 02 | 1 |
| PH03.DAHU.1650 |  | DAHU North Coredrilling On 2nd Floor | 5d | 2025-10-08 | 2025-10-08 | PH03.M.1000 SS | 2024-10-28 | 2024-11-01 | DAHU North and South will | 02 | 1 |
| PH03.DAHU.1660 |  | DAHU North Install Floor Drains 2nd Floor | 2d | 2025-10-08 | 2025-10-08 | PH03.DAHU.1650 | 2024-11-04 | 2024-11-05 | DAHU North and South will | 02 | 1 |
| PH03.DAHU.1670 |  | DAHU North Concrete Infill 2nd Floor | 2d | 2025-10-08 | 2025-10-08 | PH03.DAHU.1660 | 2024-11-06 | 2024-11-07 | DAHU North and South will | 02 | 1 |
| PH03.DAHU.1680 |  | DAHU North Install OAD Damper | 4d | 2025-10-08 | 2025-10-08 | PH03.DAHU.1010 | 2024-11-04 | 2024-11-07 |  | 02 | 1 |
| PH03.DAHU.1690 |  | DAHU North Install Sprinkler Feed Lines | 4d | 2025-10-08 | 2025-10-08 | PH03.DAHU.1680 | 2024-11-08 | 2024-11-14 |  | 02 | 1 |
| PH03.DAHU.1700 |  | DAHU North Install Low Point Drain | 4d | 2025-10-08 | 2025-10-08 | PH03.DAHU.1690 FF | 2024-11-12 | 2024-11-15 |  | 02 | 1 |
| PH03.DAHU.1720 |  | DAHU North Install IW Drops | 3d | 2025-10-08 | 2025-10-08 | PH03.DAHU.1090 | 2024-12-26 | 2024-12-30 |  | 02 | 1 |
| PH03.DAHU.1730 |  | DAHU North Install VESDA Panels | 2d | 2025-10-08 | 2025-10-08 | PH03.DAHU.1180, PH03.DAHU.1170 | 2025-01-21 | 2025-01-22 |  | 02 | 1 |

| ID | WBS | Activity | Duration | Start | Finish | Predecessors | Planned start | Planned finish | Constraint | user_text | 06 -GC - Building Levels | 05 -GC - Building Phase |
| --- | --- | --- | --- | --- | --- | --- | --- | --- | --- | --- | --- | --- |
|  | 2 | **DAHU Gallery South** |  | 2025-10-08 | 2025-10-08 |  |  |  |  |  |  |  |
| PH03.DAHU.1430 |  | DAHU South Install fire protection and VESDA | 2d | 2025-10-08 | 2025-10-08 | PH03.M.1000 SS | 2024-10-28 | 2024-10-29 |  | DAHU North and South will | 02 | 1 |
| PH03.DAHU.1440 |  | DAHU South Install IW Piping | 4d | 2025-10-08 | 2025-10-08 | PH03.M.1000 SS | 2024-10-28 | 2024-10-31 |  | work simutaneously | 02 | 1 |
| PH03.DAHU.1450 |  | DAHU South Install Outside Air Reference Piping | 3d | 2025-10-08 | 2025-10-08 | PH03.DAHU.1440 FF | 2024-11-12 | 2024-11-14 |  |  | 02 | 1 |
| PH03.DAHU.1460 |  | DAHU South Frame DAHU wall and CSH catwalk | 6d | 2025-10-08 | 2025-10-08 | PH03.M.1000 SS | 2024-10-28 | 2024-11-04 |  |  | 02 | 1 |
| PH03.DAHU.1470 |  | DAHU South CSH Fire protection/alarm and VESDA Rough-in | 3d | 2025-10-08 | 2025-10-08 | PH03.DAHU.1460 | 2024-11-12 | 2024-11-14 |  |  | 02 | 1 |
| PH03.DAHU.1480 |  | DAHU South CSH Electrical rough-in | 3d | 2025-10-08 | 2025-10-08 | PH03.DAHU.1460 SS | 2024-10-28 | 2024-10-30 |  |  | 02 | 1 |
| PH03.DAHU.1490 |  | DAHU South CSH In wall inspection | 1d | 2025-10-08 | 2025-10-08 | PH03.DAHU.1480, PH03.DAHU.1470 FF, PH03.DAHU.1470 | 2024-11-13 | 2024-11-13 |  |  | 02 | 1 |
| PH03.DAHU.1500 |  | DAHU South Install CSH drywall | 6d | 2025-10-08 | 2025-10-08 | PH03.DAHU.1810, PH03.DAHU.1490 | 2024-11-14 | 2024-11-21 |  |  | 02 | 1 |
| PH03.DAHU.1510 |  | DAHU South Finish CSH drywall | 10d | 2025-10-08 | 2025-10-08 | PH03.DAHU.1500 SS+3d | 2024-11-25 | 2024-12-09 |  |  | 02 | 1 |
| PH03.DAHU.1520 |  | DAHU South Paint CSH drywall | 4d | 2025-10-08 | 2025-10-08 | PH03.DAHU.1510 | 2024-12-06 | 2024-12-11 |  |  | 02 | 1 |
| PH03.DAHU.1530 |  | DAHU South Install DAHUs | 2d | 2025-10-08 | 2025-10-08 | PH03.DAHU.1520, PH03.DAHU.1430, PH03.PR.1010 | 2024-12-16 | 2024-12-17 |  |  | 02 | 1 |
| PH03.DAHU.1540 |  | DAHU South Install CSH railing | 2d | 2025-10-08 | 2025-10-08 | PH03.DAHU.1530 | 2024-12-18 | 2024-12-19 |  |  | 02 | 1 |
| PH03.DAHU.1550 |  | DAHU South Install VFDs | 3d | 2025-10-08 | 2025-10-08 | PH03.DAHU.1530, PH03.PR.1130 | 2024-12-20 | 2024-12-24 | finish on or after 2024-12-24 |  | 02 | 1 |
| PH03.DAHU.1560 |  | DAHU South Make DAHU plumbing connections | 5d | 2025-10-08 | 2025-10-08 | PH03.DAHU.1760 FF, PH03.DAHU.1530 | 2024-12-20 | 2024-12-27 |  |  | 02 | 1 |
| PH03.DAHU.1570 |  | DAHU South Pull and terminate VFDs from electrical room | 5d | 2025-10-08 | 2025-10-08 | PH03.DAHU.1550 | 2024-12-26 | 2025-01-02 |  |  | 02 | 1 |
| PH03.DAHU.1580 |  | DAHU South Install feeder trays (DAHU, VFD, communications) | 5d | 2025-10-08 | 2025-10-08 | PH03.DAHU.1530 | 2024-12-18 | 2024-12-24 |  |  | 02 | 1 |
| PH03.DAHU.1590 |  | DAHU South Pull DAHU Feeders | 2d | 2025-10-08 | 2025-10-08 | PH03.DH.1200 SS, PH03.DAHU.1580 | 2024-12-26 | 2024-12-27 |  |  | 02 | 1 |
| PH03.DAHU.1600 |  | DAHU South Make DAHU electrical connections | 2d | 2025-10-08 | 2025-10-08 | PH03.DAHU.1590 | 2024-12-30 | 2024-12-31 |  |  | 02 | 1 |
| PH03.DAHU.1610 |  | DAHU South Make DAHU controls connections | 3d | 2025-10-08 | 2025-10-08 | PH03.DAHU.1600 | 2025-01-02 | 2025-01-06 |  |  | 02 | 1 |
| PH03.DAHU.1620 |  | DAHU South Install temporary wall | 2d | 2025-10-08 | 2025-10-08 | PH03.DAHU.1610 | 2025-01-07 | 2025-01-08 |  |  | 02 | 1 |
| PH03.DAHU.1630 |  | DAHU South Install CSH ladders | 2d | 2025-10-08 | 2025-10-08 | PH03.DAHU.1610 | 2025-01-07 | 2025-01-08 |  |  | 02 | 1 |
| PH03.DAHU.1640 |  | DAHU South Clean DAHU gallery and CSH | 2d | 2025-10-08 | 2025-10-08 | PH03.DAHU.1800, PH03.DAHU.1620, PH03.DAHU.1630, PH03.DAHU.1540, PH03.DAHU.1600 | 2025-01-23 | 2025-01-24 |  |  | 02 | 1 |
| PH03.DAHU.1740 |  | DAHU South Coredrilling On 2nd Floor | 5d | 2025-10-08 | 2025-10-08 | PH03.M.1000 SS | 2024-10-28 | 2024-11-01 |  | DAHU North and South will | 02 | 1 |
| PH03.DAHU.1750 |  | DAHU South Install Floor Drains 2nd Floor | 2d | 2025-10-08 | 2025-10-08 | PH03.DAHU.1740 | 2024-11-04 | 2024-11-05 |  | DAHU North and South will | 02 | 1 |
| PH03.DAHU.1760 |  | DAHU South Install IW Drops | 3d | 2025-10-08 | 2025-10-08 | PH03.DAHU.1530, PH03.DAHU.1440 | 2024-12-23 | 2024-12-26 |  | work simutaneously | 02 | 1 |
| PH03.DAHU.1770 |  | DAHU South Install Sprinkler Lines | 4d | 2025-10-08 | 2025-10-08 | PH03.DAHU.1530 | 2024-12-18 | 2024-12-23 |  |  | 02 | 1 |
| PH03.DAHU.1800 |  | DAHU South Install VESDA Panels | 2d | 2025-10-08 | 2025-10-08 | PH03.DAHU.1620 | 2025-01-21 | 2025-01-22 |  |  | 02 | 1 |
| PH03.DAHU.1810 |  | DAHU South Concrete Infill 2nd Floor | 2d | 2025-10-08 | 2025-10-08 | PH03.DAHU.1750 | 2024-11-04 | 2024-11-05 |  | DAHU North and South will | 02 | 1 |

| ID | WBS | Activity | Duration | Start | Finish | Predecessors | Planned start | Planned finish | 06 -GC - Building Levels | 05 -GC - Building Phase | user_text |
| --- | --- | --- | --- | --- | --- | --- | --- | --- | --- | --- | --- |
|  | 6 | **Data Hall Gallery** |  | 2025-10-08 | 2025-10-08 |  |  |  |  |  |  |
| PH03.DH.1000 |  | Data Hall Install upper temp wall | 2d | 2025-10-08 | 2025-10-08 | PH03.DH.1410 | 2024-12-02 | 2024-12-03 | 02 | 1 |  |
| PH03.DH.1010 |  | Data Hall Rough-in electrical for exhaust fans | 5d | 2025-10-08 | 2025-10-08 | PH02.DH.1010 SS | 2024-10-28 | 2024-11-01 | 02 | 1 |  |
| PH03.DH.1020 |  | Data Hall Install exhaust fan drip pans | 5d | 2025-10-08 | 2025-10-08 | PH03.DH.1010 SS+2d | 2024-09-30 | 2024-10-04 | 02 | 1 |  |
| PH03.DH.1030 |  | Data Hall Install Fire Protection (high) | 5d | 2025-10-08 | 2025-10-08 | PH03.DH.1020 SS+3d | 2024-10-03 | 2024-10-09 | 02 | 1 |  |
| PH03.DH.1040 |  | Data Hall Pipe exhaust fans drip pans | 4d | 2025-10-08 | 2025-10-08 | PH03.DH.1020 | 2024-10-28 | 2024-10-31 | 02 | 1 |  |
| PH03.DH.1050 |  | Data Hall Layout and frame B/E/3.5 line walls | 5d | 2025-10-08 | 2025-10-08 | PH03.M.1000 SS | 2024-10-28 | 2024-11-01 | 02 | 1 |  |
| PH03.DH.1060 |  | Data Hall In wall rough-in | 5d | 2025-10-08 | 2025-10-08 | PH03.DH.1050 SS | 2024-10-28 | 2024-11-01 | 02 | 1 |  |
| PH03.DH.1070 |  | Data Hall In wall inspection | 1d | 2025-10-08 | 2025-10-08 | PH03.DH.1060 | 2024-11-12 | 2024-11-12 | 02 | 1 |  |
| PH03.DH.1080 |  | Data Hall Install Drywall on B/E/3.5 line walls | 5d | 2025-10-08 | 2025-10-08 | PH03.DH.1070 | 2024-11-05 | 2024-11-12 | 02 | 1 |  |
| PH03.DH.1090 |  | Data Hall Finish B/E/3.5 line walls | 7d | 2025-10-08 | 2025-10-08 | PH03.DH.1460, PH03.DH.1080 | 2024-11-12 | 2024-11-20 | 02 | 1 |  |
| PH03.DH.1100 |  | Data Hall Frame exhaust plenum | 10d | 2025-10-08 | 2025-10-08 | PH03.DH.1050 SS | 2024-10-28 | 2024-11-08 | 02 | 1 |  |
| PH03.DH.1110 |  | Data Hall Rough-in exhaust plenum | 2d | 2025-10-08 | 2025-10-08 | PH03.DH.1100 | 2024-11-12 | 2024-11-13 | 02 | 1 |  |
| PH03.DH.1120 |  | Data Hall Install Drywall on Exterior Exhaust Plenum | 7d | 2025-10-08 | 2025-10-08 | PH03.DH.1110 | 2024-11-12 | 2024-11-20 | 02 | 1 |  |
| PH03.DH.1130 |  | Data Hall Finish exterior exhaust plenum | 10d | 2025-10-08 | 2025-10-08 | PH03.DH.1120 | 2024-11-21 | 2024-12-05 | 02 | 1 |  |
| PH03.DH.1140 |  | Data Hall Install Lower temp wall and doors | 3d | 2025-10-08 | 2025-10-08 | PH03.DH.1290, PH03.DH.1000, PH03.DH.1120, PH03.DH.1130, PH03.DH.1230 | 2024-12-23 | 2024-12-26 | 02 | 1 |  |
| PH03.DH.1150 |  | Data Hall Install return air dampers | 3d | 2025-10-08 | 2025-10-08 | PH03.DH.1380 SS, PH03.DH.1090 | 2024-11-21 | 2024-11-25 | 02 | 1 |  |
| PH03.DH.1160 |  | Data Hall Install supply air dampers | 3d | 2025-10-08 | 2025-10-08 | PH03.DH.1150 | 2024-11-25 | 2024-11-27 | 02 | 1 |  |
| PH03.DH.1170 |  | Data Hall Install fire protection (low) | 5d | 2025-10-08 | 2025-10-08 | PH03.DH.1180, PH03.DH.1150 | 2024-11-25 | 2024-12-02 | 02 | 1 |  |
| PH03.DH.1180 |  | Data Hall Install Racking | 8d | 2025-10-08 | 2025-10-08 | PH03.DH.1040, PH03.DH.1450, PH03.DH.1440, PH03.DH.1080, PH03.DH.1030, PH03.PR.1000 | 2024-11-12 | 2024-11-21 | 02 | 1 |  |
| PH03.DH.1190 |  | Data Hall Install DAHU feeder tray | 10d | 2025-10-08 | 2025-10-08 | PH03.DH.1180 FF | 2024-11-22 | 2024-12-06 | 02 | 1 |  |
| PH03.DH.1200 |  | Data Hall Pull DAHU feeders | 2d | 2025-10-08 | 2025-10-08 | PH03.DH.1190 | 2024-12-09 | 2024-12-10 | 02 | 1 |  |
| PH03.DH.1210 |  | Data Hall Install vertical communication risers | 3d | 2025-10-08 | 2025-10-08 | PH03.DH.1200 | 2024-12-11 | 2024-12-13 | 02 | 1 |  |
| PH03.DH.1220 |  | Data Hall Install guardrails at risers | 2d | 2025-10-08 | 2025-10-08 | PH03.DH.1210 | 2024-12-23 | 2024-12-24 | 02 | 1 |  |
| PH03.DH.1230 |  | Data Hall Install ACT grid | 4d | 2025-10-08 | 2025-10-08 | PH03.DH.1500, PH03.DH.1270 | 2024-11-22 | 2024-11-27 | 02 | 1 |  |
| PH03.DH.1240 |  | Data Hall Electrical ceiling rough-in | 5d | 2025-10-08 | 2025-10-08 | PH03.DH.1470, PH03.DH.1170, PH03.DH.1230 | 2024-12-02 | 2024-12-06 | 02 | 1 |  |
| PH03.DH.1250 |  | Data Hall Install Fire protection Sprinkler Heads | 4d | 2025-10-08 | 2025-10-08 | PH03.DH.1230 | 2024-11-29 | 2024-12-04 | 02 | 1 |  |
| PH03.DH.1260 |  | Data Hall Fire alarm and VESDA rough-in | 4d | 2025-10-08 | 2025-10-08 | PH03.DH.1230 | 2024-12-13 | 2024-12-18 | 02 | 1 |  |
| PH03.DH.1270 |  | Data Hall Install upper twin wall | 5d | 2025-10-08 | 2025-10-08 | PH03.DH.1180 SS+3d | 2024-11-15 | 2024-11-21 | 02 | 1 |  |
| PH03.DH.1280 |  | Data Hall Install Ceiling Tiles | 4d | 2025-10-08 | 2025-10-08 | PH03.DH.1510, PH03.DH.1230, PH03.DH.1250, PH03.DH.1240, PH03.DH.1270 | 2024-12-16 | 2024-12-19 | 02 | 1 |  |
| PH03.DH.1290 |  | Data Hall Install Basket Tray | 10d | 2025-10-08 | 2025-10-08 | PH03.DH.1240 | 2024-12-11 | 2024-12-24 | 02 | 1 | Changed from 15 to 10 |
| PH03.DH.1300 |  | Data Hall Pull branch circuit and PDC feeders | 10d | 2025-10-08 | 2025-10-08 | PH03.DH.1290 FF+4d | 2024-12-16 | 2024-12-30 | 02 | 1 | Changed from 15 to 10 |
| PH03.DH.1310 |  | Data Hall Install PDC cabinets | 3d | 2025-10-08 | 2025-10-08 | PH03.DH.1230, PH03.PR.1100 | 2025-01-06 | 2025-01-08 | 02 | 1 |  |
| PH03.DH.1320 |  | Data Hall Terminate PDC cabinets | 5d | 2025-10-08 | 2025-10-08 | PH03.DH.1310, PH03.DH.1300 FF+3d | 2025-01-09 | 2025-01-15 | 02 | 1 |  |
| PH03.DH.1330 |  | Data Hall Install PDC Whips and labels | 5d | 2025-10-08 | 2025-10-08 | PH03.DH.1290, PH03.PR.1100 FF | 2024-12-18 | 2024-12-24 | 02 | 1 | Data hall is driving out the |
| PH03.DH.1340 |  | Data Hall Perform PDC Whip Checks | 2d | 2025-10-08 | 2025-10-08 | PH03.DH.1330, PH03.DH.1320 FF+1d | 2025-01-22 | 2025-01-23 | 02 | 1 | NEA data in the milestones |
| PH03.DH.1350 |  | Data Hall Install lower twin wall and doors | 5d | 2025-10-08 | 2025-10-08 | PH03.DH.1360 SS, PH03.DH.1180, PH03.DH.1390 | 2025-01-24 | 2025-01-30 | 02 | 1 | Changed from 7 to 5 |
| PH03.DH.1360 |  | Data Hall Install Perfect Positioning | 2d | 2025-10-08 | 2025-10-08 | PH03.DH.1320, PH03.DH.1340 | 2025-01-24 | 2025-01-27 | 02 | 1 | Must complete by 10/23/23 |
| PH03.DH.1370 |  | Data Hall Clean data hall | 2d | 2025-10-08 | 2025-10-08 | PH03.DH.1490, PH03.DH.1480, PH03.DH.1280, PH03.DH.1410, PH03.DH.1140, PH03.DH.1220, PH03.DH.1360, PH03.DH.1350 | 2025-01-31 | 2025-02-03 | 02 | 1 |  |
| PH03.DH.1380 |  | Data Hall Paint B/E/3.5 line walls | 5d | 2025-10-08 | 2025-10-08 | PH03.DH.1090 | 2024-11-21 | 2024-11-27 | 02 | 1 |  |
| PH03.DH.1390 |  | Data Hall Install Drywall on Interior Exhaust Plenum | 12d | 2025-10-08 | 2025-10-08 | PH03.DH.1110 | 2024-11-12 | 2024-11-27 | 02 | 1 |  |
| PH03.DH.1400 |  | Data Hall Finish interior exhaust plenum | 15d | 2025-10-08 | 2025-10-08 | PH03.DH.1390 | 2024-11-25 | 2024-12-16 | 02 | 1 | Changed from 20 to 15 |
| PH03.DH.1410 |  | Data Hall Paint exterior exhaust plenum | 5d | 2025-10-08 | 2025-10-08 | PH03.DH.1130 | 2024-11-25 | 2024-12-02 | 02 | 1 |  |
| PH03.DH.1420 |  | Data Hall Paint Interior Exhaust plenum | 5d | 2025-10-08 | 2025-10-08 | PH03.DH.1400 | 2024-12-02 | 2024-12-06 | 02 | 1 |  |
| PH03.DH.1430 |  | Data Hall Install High VESDA Pipes | 4d | 2025-10-08 | 2025-10-08 | PH03.DH.1030 | 2024-10-29 | 2024-11-01 | 02 | 1 |  |
| PH03.DH.1440 |  | Data Hall Install Fire Protection (Low) | 5d | 2025-10-08 | 2025-10-08 | PH03.DH.1030 SS+2d | 2024-10-28 | 2024-11-01 | 02 | 1 |  |
| PH03.DH.1450 |  | Data Hall Hang Wire for Ceiling Grid | 4d | 2025-10-08 | 2025-10-08 | PH03.DH.1440 SS+2d | 2024-10-30 | 2024-11-04 | 02 | 1 |  |
| PH03.DH.1460 |  | Data Hall Install Dampers/Screens | 3d | 2025-10-08 | 2025-10-08 | PH03.DH.1080 SS | 2024-11-05 | 2024-11-07 | 02 | 1 |  |
| PH03.DH.1470 |  | Data Hall Install BMS Panel | 3d | 2025-10-08 | 2025-10-08 | PH03.DH.1090 | 2024-11-21 | 2024-11-25 | 02 | 1 |  |
| PH03.DH.1480 |  | Data Hall Install VESDA Panels | 2d | 2025-10-08 | 2025-10-08 | PH03.DH.1420, PH03.DH.1260, PH03.DH.1280, PH03.DH.1500 | 2024-12-20 | 2024-12-23 | 02 | 1 | NEA data in the milestones |
| PH03.DH.1490 |  | Data Hall Pull & Terminate VESDA Wiring | 2d | 2025-10-08 | 2025-10-08 | PH03.DH.1480 | 2024-12-24 | 2024-12-26 | 02 | 1 | NEA data in the milestones |
| PH03.DH.1500 |  | Data Hall Install Lower VESDA Pipes | 4d | 2025-10-08 | 2025-10-08 | PH03.DH.1430 | 2024-11-04 | 2024-11-07 | 02 | 1 |  |
| PH03.DH.1510 |  | Data Hall Install Back Draft Damper | 4d | 2025-10-08 | 2025-10-08 | PH03.DH.1230 | 2024-11-29 | 2024-12-04 | 02 | 1 |  |
| PH03.DH.1520 |  | Data Hall Install BMS/EPMS | 5d | 2025-10-08 | 2025-10-08 | PH03.DH.1210 | 2024-12-16 | 2024-12-20 | 02 | 1 |  |

| ID | WBS | Activity | Duration | Start | Finish | Predecessors | Planned start | Planned finish | Calendar | user_text | 06 -GC - Building Levels | 05 -GC - Building Phase | SCHDULE UPDATE |
| --- | --- | --- | --- | --- | --- | --- | --- | --- | --- | --- | --- | --- | --- |
|  | 7 | **Startup and Commissioning** |  | 2025-10-08 | 2025-10-08 |  |  |  |  |  |  |  |  |
| PH03.SU.1000 |  | OWNER FOD Walks | 3d | 2025-10-08 | 2025-10-08 | PH03.GEN.1120, PH03.XFMR.1100, PH03.GEN.1110, PH03.DAHU.1570, PH03.DAHU.1640, PH03.XFMR.1110, PH03.DAHU.1120, ISSU15.10, ISSU14.20, ISSU14.40 | 2025-02-05 | 2025-02-07 |  | Must begin by 10/09/23 | 02 | 1 |  |
| PH03.SU.1010 |  | Energization | 7d | 2025-10-08 | 2025-10-08 | PH03.SU.1000, ISSU22.20 | 2025-02-18 | 2025-02-26 |  | Must complete by 10/16/23 | 02 | 1 |  |
| PH03.SU.1030 |  | L4-L5 Commissioning | 10d | 2025-10-08 | 2025-10-08 | PH03.SU.1010, PH03.SU.1050, PH03.DH.1370, PH03.M.1070 | 2025-04-25 | 2025-05-08 |  |  | 02 | 1 |  |
| PH03.SU.1040 |  | Comissioning Complete | 1d | 2025-10-08 | 2025-10-08 | PH03.SU.1030 | 2025-05-15 | 2025-05-15 |  |  | 02 | 1 |  |
| PH03.SU.1050 |  | Startup activities for H2C | 4d | 2025-10-08 | 2025-10-08 | PH03.SU.1010, PH03.M.1060 | 2025-03-24 | 2025-03-27 |  |  | 02 | 1 |  |
|  | INSPECTIONS | **Final Inspections** |  | 2025-10-08 | 2025-10-08 |  |  |  |  |  |  |  |  |
| PH03.1000 |  | Fire Protection Final Inspection | 2d | 2025-10-08 | 2025-10-08 | PH03.DAHU.1770, PH03.EA.136, PH03.DAHU.1050, PH03.DAHU.1430, PH03.DH.1250, PH03.SU.1010, PH03.EA.2070, PH03.DAHU.1200, PH03.DAHU.1640, PH03.DH.1370 | 2025-03-03 | 2025-03-04 |  | Must complete by 10/16/23 | 02 | 1 |  |
| PH03.1010 |  | Electrical Final Inspection | 2d | 2025-10-08 | 2025-10-08 | PH03.SU.1010, PH03.EA.2070, PH03.DAHU.1200, PH03.DAHU.1640, PH03.DH.1370 | 2025-03-03 | 2025-03-04 |  | Must complete by 10/16/23 | 02 | 1 |  |
| PH03.1020 |  | Fire Alarm Final Inspection | 2d | 2025-10-08 | 2025-10-08 | PH03.EA.2140, PH03.SU.1010, PH03.EA.2070, PH03.DAHU.1200, PH03.DAHU.1640, PH03.DH.1370 | 2025-03-03 | 2025-03-04 |  | Must complete by 10/16/23 | 02 | 1 |  |
| PH03.1030 |  | Mechanical Final Inspection | 2d | 2025-10-08 | 2025-10-08 | PH03.SU.1010, PH03.EA.2070, PH03.DAHU.1200, PH03.DAHU.1640, PH03.DH.1370 | 2025-03-03 | 2025-03-04 |  | Must complete by 10/16/23 | 02 | 1 |  |
| PH03.1040 |  | Plumbing Final Inspection | 2d | 2025-10-08 | 2025-10-08 | PH03.SU.1010, PH03.EA.2070, PH03.DAHU.1200, PH03.DAHU.1640, PH03.DH.1370 | 2025-03-03 | 2025-03-04 |  | Must complete by 10/16/23 | 02 | 1 |  |
| PH03.1050 |  | Special Inspections Sign-off | 2d | 2025-10-08 | 2025-10-08 | PH03.M.1070 | 2025-04-29 | 2025-04-30 |  | Must complete by 10/16/23 | 02 | 1 |  |
|  | PH4 | **Phase 4 Construction** |  | 2025-10-08 | 2025-10-08 |  |  |  |  |  |  |  |  |
|  | 2 | **Site** |  | 2025-10-08 | 2025-10-08 |  |  |  |  |  |  |  |  |
|  | 2 | **Generator Yard** |  | 2025-10-08 | 2025-10-08 |  |  |  |  |  |  |  |  |
|  | 2 | **Generators-Phase 4** |  | 2025-10-08 | 2025-10-08 |  |  |  |  |  |  |  |  |
| PH04.GEN.1100 |  | Gen Yard Install generators | 2d | 2025-10-08 | 2025-10-08 | PH2-10.GEN.1210, PH04.PR.1050 | 2024-12-02 | 2024-12-03 |  |  | 02 | 1 | ELIASE |
| PH04.GEN.1110 |  | Gen Yard Anchor generators | 2d | 2025-10-08 | 2025-10-08 | PH04.GEN.1100 | 2024-12-26 | 2024-12-27 |  |  | 02 | 1 | ELIASE |
| PH04.GEN.1120 |  | Gen Yard Install cable bus from generator to electrical room | 8d | 2025-10-08 | 2025-10-08 | PH04.XFMR.1100 SS, PH04.GEN.1110, PH04.PR.1160 | 2025-01-27 | 2025-02-05 |  |  | 02 | 1 | ELIASE |
| PH04.GEN.1130 |  | Gen Yard Install generators Exhaust Duct | 6d | 2025-10-08 | 2025-10-08 | PH04.GEN.1100 | 2025-01-21 | 2025-01-28 |  |  | 02 | 1 | ELIASE |
|  | 4 | **MV Transformers-Phase 4** |  | 2025-10-08 | 2025-10-08 |  |  |  |  |  |  |  |  |
| PH04.XFMR.1100 |  | XFMR Install cable bus to electrical room | 8d | 2025-10-08 | 2025-10-08 | PH04.PR.1160, PH04.XFMR.1120, PH03.XFMR.1100, PH03.XFMR.1100 FF | 2025-01-25 | 2025-02-03 | Calendar 06 - 6 Day Work Week w/ Mass. Holidays |  | 02 | 1 | ELIASE |
| PH04.XFMR.1110 |  | XFMR Pull to MV SWGR | 5d | 2025-10-08 | 2025-10-08 | PH04.PR.1040 | 2024-12-23 | 2024-12-30 |  |  | 02 | 1 | ELIASE |
| PH04.XFMR.1120 |  | XFMR Terminate to MV SWGR | 5d | 2025-10-08 | 2025-10-08 | PH04.XFMR.1110 | 2024-12-31 | 2025-01-07 |  |  | 02 | 1 | ELIASE |

| ID | WBS | Activity | Duration | Start | Finish | Predecessors | Planned start | Planned finish | 06 -GC - Building Levels | 05 -GC - Building Phase | user_text |
| --- | --- | --- | --- | --- | --- | --- | --- | --- | --- | --- | --- |
|  | 3 | **Electrical Room E2.4** |  | 2025-10-08 | 2025-10-08 |  |  |  |  |  |  |
| PH04.EA.136 |  | ER E2.4 Install sprinkler heads | 5d | 2025-10-08 | 2025-10-08 | PH04.EA.1860 | 2024-12-17 | 2024-12-23 | 02 | 1 |  |
| PH04.EA.1860 |  | ER E2.4 Install fire protection | 1d | 2025-10-08 | 2025-10-08 | PH04.EA.1960 | 2024-12-16 | 2024-12-16 | 02 | 1 | All electrical rooms will |
| PH04.EA.1870 |  | ER E2.4 Layout and frame walls | 2d | 2025-10-08 | 2025-10-08 | PH04.M.1000 SS | 2024-11-18 | 2024-11-19 | 02 | 1 | start simutaneously |
| PH04.EA.1880 |  | ER E2.4 Install OAD ductwork Transitions | 6d | 2025-10-08 | 2025-10-08 | PH04.EA.2090, PH04.M.1000 SS | 2024-11-18 | 2024-11-25 | 02 | 1 |  |
| PH04.EA.1890 |  | ER E2.4 Electrical rough-in | 3d | 2025-10-08 | 2025-10-08 | PH04.EA.1870, PH04.EA.1880 | 2024-11-26 | 2024-11-29 | 02 | 1 |  |
| PH04.EA.1900 |  | ER E2.4 Mechanical rough-in | 3d | 2025-10-08 | 2025-10-08 | PH04.EA.1870, PH04.EA.1880 | 2024-11-26 | 2024-11-29 | 02 | 1 |  |
| PH04.EA.1910 |  | ER E2.4 Fire alarm rough-in | 3d | 2025-10-08 | 2025-10-08 | PH04.EA.1870, PH04.EA.1880 | 2024-11-26 | 2024-11-29 | 02 | 1 |  |
| PH04.EA.1920 |  | ER E2.4 Plumbing rough-in | 3d | 2025-10-08 | 2025-10-08 | PH04.EA.1880, PH04.EA.1870 | 2024-11-26 | 2024-11-29 | 02 | 1 |  |
| PH04.EA.1930 |  | ER E2.4 In wall inspection | 1d | 2025-10-08 | 2025-10-08 | PH04.EA.1910, PH04.EA.1900, PH04.EA.1890, PH04.EA.1920 | 2024-12-02 | 2024-12-02 | 02 | 1 |  |
| PH04.EA.1940 |  | ER E2.4 Install drywall | 3d | 2025-10-08 | 2025-10-08 | PH04.EA.1930 | 2024-12-02 | 2024-12-04 | 02 | 1 |  |
| PH04.EA.1950 |  | ER E2.4 Finish drywall | 5d | 2025-10-08 | 2025-10-08 | PH04.EA.1940 | 2024-12-05 | 2024-12-11 | 02 | 1 |  |
| PH04.EA.1960 |  | ER E2.4 Paint drywall | 2d | 2025-10-08 | 2025-10-08 | PH04.EA.1950 | 2024-12-12 | 2024-12-13 | 02 | 1 |  |
| PH04.EA.1970 |  | ER E2.4 Install OAD dampers + Ductwork | 3d | 2025-10-08 | 2025-10-08 | PH04.EA.1960, PH04.EA.1950 | 2024-12-16 | 2024-12-18 | 02 | 1 |  |
| PH04.EA.1980 |  | ER E2.4 Install split units | 3d | 2025-10-08 | 2025-10-08 | PH04.EA.1970 | 2024-12-19 | 2024-12-23 | 02 | 1 |  |
| PH04.EA.1990 |  | ER E2.4 Install Busway and OH electrical supports | 5d | 2025-10-08 | 2025-10-08 | PH04.EA.1960 SS, PH04.EA.1950, PH04.PR.1060 | 2024-12-13 | 2024-12-19 | 02 | 1 |  |
| PH04.EA.2000 |  | ER E2.4 Install Electrical SWGR | 2d | 2025-10-08 | 2025-10-08 | PH04.EA.2130, PH04.EA.1990, PH04.PR.1070 | 2024-12-31 | 2025-01-02 | 02 | 1 |  |
| PH04.EA.2010 |  | ER E2.4 Install Feeder tray | 5d | 2025-10-08 | 2025-10-08 | PH04.EA.1990, PH04.EA.2000 | 2025-01-03 | 2025-01-09 | 02 | 1 |  |
| PH04.EA.2020 |  | ER E2.4 Install electrical panels and disconnects | 5d | 2025-10-08 | 2025-10-08 | PH04.EA.2010, PH04.PR.1170, PH04.PR.1190 | 2025-01-10 | 2025-01-16 | 02 | 1 |  |
| PH04.EA.2030 |  | ER E2.4 Pull and terminate feeders | 10d | 2025-10-08 | 2025-10-08 | PH04.EA.2010 SS+2d, PH04.EA.2010 FF | 2025-01-07 | 2025-01-21 | 02 | 1 |  |
| PH04.EA.2040 |  | ER E2.4 Install lighting | 3d | 2025-10-08 | 2025-10-08 | PH04.EA.2020, PH04.EA.2030 | 2025-01-23 | 2025-01-27 | 02 | 1 |  |
| PH04.EA.2050 |  | ER E2.4 Install accessories (shepherds hook, fire ext) | 1d | 2025-10-08 | 2025-10-08 | PH04.EA.2040 FF, PH04.EA.2040 | 2025-02-03 | 2025-02-03 | 02 | 1 |  |
| PH04.EA.2070 |  | ER E2.4 Clean electrical room | 1d | 2025-10-08 | 2025-10-08 | PH04.EA.2150, PH04.EA.2120, PH04.EA.2040, PH04.EA.1980, PH04.EA.2050 | 2025-03-03 | 2025-03-03 | 02 | 1 |  |
| PH04.EA.2090 |  | ER E2.4 Install Plenum on Louvers | 2d | 2025-10-08 | 2025-10-08 | PH04.M.1000 SS | 2024-11-18 | 2024-11-19 | 02 | 1 | start simutaneously |
| PH04.EA.2100 |  | ER E2.4 Install Vesda Piping System | 5d | 2025-10-08 | 2025-10-08 | PH04.EA.1960 | 2024-12-16 | 2024-12-20 | 02 | 1 |  |
| PH04.EA.2110 |  | ER E2.4 Install Refrigerantion Lines | 5d | 2025-10-08 | 2025-10-08 | PH04.EA.1960 | 2024-12-16 | 2024-12-20 | 02 | 1 |  |
| PH04.EA.2120 |  | ER E2.4 Install ERV | 2d | 2025-10-08 | 2025-10-08 | PH04.EA.2030, PH04.EA.2110 | 2025-01-22 | 2025-01-23 | 02 | 1 |  |
| PH04.EA.2130 |  | ER E2.4 Install Cable Trays | 5d | 2025-10-08 | 2025-10-08 | PH04.EA.1980 SS+2d, PH04.EA.1980 FF | 2024-12-23 | 2024-12-30 | 02 | 1 |  |
| PH04.EA.2140 |  | ER E2.4 Install Fire Alarm + Vesda Panel | 3d | 2025-10-08 | 2025-10-08 | PH04.EA.2100 | 2024-12-23 | 2024-12-26 | 02 | 1 |  |
| PH04.EA.2150 |  | ER E2.4 Install Control BMS & EPMS | 4d | 2025-10-08 | 2025-10-08 | PH04.EA.2030 | 2025-01-22 | 2025-01-27 | 02 | 1 |  |

| ID | WBS | Activity | Duration | Start | Finish | Predecessors | Planned start | Planned finish | user_text | 06 -GC - Building Levels | 05 -GC - Building Phase |
| --- | --- | --- | --- | --- | --- | --- | --- | --- | --- | --- | --- |
|  | 5 | **DAHU Galleries** |  | 2025-10-08 | 2025-10-08 |  |  |  |  |  |  |
|  | 1 | **DAHU Gallery North** |  | 2025-10-08 | 2025-10-08 |  |  |  |  |  |  |
| PH04.DAHU.1000 |  | DAHU North Install Fire Protection & VESDA | 2d | 2025-10-08 | 2025-10-08 | PH04.M.1000 SS | 2024-11-18 | 2024-11-19 | DAHU North and South will | 02 | 1 |
| PH04.DAHU.1010 |  | DAHU North Install IW Piping | 4d | 2025-10-08 | 2025-10-08 | PH04.M.1000 SS | 2024-11-18 | 2024-11-21 | work simutaneously | 02 | 1 |
| PH04.DAHU.1020 |  | DAHU North Install Outside Air Reference Piping | 3d | 2025-10-08 | 2025-10-08 | PH04.DAHU.1010 SS+2d | 2024-11-20 | 2024-11-22 |  | 02 | 1 |
| PH04.DAHU.1030 |  | DAHU North Frame DAHU wall and CSH catwalk | 6d | 2025-10-08 | 2025-10-08 | PH04.M.1000 SS | 2024-11-18 | 2024-11-25 |  | 02 | 1 |
| PH04.DAHU.1040 |  | DAHU North CSH Electrical rough-in | 5d | 2025-10-08 | 2025-10-08 | PH04.DAHU.1030 SS+2d | 2024-11-20 | 2024-11-26 |  | 02 | 1 |
| PH04.DAHU.1050 |  | DAHU North CSH Fire protection/alarm and VESDA rough-in | 3d | 2025-10-08 | 2025-10-08 | PH04.DAHU.1030 SS+2d | 2024-11-20 | 2024-11-22 |  | 02 | 1 |
| PH04.DAHU.1060 |  | DAHU North CSH In wall inspection | 1d | 2025-10-08 | 2025-10-08 | PH04.DAHU.1040, PH04.DAHU.1050 FF, PH04.DAHU.1050 | 2024-11-27 | 2024-11-27 |  | 02 | 1 |
| PH04.DAHU.1070 |  | DAHU North Install CSH drywall | 6d | 2025-10-08 | 2025-10-08 | PH04.DAHU.1060 | 2024-11-29 | 2024-12-06 |  | 02 | 1 |
| PH04.DAHU.1080 |  | DAHU North Finish CSH drywall | 13d | 2025-10-08 | 2025-10-08 | PH04.DAHU.1070 | 2024-12-09 | 2024-12-26 |  | 02 | 1 |
| PH04.DAHU.1090 |  | DAHU North Install DAHUs | 2d | 2025-10-08 | 2025-10-08 | PH04.DAHU.1700, PH04.DAHU.1690, PH04.DAHU.1680, PH04.DAHU.1670, PH04.DAHU.1000, PH04.DAHU.1080, PH04.DAHU.1420, PH04.PR.1010 | 2025-01-06 | 2025-01-07 |  | 02 | 1 |
| PH04.DAHU.1100 |  | DAHU North Install CSH railing | 2d | 2025-10-08 | 2025-10-08 | PH04.DAHU.1420 | 2025-01-06 | 2025-01-07 |  | 02 | 1 |
| PH04.DAHU.1120 |  | DAHU North Pull and terminate VFDs from electrical room | 5d | 2025-10-08 | 2025-10-08 | PH04.DAHU.1090, PH04.PR.1130 | 2025-01-21 | 2025-01-27 |  | 02 | 1 |
| PH04.DAHU.1130 |  | DAHU North Make DAHU Plumbing Connections | 3d | 2025-10-08 | 2025-10-08 | PH04.DAHU.1720, PH04.DAHU.1090 | 2025-01-21 | 2025-01-23 |  | 02 | 1 |
| PH04.DAHU.1140 |  | DAHU North Install Feeder Trays (DAHU, VFD, Communications) | 5d | 2025-10-08 | 2025-10-08 | PH04.DAHU.1420, PH04.DH.1190 SS | 2025-01-06 | 2025-01-10 |  | 02 | 1 |
| PH04.DAHU.1150 |  | DAHU North Pull DAHU Feeders | 2d | 2025-10-08 | 2025-10-08 | PH04.DH.1200 SS, PH04.DAHU.1140 | 2025-01-21 | 2025-01-22 |  | 02 | 1 |
| PH04.DAHU.1160 |  | DAHU North Make DAHU Electrical Connections | 2d | 2025-10-08 | 2025-10-08 | PH04.DAHU.1150 | 2025-01-23 | 2025-01-24 |  | 02 | 1 |
| PH04.DAHU.1170 |  | DAHU North Make DAHU Controls Connections | 3d | 2025-10-08 | 2025-10-08 | PH04.DAHU.1160 | 2025-01-27 | 2025-01-29 |  | 02 | 1 |
| PH04.DAHU.1180 |  | DAHU North Install Temporary Wall | 2d | 2025-10-08 | 2025-10-08 | PH04.DAHU.1170 | 2025-01-30 | 2025-01-31 |  | 02 | 1 |
| PH04.DAHU.1190 |  | DAHU North Install CSH ladders | 2d | 2025-10-08 | 2025-10-08 | PH04.DAHU.1170 | 2025-01-30 | 2025-01-31 |  | 02 | 1 |
| PH04.DAHU.1200 |  | DAHU North Clean DAHU Gallery and CSH | 1d | 2025-10-08 | 2025-10-08 | PH04.DAHU.1730, PH04.DAHU.1180, PH04.DAHU.1190, PH04.DAHU.1100, PH04.DAHU.1160 | 2025-03-03 | 2025-03-03 |  | 02 | 1 |
| PH04.DAHU.1420 |  | DAHU North Paint CSH drywall | 5d | 2025-10-08 | 2025-10-08 | PH04.DAHU.1080 | 2024-12-27 | 2025-01-03 |  | 02 | 1 |
| PH04.DAHU.1650 |  | DAHU North Coredrilling On 2nd Floor | 5d | 2025-10-08 | 2025-10-08 | PH04.M.1000 SS | 2024-11-18 | 2024-11-22 | DAHU North and South will | 02 | 1 |
| PH04.DAHU.1660 |  | DAHU North Install Floor Drains 2nd Floor | 2d | 2025-10-08 | 2025-10-08 | PH04.DAHU.1650 | 2024-11-25 | 2024-11-26 | DAHU North and South will | 02 | 1 |
| PH04.DAHU.1670 |  | DAHU North Concrete Infill 2nd Floor | 2d | 2025-10-08 | 2025-10-08 | PH04.DAHU.1660 | 2024-11-27 | 2024-11-29 | DAHU North and South will | 02 | 1 |
| PH04.DAHU.1680 |  | DAHU North Install OAD Damper | 4d | 2025-10-08 | 2025-10-08 | PH04.DAHU.1010 | 2024-11-22 | 2024-11-27 |  | 02 | 1 |
| PH04.DAHU.1690 |  | DAHU North Install Sprinkler Feed Lines | 4d | 2025-10-08 | 2025-10-08 | PH04.DAHU.1680 | 2024-11-29 | 2024-12-04 |  | 02 | 1 |
| PH04.DAHU.1700 |  | DAHU North Install Low Point Drain | 4d | 2025-10-08 | 2025-10-08 | PH04.DAHU.1690 FF | 2024-11-29 | 2024-12-04 |  | 02 | 1 |
| PH04.DAHU.1720 |  | DAHU North Install IW Drops | 3d | 2025-10-08 | 2025-10-08 | PH04.DAHU.1090 | 2025-01-08 | 2025-01-10 |  | 02 | 1 |
| PH04.DAHU.1730 |  | DAHU North Install VESDA Panels | 2d | 2025-10-08 | 2025-10-08 | PH04.DAHU.1180 | 2025-02-03 | 2025-02-04 |  | 02 | 1 |

| ID | WBS | Activity | Duration | Start | Finish | Predecessors | Planned start | Planned finish | user_text | 06 -GC - Building Levels | 05 -GC - Building Phase |
| --- | --- | --- | --- | --- | --- | --- | --- | --- | --- | --- | --- |
|  | 2 | **DAHU Gallery South** |  | 2025-10-08 | 2025-10-08 |  |  |  |  |  |  |
| PH04.DAHU.1430 |  | DAHU South Install fire protection and VESDA | 2d | 2025-10-08 | 2025-10-08 | PH04.M.1000 SS | 2024-11-18 | 2024-11-19 | DAHU North and South will | 02 | 1 |
| PH04.DAHU.1440 |  | DAHU South Install IW Piping | 4d | 2025-10-08 | 2025-10-08 | PH04.M.1000 SS | 2024-11-18 | 2024-11-21 | work simutaneously | 02 | 1 |
| PH04.DAHU.1450 |  | DAHU South Install Outside Air Reference Piping | 3d | 2025-10-08 | 2025-10-08 | PH04.DAHU.1440 FF | 2024-11-19 | 2024-11-21 |  | 02 | 1 |
| PH04.DAHU.1460 |  | DAHU South Frame DAHU wall and CSH catwalk | 6d | 2025-10-08 | 2025-10-08 | PH04.M.1000 SS | 2024-11-18 | 2024-11-25 |  | 02 | 1 |
| PH04.DAHU.1470 |  | DAHU South CSH Fire protection/alarm and VESDA rough-in | 3d | 2025-10-08 | 2025-10-08 | PH04.DAHU.1460 | 2024-11-25 | 2024-11-27 |  | 02 | 1 |
| PH04.DAHU.1480 |  | DAHU South CSH Electrical rough-in | 3d | 2025-10-08 | 2025-10-08 | PH04.DAHU.1460 SS | 2024-11-18 | 2024-11-20 |  | 02 | 1 |
| PH04.DAHU.1490 |  | DAHU South CSH In wall inspection | 1d | 2025-10-08 | 2025-10-08 | PH04.DAHU.1480, PH04.DAHU.1470 FF, PH04.DAHU.1470 | 2024-11-29 | 2024-11-29 |  | 02 | 1 |
| PH04.DAHU.1500 |  | DAHU South Install CSH drywall | 6d | 2025-10-08 | 2025-10-08 | PH04.DAHU.1810, PH04.DAHU.1490 | 2024-12-02 | 2024-12-09 |  | 02 | 1 |
| PH04.DAHU.1510 |  | DAHU South Finish CSH drywall | 10d | 2025-10-08 | 2025-10-08 | PH04.DAHU.1500 | 2024-12-09 | 2024-12-20 |  | 02 | 1 |
| PH04.DAHU.1520 |  | DAHU South Paint CSH drywall | 4d | 2025-10-08 | 2025-10-08 | PH04.DAHU.1510 | 2024-12-23 | 2024-12-27 |  | 02 | 1 |
| PH04.DAHU.1530 |  | DAHU South Install DAHUs | 2d | 2025-10-08 | 2025-10-08 | PH04.DAHU.1520, PH04.DAHU.1430, PH04.PR.1010 | 2024-12-30 | 2024-12-31 |  | 02 | 1 |
| PH04.DAHU.1540 |  | DAHU South Install CSH railing | 2d | 2025-10-08 | 2025-10-08 | PH04.DAHU.1530 | 2025-01-02 | 2025-01-03 |  | 02 | 1 |
| PH04.DAHU.1550 |  | DAHU South Install VFDs | 3d | 2025-10-08 | 2025-10-08 | PH04.DAHU.1530, PH04.PR.1130 | 2025-01-02 | 2025-01-06 |  | 02 | 1 |
| PH04.DAHU.1560 |  | DAHU South Make DAHU plumbing connections | 5d | 2025-10-08 | 2025-10-08 | PH04.DAHU.1760 SS+2d, PH04.DAHU.1530 | 2025-01-21 | 2025-01-27 |  | 02 | 1 |
| PH04.DAHU.1570 |  | DAHU South Pull and terminate VFDs from electrical room | 5d | 2025-10-08 | 2025-10-08 | PH04.DAHU.1550 | 2025-01-21 | 2025-01-27 |  | 02 | 1 |
| PH04.DAHU.1580 |  | DAHU South Install feeder trays (DAHU, VFD, communications) | 5d | 2025-10-08 | 2025-10-08 | PH04.DAHU.1530 | 2025-01-02 | 2025-01-08 |  | 02 | 1 |
| PH04.DAHU.1590 |  | DAHU South Pull DAHU Feeders | 2d | 2025-10-08 | 2025-10-08 | PH04.DH.1200 SS, PH04.DAHU.1580 | 2025-01-21 | 2025-01-22 |  | 02 | 1 |
| PH04.DAHU.1600 |  | DAHU South Make DAHU electrical connections | 2d | 2025-10-08 | 2025-10-08 | PH04.DAHU.1590 | 2025-01-23 | 2025-01-24 |  | 02 | 1 |
| PH04.DAHU.1610 |  | DAHU South Make DAHU controls connections | 3d | 2025-10-08 | 2025-10-08 | PH04.DAHU.1600 | 2025-01-27 | 2025-01-29 |  | 02 | 1 |
| PH04.DAHU.1620 |  | DAHU South Install temporary wall | 2d | 2025-10-08 | 2025-10-08 | PH04.DAHU.1610 | 2025-01-30 | 2025-01-31 |  | 02 | 1 |
| PH04.DAHU.1630 |  | DAHU South Install CSH ladders | 2d | 2025-10-08 | 2025-10-08 | PH04.DAHU.1610 | 2025-01-30 | 2025-01-31 |  | 02 | 1 |
| PH04.DAHU.1640 |  | DAHU South Clean DAHU gallery and CSH | 1d | 2025-10-08 | 2025-10-08 | PH04.DAHU.1800, PH04.DAHU.1620, PH04.DAHU.1630, PH04.DAHU.1540, PH04.DAHU.1600 | 2025-03-03 | 2025-03-03 |  | 02 | 1 |
| PH04.DAHU.1740 |  | DAHU South Coredrilling On 2nd Floor | 5d | 2025-10-08 | 2025-10-08 | PH04.M.1000 SS | 2024-11-18 | 2024-11-22 | DAHU North and South will | 02 | 1 |
| PH04.DAHU.1750 |  | DAHU South Install Floor Drains 2nd Floor | 2d | 2025-10-08 | 2025-10-08 | PH04.DAHU.1740 | 2024-11-25 | 2024-11-26 | DAHU North and South will | 02 | 1 |
| PH04.DAHU.1760 |  | DAHU South Install IW Drops | 3d | 2025-10-08 | 2025-10-08 | PH04.DAHU.1530, PH04.DAHU.1440 | 2025-01-02 | 2025-01-06 | work simutaneously | 02 | 1 |
| PH04.DAHU.1770 |  | DAHU South Install Sprinkler Lines | 4d | 2025-10-08 | 2025-10-08 | PH04.DAHU.1530 | 2025-01-02 | 2025-01-07 |  | 02 | 1 |
| PH04.DAHU.1800 |  | DAHU South Install VESDA Panels | 2d | 2025-10-08 | 2025-10-08 | PH04.DAHU.1620 | 2025-02-03 | 2025-02-04 |  | 02 | 1 |
| PH04.DAHU.1810 |  | DAHU South Concrete Infill 2nd Floor | 2d | 2025-10-08 | 2025-10-08 | PH04.DAHU.1750 | 2024-11-27 | 2024-11-29 | DAHU North and South will | 02 | 1 |

| ID | WBS | Activity | Duration | Start | Finish | Predecessors | Planned start | Planned finish | 06 -GC - Building Levels | 05 -GC - Building Phase | user_text |
| --- | --- | --- | --- | --- | --- | --- | --- | --- | --- | --- | --- |
|  | 6 | **Data Hall Gallery** |  | 2025-10-08 | 2025-10-08 |  |  |  |  |  |  |
| PH04.DH.1000 |  | Data Hall Install upper temp wall | 2d | 2025-10-08 | 2025-10-08 | PH04.DH.1410 | 2024-12-24 | 2024-12-26 | 02 | 1 |  |
| PH04.DH.1010 |  | Data Hall Rough-in electrical for exhaust fans | 5d | 2025-10-08 | 2025-10-08 | PH04.M.1000 SS | 2024-11-18 | 2024-11-22 | 02 | 1 |  |
| PH04.DH.1020 |  | Data Hall Install exhaust fan drip pans | 5d | 2025-10-08 | 2025-10-08 | PH04.DH.1010 SS+2d | 2024-11-20 | 2024-11-26 | 02 | 1 |  |
| PH04.DH.1030 |  | Data Hall Install Fire Protection (high) | 5d | 2025-10-08 | 2025-10-08 | PH04.DH.1020 SS+3d | 2024-11-25 | 2024-12-02 | 02 | 1 |  |
| PH04.DH.1040 |  | Data Hall Pipe exhaust fans drip pans | 4d | 2025-10-08 | 2025-10-08 | PH04.DH.1020 | 2024-11-25 | 2024-11-29 | 02 | 1 |  |
| PH04.DH.1050 |  | Data Hall Layout and frame B/E/3.5 line walls | 5d | 2025-10-08 | 2025-10-08 | PH04.M.1000 SS | 2024-11-18 | 2024-11-22 | 02 | 1 |  |
| PH04.DH.1060 |  | Data Hall In wall rough-in | 5d | 2025-10-08 | 2025-10-08 | PH04.DH.1050 SS | 2024-11-18 | 2024-11-22 | 02 | 1 |  |
| PH04.DH.1070 |  | Data Hall In wall inspection | 1d | 2025-10-08 | 2025-10-08 | PH04.DH.1060 | 2024-11-25 | 2024-11-25 | 02 | 1 |  |
| PH04.DH.1080 |  | Data Hall Install Drywall on B/E/3.5 line walls | 5d | 2025-10-08 | 2025-10-08 | PH04.DH.1070 | 2024-11-26 | 2024-12-03 | 02 | 1 |  |
| PH04.DH.1090 |  | Data Hall Finish B/E/3.5 line walls | 7d | 2025-10-08 | 2025-10-08 | PH04.DH.1460, PH04.DH.1080 | 2024-12-02 | 2024-12-10 | 02 | 1 |  |
| PH04.DH.1100 |  | Data Hall Frame exhaust plenum | 10d | 2025-10-08 | 2025-10-08 | PH04.DH.1050 SS | 2024-11-18 | 2024-12-02 | 02 | 1 |  |
| PH04.DH.1110 |  | Data Hall Rough-in exhaust plenum | 2d | 2025-10-08 | 2025-10-08 | PH04.DH.1100 | 2024-11-25 | 2024-11-26 | 02 | 1 |  |
| PH04.DH.1120 |  | Data Hall Install Drywall on Exterior Exhaust Plenum | 7d | 2025-10-08 | 2025-10-08 | PH04.DH.1110 | 2024-11-27 | 2024-12-06 | 02 | 1 |  |
| PH04.DH.1130 |  | Data Hall Finish exterior exhaust plenum | 10d | 2025-10-08 | 2025-10-08 | PH04.DH.1120 | 2024-12-02 | 2024-12-13 | 02 | 1 |  |
| PH04.DH.1140 |  | Data Hall Install Lower temp wall and doors | 3d | 2025-10-08 | 2025-10-08 | PH04.DH.1290, PH04.DH.1000, PH04.DH.1120, PH04.DH.1130, PH04.DH.1230 | 2025-02-04 | 2025-02-06 | 02 | 1 |  |
| PH04.DH.1150 |  | Data Hall Install return air dampers | 3d | 2025-10-08 | 2025-10-08 | PH04.DH.1080 | 2024-12-11 | 2024-12-13 | 02 | 1 |  |
| PH04.DH.1160 |  | Data Hall Install supply air dampers | 3d | 2025-10-08 | 2025-10-08 | PH04.DH.1150 | 2024-12-16 | 2024-12-18 | 02 | 1 |  |
| PH04.DH.1170 |  | Data Hall Install fire protection (low) | 5d | 2025-10-08 | 2025-10-08 | PH04.DH.1180 FF, PH04.DH.1150 | 2024-12-18 | 2024-12-24 | 02 | 1 |  |
| PH04.DH.1180 |  | Data Hall Install Racking | 8d | 2025-10-08 | 2025-10-08 | PH04.DH.1040, PH04.DH.1450, PH04.DH.1440, PH04.DH.1080, PH04.DH.1030, PH04.PR.1000 | 2024-12-06 | 2024-12-17 | 02 | 1 |  |
| PH04.DH.1190 |  | Data Hall Install DAHU feeder tray | 10d | 2025-10-08 | 2025-10-08 | PH04.DH.1180 FF | 2024-12-18 | 2025-01-02 | 02 | 1 |  |
| PH04.DH.1200 |  | Data Hall Pull DAHU feeders | 2d | 2025-10-08 | 2025-10-08 | PH04.DH.1190, WTHR-10 | 2025-01-03 | 2025-01-06 | 02 | 1 |  |
| PH04.DH.1210 |  | Data Hall Install vertical communication risers | 3d | 2025-10-08 | 2025-10-08 | PH04.DH.1200 | 2025-01-22 | 2025-01-24 | 02 | 1 |  |
| PH04.DH.1220 |  | Data Hall Install guardrails at risers | 2d | 2025-10-08 | 2025-10-08 | PH04.DH.1210 | 2025-01-27 | 2025-01-28 | 02 | 1 |  |
| PH04.DH.1230 |  | Data Hall Install ACT grid | 4d | 2025-10-08 | 2025-10-08 | PH04.DH.1500, PH04.DH.1270 | 2024-12-18 | 2024-12-23 | 02 | 1 |  |
| PH04.DH.1240 |  | Data Hall Electrical ceiling rough-in | 5d | 2025-10-08 | 2025-10-08 | PH04.DH.1470, PH04.DH.1170, PH04.DH.1230 | 2024-12-26 | 2025-01-02 | 02 | 1 |  |
| PH04.DH.1250 |  | Data Hall Install Fire protection Sprinkler Heads | 4d | 2025-10-08 | 2025-10-08 | PH04.DH.1230 | 2024-12-24 | 2024-12-30 | 02 | 1 |  |
| PH04.DH.1260 |  | Data Hall Fire alarm and VESDA rough-in | 4d | 2025-10-08 | 2025-10-08 | PH04.DH.1280, PH04.DH.1230 | 2025-01-24 | 2025-01-29 | 02 | 1 |  |
| PH04.DH.1270 |  | Data Hall Install upper twin wall | 5d | 2025-10-08 | 2025-10-08 | PH04.DH.1180 SS+3d | 2024-12-11 | 2024-12-17 | 02 | 1 |  |
| PH04.DH.1280 |  | Data Hall Install Ceiling Tiles | 4d | 2025-10-08 | 2025-10-08 | PH04.DH.1510, PH04.DH.1230, PH04.DH.1250, PH04.DH.1240, PH04.DH.1270, WTHR-10 | 2025-01-03 | 2025-01-08 | 02 | 1 |  |
| PH04.DH.1290 |  | Data Hall Install Basket Tray | 10d | 2025-10-08 | 2025-10-08 | PH04.DH.1280 SS+2d, PH04.DH.1280 FF | 2025-01-21 | 2025-02-03 | 02 | 1 | Changed from 15 to 10 |
| PH04.DH.1300 |  | Data Hall Pull branch circuit and PDC feeders | 10d | 2025-10-08 | 2025-10-08 | PH04.EA.2030 SS, PH04.DH.1290 FF+4d | 2025-01-27 | 2025-02-07 | 02 | 1 | Changed from 15 to 10 |
| PH04.DH.1310 |  | Data Hall Install PDC cabinets | 3d | 2025-10-08 | 2025-10-08 | PH04.DH.1230, PH04.PR.1100 | 2025-01-21 | 2025-01-23 | 02 | 1 |  |
| PH04.DH.1320 |  | Data Hall Terminate PDC cabinets | 5d | 2025-10-08 | 2025-10-08 | PH04.DH.1310, PH04.DH.1300 FF+3d | 2025-02-06 | 2025-02-12 | 02 | 1 |  |
| PH04.DH.1330 |  | Data Hall Install PDC Whips and labels | 5d | 2025-10-08 | 2025-10-08 | PH04.DH.1290, PH04.PR.1100 | 2025-02-04 | 2025-02-10 | 02 | 1 | Data hall is driving out the |
| PH04.DH.1340 |  | Data Hall Perform PDC Whip Checks | 2d | 2025-10-08 | 2025-10-08 | PH04.DH.1330, PH04.DH.1320 | 2025-02-13 | 2025-02-14 | 02 | 1 | NEA data in the milestones |
| PH04.DH.1350 |  | Data Hall Install lower twin wall and doors | 5d | 2025-10-08 | 2025-10-08 | PH04.DH.1360 SS, PH04.DH.1180, PH04.DH.1390 | 2025-02-18 | 2025-02-24 | 02 | 1 | Changed from 7 to 5 |
| PH04.DH.1360 |  | Data Hall Install Perfect Positioning | 2d | 2025-10-08 | 2025-10-08 | PH04.DH.1320, PH04.DH.1340 | 2025-02-18 | 2025-02-19 | 02 | 1 | Must complete by 10/23/23 |
| PH04.DH.1370 |  | Data Hall Clean data hall | 2d | 2025-10-08 | 2025-10-08 | PH04.DH.1490, PH04.DH.1480, PH04.DH.1280, PH04.DH.1410, PH04.DH.1140, PH04.DH.1220, PH04.DH.1360, PH04.DH.1350 | 2025-03-03 | 2025-03-04 | 02 | 1 |  |
| PH04.DH.1380 |  | Data Hall Paint B/E/3.5 line walls | 5d | 2025-10-08 | 2025-10-08 | PH04.DH.1090 FF | 2024-12-11 | 2024-12-17 | 02 | 1 |  |
| PH04.DH.1390 |  | Data Hall Install Drywall on Interior Exhaust Plenum | 12d | 2025-10-08 | 2025-10-08 | PH04.DH.1110 | 2024-11-27 | 2024-12-13 | 02 | 1 |  |
| PH04.DH.1400 |  | Data Hall Finish interior exhaust plenum | 15d | 2025-10-08 | 2025-10-08 | PH04.DH.1390 | 2024-12-17 | 2025-01-08 | 02 | 1 | Changed from 20 to 15 |
| PH04.DH.1410 |  | Data Hall Paint exterior exhaust plenum | 5d | 2025-10-08 | 2025-10-08 | PH04.DH.1130 | 2024-12-17 | 2024-12-23 | 02 | 1 |  |
| PH04.DH.1420 |  | Data Hall Paint Interior Exhaust plenum | 5d | 2025-10-08 | 2025-10-08 | PH04.DH.1400 | 2025-01-06 | 2025-01-10 | 02 | 1 |  |
| PH04.DH.1430 |  | Data Hall Install High VESDA Pipes | 4d | 2025-10-08 | 2025-10-08 | PH04.DH.1030 | 2024-12-02 | 2024-12-05 | 02 | 1 |  |
| PH04.DH.1440 |  | Data Hall Install Fire Protection (Low) | 5d | 2025-10-08 | 2025-10-08 | PH04.DH.1030 SS+2d | 2024-11-27 | 2024-12-04 | 02 | 1 |  |
| PH04.DH.1450 |  | Data Hall Hang Wire for Ceiling Grid | 4d | 2025-10-08 | 2025-10-08 | PH04.DH.1440 SS+2d | 2024-12-02 | 2024-12-05 | 02 | 1 |  |
| PH04.DH.1460 |  | Data Hall Install Dampers/Screens | 3d | 2025-10-08 | 2025-10-08 | PH04.DH.1080 SS | 2024-11-26 | 2024-11-29 | 02 | 1 |  |
| PH04.DH.1470 |  | Data Hall Install BMS Panel | 3d | 2025-10-08 | 2025-10-08 | PH04.DH.1090, PH04.DH.1380 | 2024-12-18 | 2024-12-20 | 02 | 1 |  |
| PH04.DH.1480 |  | Data Hall Install VESDA Panels | 2d | 2025-10-08 | 2025-10-08 | PH04.DH.1420, PH04.DH.1260, PH04.DH.1280, PH04.DH.1500 | 2025-01-30 | 2025-01-31 | 02 | 1 | NEA data in the milestones |
| PH04.DH.1490 |  | Data Hall Pull & Terminate VESDA Wiring | 2d | 2025-10-08 | 2025-10-08 | PH04.DH.1480 | 2025-02-03 | 2025-02-04 | 02 | 1 | NEA data in the milestones |
| PH04.DH.1500 |  | Data Hall Install Lower VESDA Pipes | 4d | 2025-10-08 | 2025-10-08 | PH04.DH.1430 | 2024-12-06 | 2024-12-11 | 02 | 1 |  |
| PH04.DH.1510 |  | Data Hall Install Back Draft Damper | 4d | 2025-10-08 | 2025-10-08 | PH04.DH.1230 | 2024-12-24 | 2024-12-30 | 02 | 1 |  |
| PH04.DH.1520 |  | Data Hall Install BMS/EPMS | 5d | 2025-10-08 | 2025-10-08 | PH04.DH.1210 | 2025-01-27 | 2025-01-31 | 02 | 1 |  |

| ID | WBS | Activity | Duration | Start | Finish | Predecessors | Planned start | Planned finish | Constraint | Calendar | user_text | 06 -GC - Building Levels | 05 -GC - Building Phase | SCHDULE UPDATE |
| --- | --- | --- | --- | --- | --- | --- | --- | --- | --- | --- | --- | --- | --- | --- |
|  | 7 | **Startup and Commissioning** |  | 2025-10-08 | 2025-10-08 |  |  |  |  |  |  |  |  |  |
| PH04.SU.1000 |  | OWNER FOD Walks | 2d | 2025-10-08 | 2025-10-08 | PH04.GEN.1120, PH04.XFMR.1100, PH04.GEN.1110, PH04.DAHU.1570, PH04.DAHU.1120, PH04.XFMR.1120, ISSU14.20, ISSU14.40 | 2025-02-28 | 2025-03-03 | finish on or after 2025-03-03 |  | Must begin by 10/09/23 | 02 | 1 |  |
| PH04.SU.1010 |  | Energization | 3d | 2025-10-08 | 2025-10-08 | PH04.SU.1000 SS+1d, PH04.GEN.1130 | 2025-03-24 | 2025-03-26 |  |  | Must complete by 10/16/23 | 02 | 1 |  |
| PH04.SU.1030 |  | L4-L5 Commissioning | 10d | 2025-10-08 | 2025-10-08 | PH04.SU.1010, PH04.SU.1050, PH04.DH.1370, PH04.M.1070 | 2025-05-05 | 2025-05-16 |  |  |  | 02 | 1 |  |
| PH04.SU.1040 |  | Comissioning Complete | 1d | 2025-10-08 | 2025-10-08 | PH04.SU.1030 | 2025-05-19 | 2025-05-19 |  |  |  | 02 | 1 |  |
| PH04.SU.1050 |  | Startup activities for H2C | 4d | 2025-10-08 | 2025-10-08 | PH04.SU.1010, PH04.M.1060 | 2025-03-27 | 2025-04-01 |  |  |  | 02 | 1 |  |
|  | INSPECTIONS | **Final Inspections** |  | 2025-10-08 | 2025-10-08 |  |  |  |  |  |  |  |  |  |
| PH04.1000 |  | Fire Protection Final Inspection | 2d | 2025-10-08 | 2025-10-08 | PH04.DAHU.1770, PH04.EA.136, PH04.DAHU.1050, PH04.DAHU.1430, PH04.DH.1250, PH04.SU.1010, PH04.EA.2070, PH04.DAHU.1200, PH04.DAHU.1640, PH04.DH.1370 | 2025-03-06 | 2025-03-07 |  |  | Must complete by 10/16/23 | 02 | 1 |  |
| PH04.1010 |  | Electrical Final Inspection | 2d | 2025-10-08 | 2025-10-08 | PH04.SU.1010, PH04.EA.2070, PH04.DAHU.1200, PH04.DAHU.1640, PH04.DH.1370 | 2025-03-06 | 2025-03-07 |  |  | Must complete by 10/16/23 | 02 | 1 |  |
| PH04.1020 |  | Fire Alarm Final Inspection | 2d | 2025-10-08 | 2025-10-08 | PH04.EA.2140, PH04.SU.1010, PH04.EA.2070, PH04.DAHU.1200, PH04.DAHU.1640, PH04.DH.1370 | 2025-03-06 | 2025-03-07 |  |  | Must complete by 10/16/23 | 02 | 1 |  |
| PH04.1030 |  | Mechanical Final Inspection | 2d | 2025-10-08 | 2025-10-08 | PH04.SU.1010, PH04.EA.2070, PH04.DAHU.1200, PH04.DAHU.1640, PH04.DH.1370 | 2025-03-06 | 2025-03-07 |  |  | Must complete by 10/16/23 | 02 | 1 |  |
| PH04.1040 |  | Plumbing Final Inspection | 2d | 2025-10-08 | 2025-10-08 | PH04.SU.1010, PH04.EA.2070, PH04.DAHU.1200, PH04.DAHU.1640, PH04.DH.1370 | 2025-03-06 | 2025-03-07 |  |  | Must complete by 10/16/23 | 02 | 1 |  |
| PH04.1050 |  | Special Inspections Sign-off | 2d | 2025-10-08 | 2025-10-08 | PH04.DH.1370 | 2025-04-14 | 2025-04-15 |  |  | Must complete by 10/16/23 | 02 | 1 |  |
|  | PH5 | **Phase 5 Construction** |  | 2025-10-08 | 2025-10-08 |  |  |  |  |  |  |  |  |  |
|  | 2 | **Site** |  | 2025-10-08 | 2025-10-08 |  |  |  |  |  |  |  |  |  |
|  | 2 | **Generator Yard** |  | 2025-10-08 | 2025-10-08 |  |  |  |  |  |  |  |  |  |
|  | 2 | **Generators-Phase 5** |  | 2025-10-08 | 2025-10-08 |  |  |  |  |  |  |  |  |  |
| PH05.GEN.1100 |  | Gen Yard Install generators | 2d | 2025-10-08 | 2025-10-08 | PH2-10.GEN.1210, PH05.PR.1050 | 2024-12-02 | 2024-12-03 |  |  |  | 02 | 1 | ELIASE |
| PH05.GEN.1110 |  | Gen Yard Anchor generators | 2d | 2025-10-08 | 2025-10-08 | PH05.GEN.1100 | 2025-01-08 | 2025-01-09 |  |  |  | 02 | 1 | ELIASE |
| PH05.GEN.1120 |  | Gen Yard Install cable bus from generator to electrical room | 10d | 2025-10-08 | 2025-10-08 | PH05.XFMR.1100 SS, PH05.GEN.1110, PH05.PR.1160 | 2025-02-10 | 2025-02-24 |  |  |  | 02 | 1 | ELIASE |
| PH05.GEN.1130 |  | Gen Yard Install generators Exhaust Duct | 2d | 2025-10-08 | 2025-10-08 | PH05.GEN.1100 | 2025-01-21 | 2025-01-22 |  |  |  | 02 | 1 | ELIASE |
|  | 4 | **MV Transformers-Phase 5** |  | 2025-10-08 | 2025-10-08 |  |  |  |  |  |  |  |  |  |
| PH05.XFMR.1100 |  | XFMR Install cable bus to electrical room | 8d | 2025-10-08 | 2025-10-08 | PH05.PR.1160, PH05.XFMR.1120, PH04.XFMR.1100 | 2025-02-08 | 2025-02-18 |  | Calendar 06 - 6 Day Work Week w/ Mass. Holidays |  | 02 | 1 | ELIASE |
| PH05.XFMR.1110 |  | XFMR Pull to MV SWGR | 5d | 2025-10-08 | 2025-10-08 | PH05.GEN.1100 | 2024-12-30 | 2025-01-06 |  |  |  | 02 | 1 | ELIASE |
| PH05.XFMR.1120 |  | XFMR Terminate to MV SWGR | 5d | 2025-10-08 | 2025-10-08 | PH05.XFMR.1110, PH05.PR.1040 | 2025-02-03 | 2025-02-07 |  |  |  | 02 | 1 | ELIASE |

| ID | WBS | Activity | Duration | Start | Finish | Predecessors | Planned start | Planned finish | 06 -GC - Building Levels | 05 -GC - Building Phase | user_text |
| --- | --- | --- | --- | --- | --- | --- | --- | --- | --- | --- | --- |
|  | 3 | **Electrical Room E2.5** |  | 2025-10-08 | 2025-10-08 |  |  |  |  |  |  |
| PH05.EA.136 |  | ER E2.5 Install sprinkler heads | 5d | 2025-10-08 | 2025-10-08 | PH05.EA.1860 | 2024-12-12 | 2024-12-18 | 02 | 1 |  |
| PH05.EA.1860 |  | ER E2.5 Install fire protection | 1d | 2025-10-08 | 2025-10-08 | PH05.EA.1960 | 2024-12-11 | 2024-12-11 | 02 | 1 | All electrical rooms will |
| PH05.EA.1870 |  | ER E2.5 Layout and frame walls | 2d | 2025-10-08 | 2025-10-08 | PH05.M.1000 SS | 2024-11-18 | 2024-11-19 | 02 | 1 | start simutaneously |
| PH05.EA.1880 |  | ER E2.5 Install OAD ductwork Transitions | 6d | 2025-10-08 | 2025-10-08 | PH05.EA.2090, PH05.M.1000 SS | 2024-11-20 | 2024-11-27 | 02 | 1 |  |
| PH05.EA.1890 |  | ER E2.5 Electrical rough-in | 3d | 2025-10-08 | 2025-10-08 | PH05.EA.1870, PH05.EA.1880 | 2024-11-29 | 2024-12-03 | 02 | 1 |  |
| PH05.EA.1900 |  | ER E2.5 Mechanical rough-in | 3d | 2025-10-08 | 2025-10-08 | PH05.EA.1870, PH05.EA.1880 | 2024-11-29 | 2024-12-03 | 02 | 1 |  |
| PH05.EA.1910 |  | ER E2.5 Fire alarm rough-in | 3d | 2025-10-08 | 2025-10-08 | PH05.EA.1870, PH05.EA.1880 | 2024-11-29 | 2024-12-03 | 02 | 1 |  |
| PH05.EA.1920 |  | ER E2.5 Plumbing rough-in | 3d | 2025-10-08 | 2025-10-08 | PH05.EA.1880, PH05.EA.1870 | 2024-11-29 | 2024-12-03 | 02 | 1 |  |
| PH05.EA.1930 |  | ER E2.5 In wall inspection | 1d | 2025-10-08 | 2025-10-08 | PH05.EA.1910, PH05.EA.1900, PH05.EA.1890, PH05.EA.1920 | 2024-12-04 | 2024-12-04 | 02 | 1 |  |
| PH05.EA.1940 |  | ER E2.5 Install drywall | 3d | 2025-10-08 | 2025-10-08 | PH05.EA.1930 | 2024-12-02 | 2024-12-04 | 02 | 1 |  |
| PH05.EA.1950 |  | ER E2.5 Finish drywall | 5d | 2025-10-08 | 2025-10-08 | PH05.EA.1940 | 2024-12-05 | 2024-12-11 | 02 | 1 |  |
| PH05.EA.1960 |  | ER E2.5 Paint drywall | 2d | 2025-10-08 | 2025-10-08 | PH05.EA.1950 | 2024-12-09 | 2024-12-10 | 02 | 1 |  |
| PH05.EA.1970 |  | ER E2.5 Install OAD dampers + Ductwork | 3d | 2025-10-08 | 2025-10-08 | PH05.EA.1960, PH05.EA.1950 | 2024-12-11 | 2024-12-13 | 02 | 1 |  |
| PH05.EA.1980 |  | ER E2.5 Install split units | 3d | 2025-10-08 | 2025-10-08 | PH05.EA.1970 | 2024-12-16 | 2024-12-18 | 02 | 1 |  |
| PH05.EA.1990 |  | ER E2.5 Install Busway and OH electrical supports | 5d | 2025-10-08 | 2025-10-08 | PH05.EA.1960 SS, PH05.EA.1950, PH05.PR.1060 | 2024-12-09 | 2024-12-13 | 02 | 1 |  |
| PH05.EA.2000 |  | ER E2.5 Install Electrical SWGR | 2d | 2025-10-08 | 2025-10-08 | PH05.EA.2130, PH05.EA.1990, PH05.PR.1070 | 2024-12-26 | 2024-12-27 | 02 | 1 |  |
| PH05.EA.2010 |  | ER E2.5 Install Feeder tray | 5d | 2025-10-08 | 2025-10-08 | PH05.EA.1990, PH05.EA.2000 | 2024-12-30 | 2025-01-06 | 02 | 1 |  |
| PH05.EA.2020 |  | ER E2.5 Install electrical panels and disconnects | 5d | 2025-10-08 | 2025-10-08 | PH05.EA.2010, PH05.PR.1170, PH05.PR.1190 | 2025-01-07 | 2025-01-13 | 02 | 1 |  |
| PH05.EA.2030 |  | ER E2.5 Pull and terminate feeders | 10d | 2025-10-08 | 2025-10-08 | PH05.EA.2010 SS+2d, PH05.EA.2010 FF | 2025-01-02 | 2025-01-15 | 02 | 1 |  |
| PH05.EA.2040 |  | ER E2.5 Install lighting | 3d | 2025-10-08 | 2025-10-08 | PH05.EA.2020, PH05.EA.2030 | 2025-01-23 | 2025-01-27 | 02 | 1 |  |
| PH05.EA.2050 |  | ER E2.5 Install accessories (shepherds hook, fire ext) | 1d | 2025-10-08 | 2025-10-08 | PH05.EA.2040 FF, PH05.EA.2040 | 2025-02-03 | 2025-02-03 | 02 | 1 |  |
| PH05.EA.2070 |  | ER E2.5 Clean electrical room | 1d | 2025-10-08 | 2025-10-08 | PH05.EA.2150, PH05.EA.2120, PH05.EA.2040, PH05.EA.1980, PH05.EA.2050 | 2025-03-03 | 2025-03-03 | 02 | 1 |  |
| PH05.EA.2090 |  | ER E2.5 Install Plenum on Louvers | 2d | 2025-10-08 | 2025-10-08 | PH05.M.1000 SS | 2024-11-18 | 2024-11-19 | 02 | 1 | start simutaneously |
| PH05.EA.2100 |  | ER E2.5 Install Vesda Piping System | 5d | 2025-10-08 | 2025-10-08 | PH05.EA.1960 | 2024-12-11 | 2024-12-17 | 02 | 1 |  |
| PH05.EA.2110 |  | ER E2.5 Install Refrigerantion Lines | 5d | 2025-10-08 | 2025-10-08 | PH05.EA.1960 | 2024-12-11 | 2024-12-17 | 02 | 1 |  |
| PH05.EA.2120 |  | ER E2.5 Install ERV | 2d | 2025-10-08 | 2025-10-08 | PH05.EA.2030, PH05.EA.2110 | 2025-01-23 | 2025-01-24 | 02 | 1 |  |
| PH05.EA.2130 |  | ER E2.5 Install Cable Trays | 5d | 2025-10-08 | 2025-10-08 | PH05.EA.1980 SS+2d, PH05.EA.1980 FF | 2024-12-18 | 2024-12-24 | 02 | 1 |  |
| PH05.EA.2140 |  | ER E2.5 Install Fire Alarm + Vesda Panel | 3d | 2025-10-08 | 2025-10-08 | PH05.EA.2100 | 2024-12-18 | 2024-12-20 | 02 | 1 |  |
| PH05.EA.2150 |  | ER E2.5 Install Control BMS & EPMS | 4d | 2025-10-08 | 2025-10-08 | PH05.EA.2030 | 2025-01-23 | 2025-01-28 | 02 | 1 |  |

| ID | WBS | Activity | Duration | Start | Finish | Predecessors | Planned start | Planned finish | user_text | 06 -GC - Building Levels | 05 -GC - Building Phase |
| --- | --- | --- | --- | --- | --- | --- | --- | --- | --- | --- | --- |
|  | 5 | **DAHU Galleries** |  | 2025-10-08 | 2025-10-08 |  |  |  |  |  |  |
|  | 1 | **DAHU Gallery North** |  | 2025-10-08 | 2025-10-08 |  |  |  |  |  |  |
| PH05.DAHU.1000 |  | DAHU North Install Fire Protection & VESDA | 2d | 2025-10-08 | 2025-10-08 | PH05.M.1000 SS | 2024-11-18 | 2024-11-19 | DAHU North and South will | 02 | 1 |
| PH05.DAHU.1010 |  | DAHU North Install IW Piping | 4d | 2025-10-08 | 2025-10-08 | PH05.M.1000 SS | 2024-11-18 | 2024-11-21 | work simutaneously | 02 | 1 |
| PH05.DAHU.1020 |  | DAHU North Install Outside Air Reference Piping | 3d | 2025-10-08 | 2025-10-08 | PH05.DAHU.1010 SS+2d | 2024-11-20 | 2024-11-22 |  | 02 | 1 |
| PH05.DAHU.1030 |  | DAHU North Frame DAHU wall and CSH catwalk | 6d | 2025-10-08 | 2025-10-08 | PH05.M.1000 SS | 2024-11-25 | 2024-12-03 |  | 02 | 1 |
| PH05.DAHU.1040 |  | DAHU North CSH Electrical rough-in | 5d | 2025-10-08 | 2025-10-08 | PH05.DAHU.1030 | 2024-12-02 | 2024-12-06 |  | 02 | 1 |
| PH05.DAHU.1050 |  | DAHU North CSH Fire protection/alarm and VESDA rough-in | 3d | 2025-10-08 | 2025-10-08 | PH05.DAHU.1030 FF | 2024-12-02 | 2024-12-04 |  | 02 | 1 |
| PH05.DAHU.1060 |  | DAHU North CSH In wall inspection | 1d | 2025-10-08 | 2025-10-08 | PH05.DAHU.1040, PH05.DAHU.1050 FF, PH05.DAHU.1050 | 2024-12-05 | 2024-12-05 |  | 02 | 1 |
| PH05.DAHU.1070 |  | DAHU North Install CSH drywall | 6d | 2025-10-08 | 2025-10-08 | PH05.DAHU.1060 | 2024-12-06 | 2024-12-13 |  | 02 | 1 |
| PH05.DAHU.1080 |  | DAHU North Finish CSH drywall | 13d | 2025-10-08 | 2025-10-08 | PH05.DAHU.1070 | 2024-12-17 | 2025-01-06 |  | 02 | 1 |
| PH05.DAHU.1090 |  | DAHU North Install DAHUs | 2d | 2025-10-08 | 2025-10-08 | PH05.DAHU.1700, PH05.DAHU.1690, PH05.DAHU.1680, PH05.DAHU.1670, PH05.DAHU.1000, PH05.DAHU.1080, PH05.DAHU.1420, PH05.PR.1010 | 2025-01-14 | 2025-01-15 |  | 02 | 1 |
| PH05.DAHU.1100 |  | DAHU North Install CSH railing | 2d | 2025-10-08 | 2025-10-08 | PH05.DAHU.1420 | 2025-01-21 | 2025-01-22 |  | 02 | 1 |
| PH05.DAHU.1120 |  | DAHU North Pull and terminate VFDs from electrical room | 5d | 2025-10-08 | 2025-10-08 | PH05.DAHU.1090, PH05.PR.1130 | 2025-01-21 | 2025-01-27 |  | 02 | 1 |
| PH05.DAHU.1130 |  | DAHU North Make DAHU Plumbing Connections | 3d | 2025-10-08 | 2025-10-08 | PH05.DAHU.1720, PH05.DAHU.1090 | 2025-01-24 | 2025-01-28 |  | 02 | 1 |
| PH05.DAHU.1140 |  | DAHU North Install Feeder Trays (DAHU, VFD, Communications) | 5d | 2025-10-08 | 2025-10-08 | PH05.DAHU.1420, PH05.DH.1190 SS | 2025-01-21 | 2025-01-27 |  | 02 | 1 |
| PH05.DAHU.1150 |  | DAHU North Pull DAHU Feeders | 2d | 2025-10-08 | 2025-10-08 | PH05.DH.1200 SS, PH05.DAHU.1140 | 2025-01-28 | 2025-01-29 |  | 02 | 1 |
| PH05.DAHU.1160 |  | DAHU North Make DAHU Electrical Connections | 2d | 2025-10-08 | 2025-10-08 | PH05.DAHU.1150 | 2025-01-30 | 2025-01-31 |  | 02 | 1 |
| PH05.DAHU.1170 |  | DAHU North Make DAHU Controls Connections | 3d | 2025-10-08 | 2025-10-08 | PH05.DAHU.1160 | 2025-02-03 | 2025-02-05 |  | 02 | 1 |
| PH05.DAHU.1180 |  | DAHU North Install Temporary Wall | 2d | 2025-10-08 | 2025-10-08 | PH05.DAHU.1170 | 2025-02-06 | 2025-02-07 |  | 02 | 1 |
| PH05.DAHU.1190 |  | DAHU North Install CSH ladders | 2d | 2025-10-08 | 2025-10-08 | PH05.DAHU.1170 | 2025-02-06 | 2025-02-07 |  | 02 | 1 |
| PH05.DAHU.1200 |  | DAHU North Clean DAHU Gallery and CSH | 1d | 2025-10-08 | 2025-10-08 | PH05.DAHU.1730, PH05.DAHU.1180, PH05.DAHU.1190, PH05.DAHU.1100, PH05.DAHU.1160 | 2025-03-03 | 2025-03-03 |  | 02 | 1 |
| PH05.DAHU.1420 |  | DAHU North Paint CSH drywall | 5d | 2025-10-08 | 2025-10-08 | PH05.DAHU.1080 | 2025-01-07 | 2025-01-13 |  | 02 | 1 |
| PH05.DAHU.1650 |  | DAHU North Coredrilling On 2nd Floor | 5d | 2025-10-08 | 2025-10-08 | PH05.M.1000 SS | 2024-11-18 | 2024-11-22 | DAHU North and South will | 02 | 1 |
| PH05.DAHU.1660 |  | DAHU North Install Floor Drains 2nd Floor | 2d | 2025-10-08 | 2025-10-08 | PH05.DAHU.1650 | 2024-11-25 | 2024-11-26 | DAHU North and South will | 02 | 1 |
| PH05.DAHU.1670 |  | DAHU North Concrete Infill 2nd Floor | 2d | 2025-10-08 | 2025-10-08 | PH05.DAHU.1660 | 2024-11-27 | 2024-11-29 | DAHU North and South will | 02 | 1 |
| PH05.DAHU.1680 |  | DAHU North Install OAD Damper | 4d | 2025-10-08 | 2025-10-08 | PH05.DAHU.1010 | 2024-11-22 | 2024-11-27 |  | 02 | 1 |
| PH05.DAHU.1690 |  | DAHU North Install Sprinkler Feed Lines | 4d | 2025-10-08 | 2025-10-08 | PH05.DAHU.1680 | 2024-11-25 | 2024-11-29 |  | 02 | 1 |
| PH05.DAHU.1700 |  | DAHU North Install Low Point Drain | 4d | 2025-10-08 | 2025-10-08 | PH05.DAHU.1690 FF | 2024-11-25 | 2024-11-29 |  | 02 | 1 |
| PH05.DAHU.1720 |  | DAHU North Install IW Drops | 3d | 2025-10-08 | 2025-10-08 | PH05.DAHU.1090 | 2025-01-21 | 2025-01-23 |  | 02 | 1 |
| PH05.DAHU.1730 |  | DAHU North Install VESDA Panels | 2d | 2025-10-08 | 2025-10-08 | PH05.DAHU.1180 | 2025-02-10 | 2025-02-11 |  | 02 | 1 |

| ID | WBS | Activity | Duration | Start | Finish | Predecessors | Planned start | Planned finish | user_text | 06 -GC - Building Levels | 05 -GC - Building Phase |
| --- | --- | --- | --- | --- | --- | --- | --- | --- | --- | --- | --- |
|  | 2 | **DAHU Gallery South** |  | 2025-10-08 | 2025-10-08 |  |  |  |  |  |  |
| PH05.DAHU.1430 |  | DAHU South Install fire protection and VESDA | 2d | 2025-10-08 | 2025-10-08 | PH05.M.1000 SS | 2024-11-18 | 2024-11-19 | DAHU North and South will | 02 | 1 |
| PH05.DAHU.1440 |  | DAHU South Install IW Piping | 4d | 2025-10-08 | 2025-10-08 | PH05.M.1000 SS | 2024-11-18 | 2024-11-21 | work simutaneously | 02 | 1 |
| PH05.DAHU.1450 |  | DAHU South Install Outside Air Reference Piping | 3d | 2025-10-08 | 2025-10-08 | PH05.DAHU.1440 FF | 2024-11-19 | 2024-11-21 |  | 02 | 1 |
| PH05.DAHU.1460 |  | DAHU South Frame DAHU wall and CSH catwalk | 6d | 2025-10-08 | 2025-10-08 | PH05.M.1000 SS | 2024-11-18 | 2024-11-25 |  | 02 | 1 |
| PH05.DAHU.1470 |  | DAHU South CSH Fire protection/alarm and VESDA rough-in | 3d | 2025-10-08 | 2025-10-08 | PH05.DAHU.1430 | 2024-11-26 | 2024-11-29 |  | 02 | 1 |
| PH05.DAHU.1480 |  | DAHU South CSH Electrical rough-in | 3d | 2025-10-08 | 2025-10-08 | PH05.DAHU.1430 SS | 2024-11-18 | 2024-11-20 |  | 02 | 1 |
| PH05.DAHU.1490 |  | DAHU South CSH In wall inspection | 1d | 2025-10-08 | 2025-10-08 | PH05.DAHU.1480, PH05.DAHU.1470 FF, PH05.DAHU.1470 | 2024-12-02 | 2024-12-02 |  | 02 | 1 |
| PH05.DAHU.1500 |  | DAHU South Install CSH drywall | 6d | 2025-10-08 | 2025-10-08 | PH05.DAHU.1460, PH05.DAHU.1810, PH05.DAHU.1490 | 2024-12-03 | 2024-12-10 |  | 02 | 1 |
| PH05.DAHU.1510 |  | DAHU South Finish CSH drywall | 10d | 2025-10-08 | 2025-10-08 | PH05.DAHU.1500 | 2024-12-11 | 2024-12-24 |  | 02 | 1 |
| PH05.DAHU.1520 |  | DAHU South Paint CSH drywall | 4d | 2025-10-08 | 2025-10-08 | PH05.DAHU.1510 | 2024-12-26 | 2024-12-31 |  | 02 | 1 |
| PH05.DAHU.1530 |  | DAHU South Install DAHUs | 2d | 2025-10-08 | 2025-10-08 | PH05.DAHU.1520, PH05.DAHU.1430, PH05.PR.1010 | 2025-01-02 | 2025-01-03 |  | 02 | 1 |
| PH05.DAHU.1540 |  | DAHU South Install CSH railing | 2d | 2025-10-08 | 2025-10-08 | PH05.DAHU.1530 | 2025-01-21 | 2025-01-22 |  | 02 | 1 |
| PH05.DAHU.1550 |  | DAHU South Install VFDs | 3d | 2025-10-08 | 2025-10-08 | PH05.DAHU.1530, PH05.PR.1130 | 2025-01-21 | 2025-01-23 |  | 02 | 1 |
| PH05.DAHU.1560 |  | DAHU South Make DAHU plumbing connections | 5d | 2025-10-08 | 2025-10-08 | PH05.DAHU.1760 SS+2d, PH05.DAHU.1530 | 2025-01-23 | 2025-01-29 |  | 02 | 1 |
| PH05.DAHU.1570 |  | DAHU South Pull and terminate VFDs from electrical room | 5d | 2025-10-08 | 2025-10-08 | PH05.DAHU.1550 | 2025-01-24 | 2025-01-30 |  | 02 | 1 |
| PH05.DAHU.1580 |  | DAHU South Install feeder trays (DAHU, VFD, communications) | 5d | 2025-10-08 | 2025-10-08 | PH05.DAHU.1530 | 2025-01-21 | 2025-01-27 |  | 02 | 1 |
| PH05.DAHU.1590 |  | DAHU South Pull DAHU Feeders | 2d | 2025-10-08 | 2025-10-08 | PH05.DH.1200 SS, PH05.DAHU.1580 | 2025-01-28 | 2025-01-29 |  | 02 | 1 |
| PH05.DAHU.1600 |  | DAHU South Make DAHU electrical connections | 2d | 2025-10-08 | 2025-10-08 | PH05.DAHU.1590 | 2025-01-30 | 2025-01-31 |  | 02 | 1 |
| PH05.DAHU.1610 |  | DAHU South Make DAHU controls connections | 3d | 2025-10-08 | 2025-10-08 | PH05.DAHU.1600 | 2025-02-03 | 2025-02-05 |  | 02 | 1 |
| PH05.DAHU.1620 |  | DAHU South Install temporary wall | 2d | 2025-10-08 | 2025-10-08 | PH05.DAHU.1610 | 2025-02-06 | 2025-02-07 |  | 02 | 1 |
| PH05.DAHU.1630 |  | DAHU South Install CSH ladders | 2d | 2025-10-08 | 2025-10-08 | PH05.DAHU.1610 | 2025-02-06 | 2025-02-07 |  | 02 | 1 |
| PH05.DAHU.1640 |  | DAHU South Clean DAHU gallery and CSH | 1d | 2025-10-08 | 2025-10-08 | PH05.DAHU.1800, PH05.DAHU.1620, PH05.DAHU.1630, PH05.DAHU.1540, PH05.DAHU.1600 | 2025-03-03 | 2025-03-03 |  | 02 | 1 |
| PH05.DAHU.1740 |  | DAHU South Coredrilling On 2nd Floor | 5d | 2025-10-08 | 2025-10-08 | PH05.M.1000 SS | 2024-11-18 | 2024-11-22 | DAHU North and South will | 02 | 1 |
| PH05.DAHU.1750 |  | DAHU South Install Floor Drains 2nd Floor | 2d | 2025-10-08 | 2025-10-08 | PH05.DAHU.1740 | 2024-11-25 | 2024-11-26 | DAHU North and South will | 02 | 1 |
| PH05.DAHU.1760 |  | DAHU South Install IW Drops | 3d | 2025-10-08 | 2025-10-08 | PH05.DAHU.1530, PH05.DAHU.1440 | 2025-01-21 | 2025-01-23 | work simutaneously | 02 | 1 |
| PH05.DAHU.1770 |  | DAHU South Install Sprinkler Lines | 4d | 2025-10-08 | 2025-10-08 | PH05.DAHU.1530 | 2025-01-21 | 2025-01-24 |  | 02 | 1 |
| PH05.DAHU.1800 |  | DAHU South Install VESDA Panels | 2d | 2025-10-08 | 2025-10-08 | PH05.DAHU.1620 | 2025-02-10 | 2025-02-11 |  | 02 | 1 |
| PH05.DAHU.1810 |  | DAHU South Concrete Infill 2nd Floor | 2d | 2025-10-08 | 2025-10-08 | PH05.DAHU.1750 | 2024-11-27 | 2024-11-29 | DAHU North and South will | 02 | 1 |

| ID | WBS | Activity | Duration | Start | Finish | Predecessors | Planned start | Planned finish | 06 -GC - Building Levels | 05 -GC - Building Phase | user_text |
| --- | --- | --- | --- | --- | --- | --- | --- | --- | --- | --- | --- |
|  | 6 | **Data Hall Gallery** |  | 2025-10-08 | 2025-10-08 |  |  |  |  |  |  |
| PH05.DH.1000 |  | Data Hall Install upper temp wall | 2d | 2025-10-08 | 2025-10-08 | PH05.DH.1410 | 2024-12-31 | 2025-01-02 | 02 | 1 |  |
| PH05.DH.1010 |  | Data Hall Rough-in electrical for exhaust fans | 5d | 2025-10-08 | 2025-10-08 | PH05.M.1000 SS | 2024-11-18 | 2024-11-22 | 02 | 1 |  |
| PH05.DH.1020 |  | Data Hall Install exhaust fan drip pans | 5d | 2025-10-08 | 2025-10-08 | PH05.DH.1010 SS+2d | 2024-11-20 | 2024-11-26 | 02 | 1 |  |
| PH05.DH.1030 |  | Data Hall Install Fire Protection (high) | 5d | 2025-10-08 | 2025-10-08 | PH05.DH.1020 SS+3d | 2024-11-25 | 2024-12-02 | 02 | 1 |  |
| PH05.DH.1040 |  | Data Hall Pipe exhaust fans drip pans | 4d | 2025-10-08 | 2025-10-08 | PH05.DH.1020 | 2024-11-25 | 2024-11-29 | 02 | 1 |  |
| PH05.DH.1050 |  | Data Hall Layout and frame B/E/3.5 line walls | 5d | 2025-10-08 | 2025-10-08 | PH05.M.1000 SS | 2024-11-18 | 2024-11-22 | 02 | 1 |  |
| PH05.DH.1060 |  | Data Hall In wall rough-in | 5d | 2025-10-08 | 2025-10-08 | PH05.DH.1050 SS | 2024-11-18 | 2024-11-22 | 02 | 1 |  |
| PH05.DH.1070 |  | Data Hall In wall inspection | 1d | 2025-10-08 | 2025-10-08 | PH05.DH.1060 | 2024-11-27 | 2024-11-27 | 02 | 1 |  |
| PH05.DH.1080 |  | Data Hall Install Drywall on B/E/3.5 line walls | 5d | 2025-10-08 | 2025-10-08 | PH05.DH.1070 | 2024-11-29 | 2024-12-05 | 02 | 1 |  |
| PH05.DH.1090 |  | Data Hall Finish B/E/3.5 line walls | 7d | 2025-10-08 | 2025-10-08 | PH05.DH.1460, PH05.DH.1080 | 2024-12-04 | 2024-12-12 | 02 | 1 |  |
| PH05.DH.1100 |  | Data Hall Frame exhaust plenum | 10d | 2025-10-08 | 2025-10-08 | PH05.DH.1050 SS | 2024-11-18 | 2024-12-02 | 02 | 1 |  |
| PH05.DH.1110 |  | Data Hall Rough-in exhaust plenum | 2d | 2025-10-08 | 2025-10-08 | PH05.DH.1100 | 2024-11-25 | 2024-11-26 | 02 | 1 |  |
| PH05.DH.1120 |  | Data Hall Install Drywall on Exterior Exhaust Plenum | 7d | 2025-10-08 | 2025-10-08 | PH05.DH.1110 | 2024-11-27 | 2024-12-06 | 02 | 1 |  |
| PH05.DH.1130 |  | Data Hall Finish exterior exhaust plenum | 10d | 2025-10-08 | 2025-10-08 | PH05.DH.1120 | 2024-12-09 | 2024-12-20 | 02 | 1 |  |
| PH05.DH.1140 |  | Data Hall Install Lower temp wall and doors | 3d | 2025-10-08 | 2025-10-08 | PH05.DH.1290, PH05.DH.1000, PH05.DH.1120, PH05.DH.1130, PH05.DH.1230 | 2025-02-03 | 2025-02-05 | 02 | 1 |  |
| PH05.DH.1150 |  | Data Hall Install return air dampers | 3d | 2025-10-08 | 2025-10-08 | PH05.DH.1380 FF, PH05.DH.1090 FF | 2024-12-13 | 2024-12-17 | 02 | 1 |  |
| PH05.DH.1160 |  | Data Hall Install supply air dampers | 3d | 2025-10-08 | 2025-10-08 | PH05.DH.1150 | 2024-12-20 | 2024-12-24 | 02 | 1 |  |
| PH05.DH.1170 |  | Data Hall Install fire protection (low) | 5d | 2025-10-08 | 2025-10-08 | PH05.DH.1180, PH05.DH.1150 | 2024-12-26 | 2025-01-02 | 02 | 1 |  |
| PH05.DH.1180 |  | Data Hall Install Racking | 8d | 2025-10-08 | 2025-10-08 | PH05.DH.1040, PH05.DH.1450, PH05.DH.1440 FF, PH05.DH.1080, PH05.DH.1030, PH05.PR.1000 | 2024-12-13 | 2024-12-24 | 02 | 1 |  |
| PH05.DH.1190 |  | Data Hall Install DAHU feeder tray | 10d | 2025-10-08 | 2025-10-08 | PH05.DH.1180, WTHR-10 | 2024-12-26 | 2025-01-09 | 02 | 1 |  |
| PH05.DH.1200 |  | Data Hall Pull DAHU feeders | 2d | 2025-10-08 | 2025-10-08 | PH05.DH.1190 | 2025-01-21 | 2025-01-22 | 02 | 1 |  |
| PH05.DH.1210 |  | Data Hall Install vertical communication risers | 3d | 2025-10-08 | 2025-10-08 | PH05.DH.1200 | 2025-01-23 | 2025-01-27 | 02 | 1 |  |
| PH05.DH.1220 |  | Data Hall Install guardrails at risers | 2d | 2025-10-08 | 2025-10-08 | PH05.DH.1210 | 2025-01-28 | 2025-01-29 | 02 | 1 |  |
| PH05.DH.1230 |  | Data Hall Install ACT grid | 4d | 2025-10-08 | 2025-10-08 | PH05.DH.1500, PH05.DH.1270 | 2024-12-26 | 2024-12-31 | 02 | 1 |  |
| PH05.DH.1240 |  | Data Hall Electrical ceiling rough-in | 5d | 2025-10-08 | 2025-10-08 | PH05.DH.1470, PH05.DH.1170, PH05.DH.1230 | 2025-01-03 | 2025-01-09 | 02 | 1 |  |
| PH05.DH.1250 |  | Data Hall Install Fire protection Sprinkler Heads | 4d | 2025-10-08 | 2025-10-08 | PH05.DH.1230, WTHR-10 | 2025-01-02 | 2025-01-07 | 02 | 1 |  |
| PH05.DH.1260 |  | Data Hall Fire alarm and VESDA rough-in | 4d | 2025-10-08 | 2025-10-08 | PH05.DH.1280, PH05.DH.1230 | 2025-01-27 | 2025-01-30 | 02 | 1 |  |
| PH05.DH.1270 |  | Data Hall Install upper twin wall | 5d | 2025-10-08 | 2025-10-08 | PH05.DH.1180 FF | 2024-12-18 | 2024-12-24 | 02 | 1 |  |
| PH05.DH.1280 |  | Data Hall Install Ceiling Tiles | 4d | 2025-10-08 | 2025-10-08 | PH05.DH.1510, PH05.DH.1230, PH05.DH.1250, PH05.DH.1240, PH05.DH.1270 | 2025-01-21 | 2025-01-24 | 02 | 1 |  |
| PH05.DH.1290 |  | Data Hall Install Basket Tray | 10d | 2025-10-08 | 2025-10-08 | PH05.DH.1280 FF | 2025-01-23 | 2025-02-05 | 02 | 1 | Changed from 15 to 10 |
| PH05.DH.1300 |  | Data Hall Pull branch circuit and PDC feeders | 10d | 2025-10-08 | 2025-10-08 | PH05.EA.2030 SS, PH05.DH.1290 FF+4d | 2025-01-21 | 2025-02-03 | 02 | 1 | Changed from 15 to 10 |
| PH05.DH.1310 |  | Data Hall Install PDC cabinets | 3d | 2025-10-08 | 2025-10-08 | PH05.DH.1230, PH05.PR.1100 | 2025-02-11 | 2025-02-13 | 02 | 1 |  |
| PH05.DH.1320 |  | Data Hall Terminate PDC cabinets | 5d | 2025-10-08 | 2025-10-08 | PH05.DH.1310, PH05.DH.1300 FF+3d | 2025-02-14 | 2025-02-21 | 02 | 1 |  |
| PH05.DH.1330 |  | Data Hall Install PDC Whips and labels | 5d | 2025-10-08 | 2025-10-08 | PH05.DH.1290, PH05.PR.1100 | 2025-02-11 | 2025-02-18 | 02 | 1 | Data hall is driving out the |
| PH05.DH.1340 |  | Data Hall Perform PDC Whip Checks | 2d | 2025-10-08 | 2025-10-08 | PH05.DH.1330, PH05.DH.1320 | 2025-02-25 | 2025-02-26 | 02 | 1 | NEA data in the milestones |
| PH05.DH.1350 |  | Data Hall Install lower twin wall and doors | 5d | 2025-10-08 | 2025-10-08 | PH05.DH.1360 SS, PH05.DH.1180, PH05.DH.1390 | 2025-02-27 | 2025-03-05 | 02 | 1 | Changed from 7 to 5 |
| PH05.DH.1360 |  | Data Hall Install Perfect Positioning | 2d | 2025-10-08 | 2025-10-08 | PH05.DH.1320, PH05.DH.1340 | 2025-02-27 | 2025-02-28 | 02 | 1 | Must complete by 10/23/23 |
| PH05.DH.1370 |  | Data Hall Clean data hall | 2d | 2025-10-08 | 2025-10-08 | PH05.DH.1490, PH05.DH.1480, PH05.DH.1280, PH05.DH.1410, PH05.DH.1140, PH05.DH.1220, PH05.DH.1360, PH05.DH.1350 | 2025-03-06 | 2025-03-07 | 02 | 1 |  |
| PH05.DH.1380 |  | Data Hall Paint B/E/3.5 line walls | 5d | 2025-10-08 | 2025-10-08 | PH05.DH.1090 FF | 2024-12-13 | 2024-12-19 | 02 | 1 |  |
| PH05.DH.1390 |  | Data Hall Install Drywall on Interior Exhaust Plenum | 12d | 2025-10-08 | 2025-10-08 | PH05.DH.1110 | 2024-11-27 | 2024-12-13 | 02 | 1 |  |
| PH05.DH.1400 |  | Data Hall Finish interior exhaust plenum | 15d | 2025-10-08 | 2025-10-08 | PH05.DH.1390 | 2024-12-16 | 2025-01-07 | 02 | 1 | Changed from 20 to 15 |
| PH05.DH.1410 |  | Data Hall Paint exterior exhaust plenum | 5d | 2025-10-08 | 2025-10-08 | PH05.DH.1130 | 2024-12-23 | 2024-12-30 | 02 | 1 |  |
| PH05.DH.1420 |  | Data Hall Paint Interior Exhaust plenum | 5d | 2025-10-08 | 2025-10-08 | PH05.DH.1400 | 2024-12-23 | 2024-12-30 | 02 | 1 |  |
| PH05.DH.1430 |  | Data Hall Install High VESDA Pipes | 4d | 2025-10-08 | 2025-10-08 | PH05.DH.1030 | 2024-12-02 | 2024-12-05 | 02 | 1 |  |
| PH05.DH.1440 |  | Data Hall Install Fire Protection (Low) | 5d | 2025-10-08 | 2025-10-08 | PH05.DH.1030 SS+2d | 2024-11-27 | 2024-12-04 | 02 | 1 |  |
| PH05.DH.1450 |  | Data Hall Hang Wire for Ceiling Grid | 4d | 2025-10-08 | 2025-10-08 | PH05.DH.1440 SS+2d | 2024-12-02 | 2024-12-05 | 02 | 1 |  |
| PH05.DH.1460 |  | Data Hall Install Dampers/Screens | 3d | 2025-10-08 | 2025-10-08 | PH05.DH.1080 SS | 2024-11-29 | 2024-12-03 | 02 | 1 |  |
| PH05.DH.1470 |  | Data Hall Install BMS Panel | 3d | 2025-10-08 | 2025-10-08 | PH05.DH.1090 FF | 2024-12-13 | 2024-12-17 | 02 | 1 |  |
| PH05.DH.1480 |  | Data Hall Install VESDA Panels | 2d | 2025-10-08 | 2025-10-08 | PH05.DH.1420, PH05.DH.1260, PH05.DH.1280, PH05.DH.1500 | 2025-02-03 | 2025-02-04 | 02 | 1 | NEA data in the milestones |
| PH05.DH.1490 |  | Data Hall Pull & Terminate VESDA Wiring | 2d | 2025-10-08 | 2025-10-08 | PH05.DH.1480 | 2025-02-05 | 2025-02-06 | 02 | 1 | NEA data in the milestones |
| PH05.DH.1500 |  | Data Hall Install Lower VESDA Pipes | 4d | 2025-10-08 | 2025-10-08 | PH05.DH.1430 | 2024-12-06 | 2024-12-11 | 02 | 1 |  |
| PH05.DH.1510 |  | Data Hall Install Back Draft Damper | 4d | 2025-10-08 | 2025-10-08 | PH05.DH.1230, WTHR-10 | 2025-01-02 | 2025-01-07 | 02 | 1 |  |
| PH05.DH.1520 |  | Data Hall Install BMS/EPMS | 5d | 2025-10-08 | 2025-10-08 | PH05.DH.1210 | 2025-01-28 | 2025-02-03 | 02 | 1 |  |
| PH05.ISSU |  | Security Rough-in | 4d | 2025-10-08 | 2025-10-08 | PH05.DH.1280 | 2025-01-21 | 2025-01-24 | 02 | 1 |  |
| PH05.ISSU1 |  | Ceiling Final Inspection | 2d | 2025-10-08 | 2025-10-08 | PH05.ISSU | 2025-01-21 | 2025-01-22 | 02 | 1 |  |
| PH05.ISSU2 |  | Install Remaining Ceiling Tiles | 2d | 2025-10-08 | 2025-10-08 | PH05.ISSU1 | 2025-01-21 | 2025-01-22 | 02 | 1 |  |

| ID | WBS | Activity | Duration | Start | Finish | Predecessors | Planned start | Planned finish | Calendar | user_text | 06 -GC - Building Levels | 05 -GC - Building Phase | SCHDULE UPDATE |
| --- | --- | --- | --- | --- | --- | --- | --- | --- | --- | --- | --- | --- | --- |
|  | 7 | **Startup and Commissioning** |  | 2025-10-08 | 2025-10-08 |  |  |  |  |  |  |  |  |
| PH05.SU.1000 |  | OWNER FOD Walks | 2d | 2025-10-08 | 2025-10-08 | PH05.GEN.1120, PH05.XFMR.1100, PH05.GEN.1110, PH05.DAHU.1570, PH05.DAHU.1640, PH05.EA.2070, PH05.DAHU.1120, PH05.XFMR.1120, ISSU14.20 | 2025-03-24 | 2025-03-25 |  | Must begin by 10/09/23 | 02 | 1 |  |
| PH05.SU.1010 |  | Energization | 0d | 2025-10-08 | 2025-10-08 | PH05.SU.1000 | 2025-03-26 | 2025-03-26 |  | Must complete by 10/16/23 | 02 | 1 |  |
| PH05.SU.1030 |  | L4-L5 Commissioning | 10d | 2025-10-08 | 2025-10-08 | PH05.SU.1010, PH05.SU.1050, PH05.DH.1370, PH05.M.1070 | 2025-05-05 | 2025-05-16 |  |  | 02 | 1 |  |
| PH05.SU.1040 |  | Comissioning Complete | 1d | 2025-10-08 | 2025-10-08 | PH05.SU.1030 | 2025-05-19 | 2025-05-19 |  |  | 02 | 1 |  |
| PH05.SU.1050 |  | Startup activities for H2C | 4d | 2025-10-08 | 2025-10-08 | PH05.SU.1010, PH05.M.1060 | 2025-03-26 | 2025-03-31 |  |  | 02 | 1 |  |
|  | INSPECTIONS | **Final Inspections** |  | 2025-10-08 | 2025-10-08 |  |  |  |  |  |  |  |  |
| PH05.1000 |  | Fire Protection Final Inspection | 2d | 2025-10-08 | 2025-10-08 | PH05.DAHU.1770, PH05.EA.136, PH05.DAHU.1050, PH05.DAHU.1430, PH05.DH.1250, PH05.EA.2070, PH05.DAHU.1200, PH05.DAHU.1640, PH05.DH.1370 | 2025-03-10 | 2025-03-11 |  | Must complete by 10/16/23 | 02 | 1 |  |
| PH05.1010 |  | Electrical Final Inspection | 2d | 2025-10-08 | 2025-10-08 | PH05.EA.2070, PH05.DAHU.1200, PH05.DAHU.1640, PH05.DH.1370 | 2025-03-10 | 2025-03-11 |  | Must complete by 10/16/23 | 02 | 1 |  |
| PH05.1020 |  | Fire Alarm Final Inspection | 2d | 2025-10-08 | 2025-10-08 | PH05.EA.2140, PH05.EA.2070, PH05.DAHU.1200, PH05.DAHU.1640, PH05.DH.1370 | 2025-03-10 | 2025-03-11 |  | Must complete by 10/16/23 | 02 | 1 |  |
| PH05.1030 |  | Mechanical Final Inspection | 2d | 2025-10-08 | 2025-10-08 | PH05.EA.2070, PH05.DAHU.1200, PH05.DAHU.1640, PH05.DH.1370 | 2025-03-10 | 2025-03-11 |  | Must complete by 10/16/23 | 02 | 1 |  |
| PH05.1040 |  | Plumbing Final Inspection | 2d | 2025-10-08 | 2025-10-08 | PH05.EA.2070, PH05.DAHU.1200, PH05.DAHU.1640, PH05.DH.1370 | 2025-03-10 | 2025-03-11 |  | Must complete by 10/16/23 | 02 | 1 |  |
| PH05.1050 |  | Special Inspections Sign-off | 2d | 2025-10-08 | 2025-10-08 | PH05.DH.1370 | 2025-04-14 | 2025-04-15 |  | Must complete by 10/16/23 | 02 | 1 |  |
|  | PH6 | **Phase 6 Construction** |  | 2025-10-08 | 2025-10-08 |  |  |  |  |  |  |  |  |
|  | 2 | **Site** |  | 2025-10-08 | 2025-10-08 |  |  |  |  |  |  |  |  |
|  | 2 | **Generator Yard** |  | 2025-10-08 | 2025-10-08 |  |  |  |  |  |  |  |  |
|  | 2 | **Generators-Phase 6** |  | 2025-10-08 | 2025-10-08 |  |  |  |  |  |  |  |  |
| PH06.GEN.1100 |  | Gen Yard Install generators | 2d | 2025-10-08 | 2025-10-08 | PH2-10.GEN.1210, PH06.PR.1050 | 2024-12-05 | 2024-12-06 |  |  | 02 | 1 | ELIASE |
| PH06.GEN.1110 |  | Gen Yard Anchor generators | 2d | 2025-10-08 | 2025-10-08 | PH06.GEN.1100, PH06.GEN.1130 | 2024-12-18 | 2024-12-19 |  |  | 02 | 1 | ELIASE |
| PH06.GEN.1120 |  | Gen Yard Install cable bus from generator to electrical room | 10d | 2025-10-08 | 2025-10-08 | PH06.XFMR.1100 SS, PH06.GEN.1110, PH06.PR.1160 | 2024-12-30 | 2025-01-13 |  |  | 02 | 1 | ELIASE |
| PH06.GEN.1130 |  | Gen Yard Install generators Exhaust Duct | 2d | 2025-10-08 | 2025-10-08 | PH06.GEN.1100 | 2024-12-16 | 2024-12-17 |  |  | 02 | 1 | ELIASE |
|  | 4 | **MV Transformers-Phase 6** |  | 2025-10-08 | 2025-10-08 |  |  |  |  |  |  |  |  |
| PH06.XFMR.1100 |  | XFMR Install cable bus to electrical room | 8d | 2025-10-08 | 2025-10-08 | PH06.PR.1160, PH06.XFMR.1120 | 2024-12-30 | 2025-01-08 | Calendar 06 - 6 Day Work Week w/ Mass. Holidays |  | 02 | 1 | ELIASE |
| PH06.XFMR.1110 |  | XFMR Pull to MV SWGR | 10d | 2025-10-08 | 2025-10-08 | PH06.GEN.1100 | 2024-11-25 | 2024-12-09 |  |  | 02 | 1 | ELIASE |
| PH06.XFMR.1120 |  | XFMR Terminate to MV SWGR | 10d | 2025-10-08 | 2025-10-08 | PH06.XFMR.1110 FF, PH06.PR.1040 FF | 2024-11-25 | 2024-12-09 |  |  | 02 | 1 | ELIASE |

| ID | WBS | Activity | Duration | Start | Finish | Predecessors | Planned start | Planned finish | 06 -GC - Building Levels | 05 -GC - Building Phase | user_text |
| --- | --- | --- | --- | --- | --- | --- | --- | --- | --- | --- | --- |
|  | 3 | **Electrical Room E1.1** |  | 2025-10-08 | 2025-10-08 |  |  |  |  |  |  |
| PH06.EA.136 |  | ER E1.1 Install sprinkler heads | 5d | 2025-10-08 | 2025-10-08 | PH06.EA.1860 | 2025-01-13 | 2025-01-17 | 02 | 1 |  |
| PH06.EA.1860 |  | ER E1.1 Install fire protection | 1d | 2025-10-08 | 2025-10-08 | PH06.EA.1960 | 2025-01-10 | 2025-01-10 | 02 | 1 | All electrical rooms will |
| PH06.EA.1870 |  | ER E1.1 Layout and frame walls | 2d | 2025-10-08 | 2025-10-08 | PH06.M.1000 SS | 2024-12-09 | 2024-12-10 | 02 | 1 | start simutaneously |
| PH06.EA.1880 |  | ER E1.1 Install OAD ductwork Transitions | 6d | 2025-10-08 | 2025-10-08 | PH06.EA.2090, PH06.M.1000 SS | 2024-12-11 | 2024-12-18 | 02 | 1 |  |
| PH06.EA.1890 |  | ER E1.1 Electrical rough-in | 3d | 2025-10-08 | 2025-10-08 | PH06.EA.1870, PH06.EA.1880 | 2024-12-19 | 2024-12-23 | 02 | 1 |  |
| PH06.EA.1900 |  | ER E1.1 Mechanical rough-in | 3d | 2025-10-08 | 2025-10-08 | PH06.EA.1870, PH06.EA.1880 | 2024-12-19 | 2024-12-23 | 02 | 1 |  |
| PH06.EA.1910 |  | ER E1.1 Fire alarm rough-in | 3d | 2025-10-08 | 2025-10-08 | PH06.EA.1870, PH06.EA.1880 | 2024-12-19 | 2024-12-23 | 02 | 1 |  |
| PH06.EA.1920 |  | ER E1.1 Plumbing rough-in | 3d | 2025-10-08 | 2025-10-08 | PH06.EA.1880, PH06.EA.1870 | 2024-12-19 | 2024-12-23 | 02 | 1 |  |
| PH06.EA.1930 |  | ER E1.1 In wall inspection | 1d | 2025-10-08 | 2025-10-08 | PH06.EA.1910, PH06.EA.1900, PH06.EA.1890, PH06.EA.1920 | 2024-12-24 | 2024-12-24 | 02 | 1 |  |
| PH06.EA.1940 |  | ER E1.1 Install drywall | 3d | 2025-10-08 | 2025-10-08 | PH06.EA.1930 | 2024-12-26 | 2024-12-30 | 02 | 1 |  |
| PH06.EA.1950 |  | ER E1.1 Finish drywall | 5d | 2025-10-08 | 2025-10-08 | PH06.EA.1940 | 2024-12-31 | 2025-01-07 | 02 | 1 |  |
| PH06.EA.1960 |  | ER E1.1 Paint drywall | 2d | 2025-10-08 | 2025-10-08 | PH06.EA.1950 | 2025-01-08 | 2025-01-09 | 02 | 1 |  |
| PH06.EA.1970 |  | ER E1.1 Install OAD dampers + Ductwork | 3d | 2025-10-08 | 2025-10-08 | PH06.EA.1960, PH06.EA.1950 | 2025-01-10 | 2025-01-14 | 02 | 1 |  |
| PH06.EA.1980 |  | ER E1.1 Install split units | 3d | 2025-10-08 | 2025-10-08 | PH06.EA.1970 | 2025-01-15 | 2025-01-17 | 02 | 1 |  |
| PH06.EA.1990 |  | ER E1.1 Install Busway and OH electrical supports | 5d | 2025-10-08 | 2025-10-08 | PH06.EA.1960 SS, PH06.EA.1950, PH06.PR.1060 | 2025-01-08 | 2025-01-14 | 02 | 1 |  |
| PH06.EA.2000 |  | ER E1.1 Install Electrical SWGR | 2d | 2025-10-08 | 2025-10-08 | PH06.EA.2130, PH06.EA.1990, PH06.PR.1070 | 2025-01-21 | 2025-01-22 | 02 | 1 |  |
| PH06.EA.2010 |  | ER E1.1 Install Feeder tray | 5d | 2025-10-08 | 2025-10-08 | PH06.EA.1990, PH06.EA.2000 | 2025-01-23 | 2025-01-29 | 02 | 1 |  |
| PH06.EA.2020 |  | ER E1.1 Install electrical panels and disconnects | 5d | 2025-10-08 | 2025-10-08 | PH06.EA.2010, PH06.PR.1170, PH06.PR.1190 | 2025-01-30 | 2025-02-05 | 02 | 1 |  |
| PH06.EA.2030 |  | ER E1.1 Pull and terminate feeders | 10d | 2025-10-08 | 2025-10-08 | PH06.EA.2010 SS+2d, PH06.EA.2010 FF | 2025-01-27 | 2025-02-07 | 02 | 1 |  |
| PH06.EA.2040 |  | ER E1.1 Install lighting | 3d | 2025-10-08 | 2025-10-08 | PH06.EA.2020, PH06.EA.2030 | 2025-02-10 | 2025-02-12 | 02 | 1 |  |
| PH06.EA.2050 |  | ER E1.1 Install accessories (shepherds hook, fire ext) | 1d | 2025-10-08 | 2025-10-08 | PH06.EA.2040 FF, PH06.EA.2040 | 2025-02-24 | 2025-02-24 | 02 | 1 |  |
| PH06.EA.2070 |  | ER E1.1 Clean electrical room | 1d | 2025-10-08 | 2025-10-08 | PH06.EA.2150, PH06.EA.2120, PH06.EA.2040, PH06.EA.1980, PH06.EA.2050 | 2025-03-03 | 2025-03-03 | 02 | 1 |  |
| PH06.EA.2090 |  | ER E1.1 Install Plenum on Louvers | 2d | 2025-10-08 | 2025-10-08 | PH06.M.1000 SS | 2024-12-09 | 2024-12-10 | 02 | 1 | start simutaneously |
| PH06.EA.2100 |  | ER E1.1 Install Vesda Piping System | 5d | 2025-10-08 | 2025-10-08 | PH06.EA.1960 | 2025-01-10 | 2025-01-16 | 02 | 1 |  |
| PH06.EA.2110 |  | ER E1.1 Install Refrigerantion Lines | 5d | 2025-10-08 | 2025-10-08 | PH06.EA.1960 | 2025-01-10 | 2025-01-16 | 02 | 1 |  |
| PH06.EA.2120 |  | ER E1.1 Install ERV | 2d | 2025-10-08 | 2025-10-08 | PH06.EA.2030, PH06.EA.2110 | 2025-02-10 | 2025-02-11 | 02 | 1 |  |
| PH06.EA.2130 |  | ER E1.1 Install Cable Trays | 5d | 2025-10-08 | 2025-10-08 | PH06.EA.1980 SS+2d, PH06.EA.1980 FF | 2025-01-17 | 2025-01-24 | 02 | 1 |  |
| PH06.EA.2140 |  | ER E1.1 Install Fire Alarm + Vesda Panel | 3d | 2025-10-08 | 2025-10-08 | PH06.EA.2100 | 2025-01-17 | 2025-01-22 | 02 | 1 |  |
| PH06.EA.2150 |  | ER E1.1 Install Control BMS & EPMS | 4d | 2025-10-08 | 2025-10-08 | PH06.EA.2030 | 2025-02-10 | 2025-02-13 | 02 | 1 |  |

| ID | WBS | Activity | Duration | Start | Finish | Predecessors | Planned start | Planned finish | user_text | 06 -GC - Building Levels | 05 -GC - Building Phase |
| --- | --- | --- | --- | --- | --- | --- | --- | --- | --- | --- | --- |
|  | 5 | **DAHU Galleries** |  | 2025-10-08 | 2025-10-08 |  |  |  |  |  |  |
|  | 1 | **DAHU Gallery North** |  | 2025-10-08 | 2025-10-08 |  |  |  |  |  |  |
| PH06.DAHU.1000 |  | DAHU North Install Fire Protection & VESDA | 2d | 2025-10-08 | 2025-10-08 | PH06.M.1000 SS | 2024-12-16 | 2024-12-17 | DAHU North and South will | 02 | 1 |
| PH06.DAHU.1010 |  | DAHU North Install IW Piping | 4d | 2025-10-08 | 2025-10-08 | PH06.M.1000 SS | 2024-12-16 | 2024-12-19 | work simutaneously | 02 | 1 |
| PH06.DAHU.1020 |  | DAHU North Install Outside Air Reference Piping | 3d | 2025-10-08 | 2025-10-08 | PH06.DAHU.1010 SS+2d | 2024-12-18 | 2024-12-20 |  | 02 | 1 |
| PH06.DAHU.1030 |  | DAHU North Frame DAHU wall and CSH catwalk | 6d | 2025-10-08 | 2025-10-08 | PH06.M.1000 SS | 2024-12-16 | 2024-12-23 |  | 02 | 1 |
| PH06.DAHU.1040 |  | DAHU North CSH Electrical rough-in | 5d | 2025-10-08 | 2025-10-08 | PH06.DAHU.1030 SS+2d | 2024-12-18 | 2024-12-24 |  | 02 | 1 |
| PH06.DAHU.1050 |  | DAHU North CSH Fire protection/alarm and VESDA rough-in | 3d | 2025-10-08 | 2025-10-08 | PH06.DAHU.1030 SS+2d | 2024-12-18 | 2024-12-20 |  | 02 | 1 |
| PH06.DAHU.1060 |  | DAHU North CSH In wall inspection | 1d | 2025-10-08 | 2025-10-08 | PH06.DAHU.1040, PH06.DAHU.1050 FF, PH06.DAHU.1050 | 2024-12-26 | 2024-12-26 |  | 02 | 1 |
| PH06.DAHU.1070 |  | DAHU North Install CSH drywall | 6d | 2025-10-08 | 2025-10-08 | PH06.DAHU.1060, WTHR-10 | 2024-12-27 | 2025-01-06 |  | 02 | 1 |
| PH06.DAHU.1080 |  | DAHU North Finish CSH drywall | 13d | 2025-10-08 | 2025-10-08 | PH06.DAHU.1070 | 2025-01-21 | 2025-02-06 |  | 02 | 1 |
| PH06.DAHU.1090 |  | DAHU North Install DAHUs | 2d | 2025-10-08 | 2025-10-08 | PH06.DAHU.1700, PH06.DAHU.1690, PH06.DAHU.1680, PH06.DAHU.1670, PH06.DAHU.1000, PH06.DAHU.1080, PH06.PR.1010, PH06.DAHU.1080 FF | 2025-02-14 | 2025-02-18 |  | 02 | 1 |
| PH06.DAHU.1100 |  | DAHU North Install CSH railing | 2d | 2025-10-08 | 2025-10-08 | PH06.DAHU.1420 | 2025-02-14 | 2025-02-18 |  | 02 | 1 |
| PH06.DAHU.1120 |  | DAHU North Pull and terminate VFDs from electrical room | 5d | 2025-10-08 | 2025-10-08 | PH06.DAHU.1090, PH06.PR.1130 | 2025-02-24 | 2025-02-28 |  | 02 | 1 |
| PH06.DAHU.1130 |  | DAHU North Make DAHU Plumbing Connections | 3d | 2025-10-08 | 2025-10-08 | PH06.DAHU.1720, PH06.DAHU.1090 | 2025-02-27 | 2025-03-03 |  | 02 | 1 |
| PH06.DAHU.1140 |  | DAHU North Install Feeder Trays (DAHU, VFD, Communications) | 5d | 2025-10-08 | 2025-10-08 | PH06.DH.1190 SS, PH06.DAHU.1080 | 2025-02-14 | 2025-02-21 |  | 02 | 1 |
| PH06.DAHU.1150 |  | DAHU North Pull DAHU Feeders | 2d | 2025-10-08 | 2025-10-08 | PH06.DH.1200 SS, PH06.DAHU.1140 | 2025-02-24 | 2025-02-25 |  | 02 | 1 |
| PH06.DAHU.1160 |  | DAHU North Make DAHU Electrical Connections | 2d | 2025-10-08 | 2025-10-08 | PH06.DAHU.1150 | 2025-02-26 | 2025-02-27 |  | 02 | 1 |
| PH06.DAHU.1170 |  | DAHU North Make DAHU Controls Connections | 3d | 2025-10-08 | 2025-10-08 | PH06.DAHU.1160 | 2025-02-28 | 2025-03-04 |  | 02 | 1 |
| PH06.DAHU.1180 |  | DAHU North Install Temporary Wall | 2d | 2025-10-08 | 2025-10-08 | PH06.DAHU.1170 | 2025-03-05 | 2025-03-06 |  | 02 | 1 |
| PH06.DAHU.1190 |  | DAHU North Install CSH ladders | 2d | 2025-10-08 | 2025-10-08 | PH06.DAHU.1170 | 2025-03-05 | 2025-03-06 |  | 02 | 1 |
| PH06.DAHU.1200 |  | DAHU North Clean DAHU Gallery and CSH | 3d | 2025-10-08 | 2025-10-08 | PH06.DAHU.1730, PH06.DAHU.1180, PH06.DAHU.1190, PH06.DAHU.1100, PH06.DAHU.1160 | 2025-03-31 | 2025-04-02 |  | 02 | 1 |
| PH06.DAHU.1420 |  | DAHU North Paint CSH drywall | 5d | 2025-10-08 | 2025-10-08 | PH06.DAHU.1080 | 2025-02-07 | 2025-02-13 |  | 02 | 1 |
| PH06.DAHU.1650 |  | DAHU North Coredrilling On 2nd Floor | 5d | 2025-10-08 | 2025-10-08 | PH06.M.1000 SS | 2024-12-16 | 2024-12-20 | DAHU North and South will | 02 | 1 |
| PH06.DAHU.1660 |  | DAHU North Install Floor Drains 2nd Floor | 2d | 2025-10-08 | 2025-10-08 | PH06.DAHU.1650 | 2024-12-23 | 2024-12-24 | DAHU North and South will | 02 | 1 |
| PH06.DAHU.1670 |  | DAHU North Concrete Infill 2nd Floor | 2d | 2025-10-08 | 2025-10-08 | PH06.DAHU.1660 | 2024-12-26 | 2024-12-27 | DAHU North and South will | 02 | 1 |
| PH06.DAHU.1680 |  | DAHU North Install OAD Damper | 4d | 2025-10-08 | 2025-10-08 | PH06.DAHU.1010 | 2024-12-20 | 2024-12-26 |  | 02 | 1 |
| PH06.DAHU.1690 |  | DAHU North Install Sprinkler Feed Lines | 4d | 2025-10-08 | 2025-10-08 | PH06.DAHU.1680 | 2024-12-27 | 2025-01-02 |  | 02 | 1 |
| PH06.DAHU.1700 |  | DAHU North Install Low Point Drain | 4d | 2025-10-08 | 2025-10-08 | PH06.DAHU.1690 FF | 2024-12-27 | 2025-01-02 |  | 02 | 1 |
| PH06.DAHU.1720 |  | DAHU North Install IW Drops | 3d | 2025-10-08 | 2025-10-08 | PH06.DAHU.1090 | 2025-02-24 | 2025-02-26 |  | 02 | 1 |
| PH06.DAHU.1730 |  | DAHU North Install VESDA Panels | 2d | 2025-10-08 | 2025-10-08 | PH06.DAHU.1180 | 2025-03-24 | 2025-03-25 |  | 02 | 1 |

| ID | WBS | Activity | Duration | Start | Finish | Predecessors | Planned start | Planned finish | user_text | 06 -GC - Building Levels | 05 -GC - Building Phase |
| --- | --- | --- | --- | --- | --- | --- | --- | --- | --- | --- | --- |
|  | 2 | **DAHU Gallery South** |  | 2025-10-08 | 2025-10-08 |  |  |  |  |  |  |
| PH06.DAHU.1430 |  | DAHU South Install fire protection and VESDA | 2d | 2025-10-08 | 2025-10-08 | PH06.M.1000 SS | 2024-12-16 | 2024-12-17 | DAHU North and South will | 02 | 1 |
| PH06.DAHU.1440 |  | DAHU South Install IW Piping | 4d | 2025-10-08 | 2025-10-08 | PH06.M.1000 SS | 2024-12-16 | 2024-12-19 | work simutaneously | 02 | 1 |
| PH06.DAHU.1450 |  | DAHU South Install Outside Air Reference Piping | 3d | 2025-10-08 | 2025-10-08 | PH06.DAHU.1440 FF | 2024-12-23 | 2024-12-26 |  | 02 | 1 |
| PH06.DAHU.1460 |  | DAHU South Frame DAHU wall and CSH catwalk | 6d | 2025-10-08 | 2025-10-08 | PH06.M.1000 SS | 2024-12-16 | 2024-12-23 |  | 02 | 1 |
| PH06.DAHU.1470 |  | DAHU South CSH Fire protection/alarm and VESDA rough-in | 3d | 2025-10-08 | 2025-10-08 | PH06.DAHU.1460 | 2024-12-24 | 2024-12-27 |  | 02 | 1 |
| PH06.DAHU.1480 |  | DAHU South CSH Electrical rough-in | 3d | 2025-10-08 | 2025-10-08 | PH06.DAHU.1460 SS | 2024-12-16 | 2024-12-18 |  | 02 | 1 |
| PH06.DAHU.1490 |  | DAHU South CSH In wall inspection | 1d | 2025-10-08 | 2025-10-08 | PH06.DAHU.1480, PH06.DAHU.1470 FF, PH06.DAHU.1470, WTHR-10 | 2025-01-21 | 2025-01-21 |  | 02 | 1 |
| PH06.DAHU.1500 |  | DAHU South Install CSH drywall | 6d | 2025-10-08 | 2025-10-08 | PH06.DAHU.1810, PH06.DAHU.1490 FF | 2025-01-22 | 2025-01-29 |  | 02 | 1 |
| PH06.DAHU.1510 |  | DAHU South Finish CSH drywall | 6d | 2025-10-08 | 2025-10-08 | PH06.DAHU.1500 | 2025-01-23 | 2025-01-30 |  | 02 | 1 |
| PH06.DAHU.1520 |  | DAHU South Paint CSH drywall | 4d | 2025-10-08 | 2025-10-08 | PH06.DAHU.1510 | 2025-01-31 | 2025-02-05 |  | 02 | 1 |
| PH06.DAHU.1530 |  | DAHU South Install DAHUs | 2d | 2025-10-08 | 2025-10-08 | PH06.DAHU.1520, PH06.DAHU.1430, PH06.PR.1010 | 2025-02-06 | 2025-02-07 |  | 02 | 1 |
| PH06.DAHU.1540 |  | DAHU South Install CSH railing | 2d | 2025-10-08 | 2025-10-08 | PH06.DAHU.1530 | 2025-03-03 | 2025-03-04 |  | 02 | 1 |
| PH06.DAHU.1550 |  | DAHU South Install VFDs | 3d | 2025-10-08 | 2025-10-08 | PH06.DAHU.1530, PH06.PR.1130 | 2025-02-10 | 2025-02-12 |  | 02 | 1 |
| PH06.DAHU.1560 |  | DAHU South Make DAHU plumbing connections | 5d | 2025-10-08 | 2025-10-08 | PH06.DAHU.1760 SS+2d, PH06.DAHU.1530 | 2025-02-12 | 2025-02-19 |  | 02 | 1 |
| PH06.DAHU.1570 |  | DAHU South Pull and terminate VFDs from electrical room | 5d | 2025-10-08 | 2025-10-08 | PH06.DAHU.1550 | 2025-02-13 | 2025-02-20 |  | 02 | 1 |
| PH06.DAHU.1580 |  | DAHU South Install feeder trays (DAHU, VFD, communications) | 5d | 2025-10-08 | 2025-10-08 | PH06.DAHU.1530 | 2025-02-10 | 2025-02-14 |  | 02 | 1 |
| PH06.DAHU.1590 |  | DAHU South Pull DAHU Feeders | 2d | 2025-10-08 | 2025-10-08 | PH06.DH.1200 SS, PH06.DAHU.1580 | 2025-02-24 | 2025-02-25 |  | 02 | 1 |
| PH06.DAHU.1600 |  | DAHU South Make DAHU electrical connections | 2d | 2025-10-08 | 2025-10-08 | PH06.DAHU.1590 | 2025-02-26 | 2025-02-27 |  | 02 | 1 |
| PH06.DAHU.1610 |  | DAHU South Make DAHU controls connections | 3d | 2025-10-08 | 2025-10-08 | PH06.DAHU.1600 | 2025-02-28 | 2025-03-04 |  | 02 | 1 |
| PH06.DAHU.1620 |  | DAHU South Install temporary wall | 2d | 2025-10-08 | 2025-10-08 | PH06.DAHU.1610 | 2025-03-05 | 2025-03-06 |  | 02 | 1 |
| PH06.DAHU.1630 |  | DAHU South Install CSH ladders | 2d | 2025-10-08 | 2025-10-08 | PH06.DAHU.1610 | 2025-03-05 | 2025-03-06 |  | 02 | 1 |
| PH06.DAHU.1640 |  | DAHU South Clean DAHU gallery and CSH | 3d | 2025-10-08 | 2025-10-08 | PH06.DAHU.1800, PH06.DAHU.1620, PH06.DAHU.1630, PH06.DAHU.1540, PH06.DAHU.1600 | 2025-03-31 | 2025-04-02 |  | 02 | 1 |
| PH06.DAHU.1740 |  | DAHU South Coredrilling On 2nd Floor | 5d | 2025-10-08 | 2025-10-08 | PH06.M.1000 SS | 2024-12-16 | 2024-12-20 | DAHU North and South will | 02 | 1 |
| PH06.DAHU.1750 |  | DAHU South Install Floor Drains 2nd Floor | 2d | 2025-10-08 | 2025-10-08 | PH06.DAHU.1740 | 2024-12-23 | 2024-12-24 | DAHU North and South will | 02 | 1 |
| PH06.DAHU.1760 |  | DAHU South Install IW Drops | 3d | 2025-10-08 | 2025-10-08 | PH06.DAHU.1530, PH06.DAHU.1440 | 2025-02-10 | 2025-02-12 | work simutaneously | 02 | 1 |
| PH06.DAHU.1770 |  | DAHU South Install Sprinkler Lines | 4d | 2025-10-08 | 2025-10-08 | PH06.DAHU.1530 | 2025-02-10 | 2025-02-13 |  | 02 | 1 |
| PH06.DAHU.1800 |  | DAHU South Install VESDA Panels | 2d | 2025-10-08 | 2025-10-08 | PH06.DAHU.1620 | 2025-03-24 | 2025-03-25 |  | 02 | 1 |
| PH06.DAHU.1810 |  | DAHU South Concrete Infill 2nd Floor | 2d | 2025-10-08 | 2025-10-08 | PH06.DAHU.1750 | 2024-12-26 | 2024-12-27 | DAHU North and South will | 02 | 1 |

| ID | WBS | Activity | Duration | Start | Finish | Predecessors | Planned start | Planned finish | 06 -GC - Building Levels | 05 -GC - Building Phase | user_text |
| --- | --- | --- | --- | --- | --- | --- | --- | --- | --- | --- | --- |
|  | 6 | **Data Hall Gallery** |  | 2025-10-08 | 2025-10-08 |  |  |  |  |  |  |
| PH06.DH.1000 |  | Data Hall Install upper temp wall | 2d | 2025-10-08 | 2025-10-08 | PH06.DH.1050 | 2025-01-21 | 2025-01-22 | 02 | 1 |  |
| PH06.DH.1010 |  | Data Hall Rough-in electrical for exhaust fans | 5d | 2025-10-08 | 2025-10-08 | PH06.M.1000 SS | 2024-12-16 | 2024-12-20 | 02 | 1 |  |
| PH06.DH.1020 |  | Data Hall Install exhaust fan drip pans | 5d | 2025-10-08 | 2025-10-08 | PH06.DH.1010 SS+2d | 2024-12-18 | 2024-12-24 | 02 | 1 |  |
| PH06.DH.1030 |  | Data Hall Install Fire Protection (high) | 5d | 2025-10-08 | 2025-10-08 | PH06.DH.1020 SS+3d | 2024-12-23 | 2024-12-30 | 02 | 1 |  |
| PH06.DH.1040 |  | Data Hall Pipe exhaust fans drip pans | 4d | 2025-10-08 | 2025-10-08 | PH06.DH.1020 | 2024-12-26 | 2024-12-31 | 02 | 1 |  |
| PH06.DH.1050 |  | Data Hall Layout and frame B/E/3.5 line walls | 5d | 2025-10-08 | 2025-10-08 | PH06.M.1000 SS | 2024-12-16 | 2024-12-20 | 02 | 1 |  |
| PH06.DH.1060 |  | Data Hall In wall rough-in | 5d | 2025-10-08 | 2025-10-08 | PH06.DH.1050 SS | 2024-12-16 | 2024-12-20 | 02 | 1 |  |
| PH06.DH.1070 |  | Data Hall In wall inspection | 1d | 2025-10-08 | 2025-10-08 | PH06.DH.1060 | 2024-12-23 | 2024-12-23 | 02 | 1 |  |
| PH06.DH.1080 |  | Data Hall Install Drywall on B/E/3.5 line walls | 5d | 2025-10-08 | 2025-10-08 | PH06.DH.1070 | 2024-12-24 | 2024-12-31 | 02 | 1 |  |
| PH06.DH.1090 |  | Data Hall Finish B/E/3.5 line walls | 7d | 2025-10-08 | 2025-10-08 | PH06.DH.1460, PH06.DH.1080, WTHR-10 | 2025-01-02 | 2025-01-10 | 02 | 1 |  |
| PH06.DH.1140 |  | Data Hall Install Lower temp wall and doors | 3d | 2025-10-08 | 2025-10-08 | PH06.DH.1290, PH06.DH.1000, PH06.DH.1230 | 2025-02-25 | 2025-02-27 | 02 | 1 |  |
| PH06.DH.1150 |  | Data Hall Install return air dampers | 3d | 2025-10-08 | 2025-10-08 | PH06.DH.1380 SS, PH06.DH.1090 | 2025-01-21 | 2025-01-23 | 02 | 1 |  |
| PH06.DH.1160 |  | Data Hall Install supply air dampers | 3d | 2025-10-08 | 2025-10-08 | PH06.DH.1150 | 2025-01-21 | 2025-01-23 | 02 | 1 |  |
| PH06.DH.1170 |  | Data Hall Install fire protection (low) | 5d | 2025-10-08 | 2025-10-08 | PH06.DH.1180, PH06.DH.1150 | 2025-01-21 | 2025-01-27 | 02 | 1 |  |
| PH06.DH.1180 |  | Data Hall Install Racking | 8d | 2025-10-08 | 2025-10-08 | PH06.DH.1040, PH06.DH.1450, PH06.DH.1440, PH06.DH.1080, PH06.DH.1030, PH06.PR.1000 | 2025-01-21 | 2025-01-30 | 02 | 1 |  |
| PH06.DH.1190 |  | Data Hall Install DAHU feeder tray | 10d | 2025-10-08 | 2025-10-08 | PH06.DH.1180 | 2025-01-21 | 2025-02-03 | 02 | 1 |  |
| PH06.DH.1200 |  | Data Hall Pull DAHU feeders | 2d | 2025-10-08 | 2025-10-08 | PH06.DH.1190 | 2025-02-04 | 2025-02-05 | 02 | 1 |  |
| PH06.DH.1210 |  | Data Hall Install vertical communication risers | 3d | 2025-10-08 | 2025-10-08 | PH06.DH.1200 | 2025-02-06 | 2025-02-10 | 02 | 1 |  |
| PH06.DH.1220 |  | Data Hall Install guardrails at risers | 2d | 2025-10-08 | 2025-10-08 | PH06.DH.1210 | 2025-02-10 | 2025-02-11 | 02 | 1 |  |
| PH06.DH.1230 |  | Data Hall Install ACT grid | 4d | 2025-10-08 | 2025-10-08 | PH06.DH.1500, PH06.DH.1270 | 2025-01-24 | 2025-01-29 | 02 | 1 |  |
| PH06.DH.1240 |  | Data Hall Electrical ceiling rough-in | 5d | 2025-10-08 | 2025-10-08 | PH06.DH.1470, PH06.DH.1170, PH06.DH.1230 | 2025-01-30 | 2025-02-05 | 02 | 1 |  |
| PH06.DH.1250 |  | Data Hall Install Fire protection Sprinkler Heads | 4d | 2025-10-08 | 2025-10-08 | PH06.DH.1230 | 2025-01-30 | 2025-02-04 | 02 | 1 |  |
| PH06.DH.1260 |  | Data Hall Fire alarm and VESDA rough-in | 4d | 2025-10-08 | 2025-10-08 | PH06.DH.1230 | 2025-02-12 | 2025-02-18 | 02 | 1 |  |
| PH06.DH.1270 |  | Data Hall Install upper twin wall | 3d | 2025-10-08 | 2025-10-08 | PH06.DH.1180 SS+3d | 2025-01-21 | 2025-01-23 | 02 | 1 |  |
| PH06.DH.1280 |  | Data Hall Install Ceiling Tiles | 4d | 2025-10-08 | 2025-10-08 | PH06.DH.1510, PH06.DH.1230, PH06.DH.1250, PH06.DH.1240, PH06.DH.1270 | 2025-03-24 | 2025-03-27 | 02 | 1 |  |
| PH06.DH.1290 |  | Data Hall Install Basket Tray | 10d | 2025-10-08 | 2025-10-08 | PH06.DH.1180 | 2025-02-10 | 2025-02-24 | 02 | 1 | Changed from 15 to 10 |
| PH06.DH.1300 |  | Data Hall Pull branch circuit and PDC feeders | 10d | 2025-10-08 | 2025-10-08 | PH06.EA.2030 SS, PH06.DH.1290 FF+4d | 2025-02-14 | 2025-02-28 | 02 | 1 | Changed from 15 to 10 |
| PH06.DH.1310 |  | Data Hall Install PDC cabinets | 3d | 2025-10-08 | 2025-10-08 | PH06.DH.1230, PH06.PR.1100 | 2025-02-24 | 2025-02-26 | 02 | 1 |  |
| PH06.DH.1320 |  | Data Hall Terminate PDC cabinets | 5d | 2025-10-08 | 2025-10-08 | PH06.DH.1310, PH06.DH.1300 FF+3d | 2025-02-27 | 2025-03-05 | 02 | 1 |  |
| PH06.DH.1330 |  | Data Hall Install PDC Whips and labels | 5d | 2025-10-08 | 2025-10-08 | PH06.DH.1290, PH06.PR.1100 | 2025-02-25 | 2025-03-03 | 02 | 1 | Data hall is driving out the |
| PH06.DH.1340 |  | Data Hall Perform PDC Whip Checks | 2d | 2025-10-08 | 2025-10-08 | PH06.DH.1330, PH06.DH.1320 | 2025-03-06 | 2025-03-07 | 02 | 1 | NEA data in the milestones |
| PH06.DH.1350 |  | Data Hall Install lower twin wall and doors | 5d | 2025-10-08 | 2025-10-08 | PH06.DH.1360 SS, PH06.DH.1180 | 2025-03-24 | 2025-03-28 | 02 | 1 | Changed from 7 to 5 |
| PH06.DH.1360 |  | Data Hall Install Perfect Positioning | 2d | 2025-10-08 | 2025-10-08 | PH06.DH.1320, PH06.DH.1340 | 2025-03-10 | 2025-03-11 | 02 | 1 | Must complete by 10/23/23 |
| PH06.DH.1370 |  | Data Hall Clean data hall | 0d | 2025-10-08 | 2025-10-08 | PH06.DH.1490, PH06.DH.1480, PH06.DH.1280, PH06.DH.1140, PH06.DH.1220, PH06.DH.1360, PH06.DH.1350 | 2025-04-02 | 2025-04-02 | 02 | 1 |  |
| PH06.DH.1380 |  | Data Hall Paint B/E/3.5 line walls | 5d | 2025-10-08 | 2025-10-08 | PH06.DH.1090 | 2025-01-21 | 2025-01-27 | 02 | 1 |  |
| PH06.DH.1430 |  | Data Hall Install High VESDA Pipes | 4d | 2025-10-08 | 2025-10-08 | PH06.DH.1030, WTHR-10 | 2024-12-31 | 2025-01-06 | 02 | 1 |  |
| PH06.DH.1440 |  | Data Hall Install Fire Protection (Low) | 5d | 2025-10-08 | 2025-10-08 | PH06.DH.1030 SS+2d | 2024-12-26 | 2025-01-02 | 02 | 1 |  |
| PH06.DH.1450 |  | Data Hall Hang Wire for Ceiling Grid | 4d | 2025-10-08 | 2025-10-08 | PH06.DH.1440 SS+2d | 2024-12-30 | 2025-01-03 | 02 | 1 |  |
| PH06.DH.1460 |  | Data Hall Install Dampers/Screens | 3d | 2025-10-08 | 2025-10-08 | PH06.DH.1080 SS | 2024-12-24 | 2024-12-27 | 02 | 1 |  |
| PH06.DH.1470 |  | Data Hall Install BMS Panel | 3d | 2025-10-08 | 2025-10-08 | PH06.DH.1090 | 2025-01-21 | 2025-01-23 | 02 | 1 |  |
| PH06.DH.1480 |  | Data Hall Install VESDA Panels | 0d | 2025-10-08 | 2025-10-08 | PH06.DH.1260, PH06.DH.1280, PH06.DH.1500 | 2025-03-28 | 2025-03-28 | 02 | 1 | NEA data in the milestones |
| PH06.DH.1490 |  | Data Hall Pull & Terminate VESDA Wiring | 2d | 2025-10-08 | 2025-10-08 | PH06.DH.1480 | 2025-03-28 | 2025-03-31 | 02 | 1 | NEA data in the milestones |
| PH06.DH.1500 |  | Data Hall Install Lower VESDA Pipes | 4d | 2025-10-08 | 2025-10-08 | PH06.DH.1430 | 2025-01-21 | 2025-01-24 | 02 | 1 |  |
| PH06.DH.1510 |  | Data Hall Install Back Draft Damper | 4d | 2025-10-08 | 2025-10-08 | PH06.DH.1230 | 2025-01-30 | 2025-02-04 | 02 | 1 |  |
| PH06.DH.1520 |  | Data Hall Install BMS/EPMS | 5d | 2025-10-08 | 2025-10-08 | PH06.DH.1210 | 2025-02-10 | 2025-02-14 | 02 | 1 |  |

| ID | WBS | Activity | Duration | Start | Finish | Predecessors | Planned start | Planned finish | Calendar | user_text | 06 -GC - Building Levels | 05 -GC - Building Phase | SCHDULE UPDATE |
| --- | --- | --- | --- | --- | --- | --- | --- | --- | --- | --- | --- | --- | --- |
|  | 7 | **Startup and Commissioning** |  | 2025-10-08 | 2025-10-08 |  |  |  |  |  |  |  |  |
| PH06.SU.1000 |  | OWNER FOD Walks | 3d | 2025-10-08 | 2025-10-08 | PH06.GEN.1120, PH06.XFMR.1100, PH06.GEN.1110, PH06.DAHU.1570, PH06.DAHU.1640 FF, PH06.EA.2070, PH06.DAHU.1120, PH06.XFMR.1120 | 2025-03-28 | 2025-04-01 |  | Must begin by 10/09/23 | 02 | 1 |  |
| PH06.SU.1010 |  | Energization | 2d | 2025-10-08 | 2025-10-08 | PH06.SU.1000 FF, PH05.GEN.1130 | 2025-03-28 | 2025-03-31 |  | Must complete by 10/16/23 | 02 | 1 |  |
| PH06.SU.1030 |  | L4-L5 Commissioning | 10d | 2025-10-08 | 2025-10-08 | PH06.SU.1010, PH06.SU.1050, PH06.DH.1370, PH06.M.1070 | 2025-05-30 | 2025-06-12 |  |  | 02 | 1 |  |
| PH06.SU.1040 |  | Comissioning Complete | 1d | 2025-10-08 | 2025-10-08 | PH06.SU.1030 | 2025-06-13 | 2025-06-13 |  |  | 02 | 1 |  |
| PH06.SU.1050 |  | Startup activities for H2C | 4d | 2025-10-08 | 2025-10-08 | PH06.SU.1010 | 2025-04-08 | 2025-04-11 |  |  | 02 | 1 |  |
|  | INSPECTIONS | **Final Inspections** |  | 2025-10-08 | 2025-10-08 |  |  |  |  |  |  |  |  |
| PH06.1000 |  | Fire Protection Final Inspection | 0d | 2025-10-08 | 2025-10-08 | PH06.DAHU.1770, PH06.EA.136, PH06.DAHU.1050, PH06.DAHU.1430, PH06.DH.1250, PH06.SU.1010, PH06.EA.2070, PH06.DAHU.1200, PH06.DAHU.1640, PH06.DH.1370 | 2025-04-07 | 2025-04-07 |  | Must complete by 10/16/23 | 02 | 1 |  |
| PH06.1010 |  | Electrical Final Inspection | 1d | 2025-10-08 | 2025-10-08 | PH06.SU.1010, PH06.EA.2070, PH06.DAHU.1200, PH06.DAHU.1640, PH06.DH.1370 | 2025-04-03 | 2025-04-03 |  | Must complete by 10/16/23 | 02 | 1 |  |
| PH06.1020 |  | Fire Alarm Final Inspection | 0d | 2025-10-08 | 2025-10-08 | PH06.EA.2140, PH06.SU.1010, PH06.EA.2070, PH06.DAHU.1200, PH06.DAHU.1640, PH06.DH.1370 | 2025-04-07 | 2025-04-07 |  | Must complete by 10/16/23 | 02 | 1 |  |
| PH06.1030 |  | Mechanical Final Inspection | 0d | 2025-10-08 | 2025-10-08 | PH06.SU.1010, PH06.EA.2070, PH06.DAHU.1200, PH06.DAHU.1640, PH06.DH.1370 | 2025-04-03 | 2025-04-03 |  | Must complete by 10/16/23 | 02 | 1 |  |
| PH06.1040 |  | Plumbing Final Inspection | 2d | 2025-10-08 | 2025-10-08 | PH06.EA.2070 | 2025-03-20 | 2025-03-21 |  | Must complete by 10/16/23 | 02 | 1 |  |
| PH06.1050 |  | Special Inspections Sign-off | 2d | 2025-10-08 | 2025-10-08 | PH06.XFMR.1100 | 2025-05-05 | 2025-05-06 |  | Must complete by 10/16/23 | 02 | 1 |  |
|  | PH7 | **Phase 7 Construction** |  | 2025-10-08 | 2025-10-08 |  |  |  |  |  |  |  |  |
|  | 2 | **Site** |  | 2025-10-08 | 2025-10-08 |  |  |  |  |  |  |  |  |
|  | 2 | **Generator Yard** |  | 2025-10-08 | 2025-10-08 |  |  |  |  |  |  |  |  |
|  | 2 | **Generators-Phase 1** |  | 2025-10-08 | 2025-10-08 |  |  |  |  |  |  |  |  |
| PH07.GEN.1100 |  | Gen Yard Install generators | 2d | 2025-10-08 | 2025-10-08 | PH2-10.GEN.1210, PH07.PR.1050 | 2024-12-16 | 2024-12-17 |  |  | 02 | 1 | ELIASE |
| PH07.GEN.1110 |  | Gen Yard Anchor generators | 2d | 2025-10-08 | 2025-10-08 | PH07.GEN.1100, PH07.GEN.1130 | 2025-01-23 | 2025-01-24 |  |  | 02 | 1 | ELIASE |
| PH07.GEN.1120 |  | Gen Yard Install cable bus from generator to electrical room | 10d | 2025-10-08 | 2025-10-08 | PH07.XFMR.1100 SS, PH07.GEN.1110, PH07.PR.1160 | 2025-01-27 | 2025-02-07 |  |  | 02 | 1 | ELIASE |
| PH07.GEN.1130 |  | Gen Yard Install generators Exhaust Duct | 2d | 2025-10-08 | 2025-10-08 | PH07.GEN.1100 | 2025-01-21 | 2025-01-22 |  |  | 02 | 1 | ELIASE |
|  | 4 | **MV Transformers-Phase 1** |  | 2025-10-08 | 2025-10-08 |  |  |  |  |  |  |  |  |
| PH07.XFMR.1100 |  | XFMR Install cable bus to electrical room | 8d | 2025-10-08 | 2025-10-08 | PH07.XFMR.1110, PH07.PR.1160, PH02.XFMR.1100 SS | 2025-01-21 | 2025-01-29 | Calendar 06 - 6 Day Work Week w/ Mass. Holidays |  | 02 | 1 | ELIASE |
| PH07.XFMR.1110 |  | XFMR Pull and terminate to MV SWGR | 10d | 2025-10-08 | 2025-10-08 | PH07.PR.1040 FF | 2024-11-25 | 2024-12-09 |  |  | 02 | 1 | ELIASE |

| ID | WBS | Activity | Duration | Start | Finish | Predecessors | Planned start | Planned finish | 06 -GC - Building Levels | 05 -GC - Building Phase | user_text |
| --- | --- | --- | --- | --- | --- | --- | --- | --- | --- | --- | --- |
|  | 3 | **Electrical Room E1.2** |  | 2025-10-08 | 2025-10-08 |  |  |  |  |  |  |
| PH07.EA.136 |  | ER E1.2 Install sprinkler heads | 5d | 2025-10-08 | 2025-10-08 | PH07.EA.1860 | 2025-01-15 | 2025-01-22 | 02 | 1 |  |
| PH07.EA.1860 |  | ER E1.2 Install fire protection | 1d | 2025-10-08 | 2025-10-08 | PH07.EA.1960 | 2025-01-14 | 2025-01-14 | 02 | 1 | All electrical rooms will |
| PH07.EA.1870 |  | ER E1.2 Layout and frame walls | 2d | 2025-10-08 | 2025-10-08 | PH07.M.1000 SS | 2024-12-16 | 2024-12-17 | 02 | 1 | start simutaneously |
| PH07.EA.1880 |  | ER E1.2 Install OAD ductwork Transitions | 6d | 2025-10-08 | 2025-10-08 | PH07.EA.2090, PH07.M.1000 SS | 2024-12-18 | 2024-12-26 | 02 | 1 |  |
| PH07.EA.1890 |  | ER E1.2 Electrical rough-in | 3d | 2025-10-08 | 2025-10-08 | PH07.EA.1870, PH07.EA.1880 | 2024-12-23 | 2024-12-26 | 02 | 1 |  |
| PH07.EA.1900 |  | ER E1.2 Mechanical rough-in | 3d | 2025-10-08 | 2025-10-08 | PH07.EA.1870, PH07.EA.1880 | 2024-12-23 | 2024-12-26 | 02 | 1 |  |
| PH07.EA.1910 |  | ER E1.2 Fire alarm rough-in | 3d | 2025-10-08 | 2025-10-08 | PH07.EA.1870, PH07.EA.1880 | 2024-12-23 | 2024-12-26 | 02 | 1 |  |
| PH07.EA.1920 |  | ER E1.2 Plumbing rough-in | 3d | 2025-10-08 | 2025-10-08 | PH07.EA.1880, PH07.EA.1870 | 2024-12-23 | 2024-12-26 | 02 | 1 |  |
| PH07.EA.1930 |  | ER E1.2 In wall inspection | 1d | 2025-10-08 | 2025-10-08 | PH07.EA.1910, PH07.EA.1900, PH07.EA.1890, PH07.EA.1920 | 2024-12-27 | 2024-12-27 | 02 | 1 |  |
| PH07.EA.1940 |  | ER E1.2 Install drywall | 3d | 2025-10-08 | 2025-10-08 | PH07.EA.1930 | 2024-12-30 | 2025-01-02 | 02 | 1 |  |
| PH07.EA.1950 |  | ER E1.2 Finish drywall | 5d | 2025-10-08 | 2025-10-08 | PH07.EA.1940 | 2025-01-03 | 2025-01-09 | 02 | 1 |  |
| PH07.EA.1960 |  | ER E1.2 Paint drywall | 2d | 2025-10-08 | 2025-10-08 | PH07.EA.1950 | 2025-01-10 | 2025-01-13 | 02 | 1 |  |
| PH07.EA.1970 |  | ER E1.2 Install OAD dampers + Ductwork | 3d | 2025-10-08 | 2025-10-08 | PH07.EA.1960, PH07.EA.1950 | 2025-01-14 | 2025-01-16 | 02 | 1 |  |
| PH07.EA.1980 |  | ER E1.2 Install split units | 3d | 2025-10-08 | 2025-10-08 | PH07.EA.1970 | 2025-01-21 | 2025-01-23 | 02 | 1 |  |
| PH07.EA.1990 |  | ER E1.2 Install Busway and OH electrical supports | 5d | 2025-10-08 | 2025-10-08 | PH07.EA.1960 SS, PH07.EA.1950, PH07.PR.1060 | 2025-01-10 | 2025-01-16 | 02 | 1 |  |
| PH07.EA.2000 |  | ER E1.2 Install Electrical SWGR | 2d | 2025-10-08 | 2025-10-08 | PH07.EA.2130, PH07.EA.1990, PH07.PR.1070 | 2025-02-05 | 2025-02-06 | 02 | 1 |  |
| PH07.EA.2010 |  | ER E1.2 Install Feeder tray | 5d | 2025-10-08 | 2025-10-08 | PH07.EA.1990, PH07.EA.2000 | 2025-02-07 | 2025-02-13 | 02 | 1 |  |
| PH07.EA.2020 |  | ER E1.2 Install electrical panels and disconnects | 5d | 2025-10-08 | 2025-10-08 | PH07.EA.2010, PH07.PR.1170, PH07.PR.1190 | 2025-02-14 | 2025-02-21 | 02 | 1 |  |
| PH07.EA.2030 |  | ER E1.2 Pull and terminate feeders | 10d | 2025-10-08 | 2025-10-08 | PH07.EA.2010 SS+2d, PH07.EA.2010 FF | 2025-02-11 | 2025-02-25 | 02 | 1 |  |
| PH07.EA.2040 |  | ER E1.2 Install lighting | 3d | 2025-10-08 | 2025-10-08 | PH07.EA.2020, PH07.EA.2030 | 2025-02-26 | 2025-02-28 | 02 | 1 |  |
| PH07.EA.2050 |  | ER E1.2 Install accessories (shepherds hook, fire ext) | 2d | 2025-10-08 | 2025-10-08 | PH07.EA.2040 FF, PH07.EA.2040 | 2025-03-31 | 2025-04-01 | 02 | 1 |  |
| PH07.EA.2070 |  | ER E1.2 Clean electrical room | 1d | 2025-10-08 | 2025-10-08 | PH07.EA.2150, PH07.EA.2120, PH07.EA.2040, PH07.EA.1980, PH07.EA.2050 | 2025-04-02 | 2025-04-02 | 02 | 1 |  |
| PH07.EA.2090 |  | ER E1.2 Install Plenum on Louvers | 2d | 2025-10-08 | 2025-10-08 | PH07.M.1000 SS | 2024-12-16 | 2024-12-17 | 02 | 1 | start simutaneously |
| PH07.EA.2100 |  | ER E1.2 Install Vesda Piping System | 5d | 2025-10-08 | 2025-10-08 | PH07.EA.1960 | 2025-01-14 | 2025-01-21 | 02 | 1 |  |
| PH07.EA.2110 |  | ER E1.2 Install Refrigerantion Lines | 5d | 2025-10-08 | 2025-10-08 | PH07.EA.1960 | 2025-01-14 | 2025-01-21 | 02 | 1 |  |
| PH07.EA.2120 |  | ER E1.2 Install ERV | 2d | 2025-10-08 | 2025-10-08 | PH07.EA.2030, PH07.EA.2110 | 2025-02-26 | 2025-02-27 | 02 | 1 |  |
| PH07.EA.2130 |  | ER E1.2 Install Cable Trays | 5d | 2025-10-08 | 2025-10-08 | PH07.EA.1980 SS+2d, PH07.EA.1980 FF | 2025-01-23 | 2025-01-29 | 02 | 1 |  |
| PH07.EA.2140 |  | ER E1.2 Install Fire Alarm + Vesda Panel | 3d | 2025-10-08 | 2025-10-08 | PH07.EA.2100 | 2025-01-21 | 2025-01-23 | 02 | 1 |  |
| PH07.EA.2150 |  | ER E1.2 Install Control BMS & EPMS | 4d | 2025-10-08 | 2025-10-08 | PH07.EA.2030 | 2025-02-26 | 2025-03-03 | 02 | 1 |  |

| ID | WBS | Activity | Duration | Start | Finish | Predecessors | Planned start | Planned finish | user_text | 06 -GC - Building Levels | 05 -GC - Building Phase |
| --- | --- | --- | --- | --- | --- | --- | --- | --- | --- | --- | --- |
|  | 5 | **DAHU Galleries** |  | 2025-10-08 | 2025-10-08 |  |  |  |  |  |  |
|  | 1 | **DAHU Gallery North** |  | 2025-10-08 | 2025-10-08 |  |  |  |  |  |  |
| PH07.DAHU.1000 |  | DAHU North Install Fire Protection & VESDA | 2d | 2025-10-08 | 2025-10-08 | PH07.M.1000 SS | 2024-12-16 | 2024-12-17 | DAHU North and South will | 02 | 1 |
| PH07.DAHU.1010 |  | DAHU North Install IW Piping | 4d | 2025-10-08 | 2025-10-08 | PH07.M.1000 SS | 2024-12-16 | 2024-12-19 | work simutaneously | 02 | 1 |
| PH07.DAHU.1020 |  | DAHU North Install Outside Air Reference Piping | 3d | 2025-10-08 | 2025-10-08 | PH07.DAHU.1010 SS+2d | 2024-12-18 | 2024-12-20 |  | 02 | 1 |
| PH07.DAHU.1030 |  | DAHU North Frame DAHU wall and CSH catwalk | 6d | 2025-10-08 | 2025-10-08 | PH07.M.1000 SS | 2024-12-16 | 2024-12-23 |  | 02 | 1 |
| PH07.DAHU.1040 |  | DAHU North CSH Electrical rough-in | 5d | 2025-10-08 | 2025-10-08 | PH07.DAHU.1030 SS+2d | 2024-12-18 | 2024-12-24 |  | 02 | 1 |
| PH07.DAHU.1050 |  | DAHU North CSH Fire protection/alarm and VESDA rough-in | 3d | 2025-10-08 | 2025-10-08 | PH07.DAHU.1030 SS+2d | 2024-12-18 | 2024-12-20 |  | 02 | 1 |
| PH07.DAHU.1060 |  | DAHU North CSH In wall inspection | 1d | 2025-10-08 | 2025-10-08 | PH07.DAHU.1040, PH07.DAHU.1050 FF, PH07.DAHU.1050 | 2024-12-26 | 2024-12-26 |  | 02 | 1 |
| PH07.DAHU.1070 |  | DAHU North Install CSH drywall | 6d | 2025-10-08 | 2025-10-08 | PH07.DAHU.1060 | 2024-12-27 | 2025-01-06 |  | 02 | 1 |
| PH07.DAHU.1080 |  | DAHU North Finish CSH drywall | 13d | 2025-10-08 | 2025-10-08 | PH07.DAHU.1070 | 2025-01-21 | 2025-02-06 |  | 02 | 1 |
| PH07.DAHU.1090 |  | DAHU North Install DAHUs | 2d | 2025-10-08 | 2025-10-08 | PH07.DAHU.1700, PH07.DAHU.1690, PH07.DAHU.1680, PH07.DAHU.1670, PH07.DAHU.1000, PH07.DAHU.1080, PH07.DAHU.1420, PH07.PR.1010 | 2025-02-14 | 2025-02-18 |  | 02 | 1 |
| PH07.DAHU.1100 |  | DAHU North Install CSH railing | 0d | 2025-10-08 | 2025-10-08 | PH07.DAHU.1420 | 2025-03-03 | 2025-03-03 |  | 02 | 1 |
| PH07.DAHU.1120 |  | DAHU North Pull and terminate VFDs from electrical room | 5d | 2025-10-08 | 2025-10-08 | PH07.DAHU.1090, PH07.PR.1130 | 2025-02-24 | 2025-02-28 |  | 02 | 1 |
| PH07.DAHU.1130 |  | DAHU North Make DAHU Plumbing Connections | 3d | 2025-10-08 | 2025-10-08 | PH07.DAHU.1720, PH07.DAHU.1090 | 2025-02-27 | 2025-03-03 |  | 02 | 1 |
| PH07.DAHU.1140 |  | DAHU North Install Feeder Trays (DAHU, VFD, Communications) | 5d | 2025-10-08 | 2025-10-08 | PH07.DAHU.1420, PH07.DH.1190 SS | 2025-02-14 | 2025-02-21 |  | 02 | 1 |
| PH07.DAHU.1150 |  | DAHU North Pull DAHU Feeders | 2d | 2025-10-08 | 2025-10-08 | PH07.DH.1200 SS, PH07.DAHU.1140 | 2025-02-24 | 2025-02-25 |  | 02 | 1 |
| PH07.DAHU.1160 |  | DAHU North Make DAHU Electrical Connections | 2d | 2025-10-08 | 2025-10-08 | PH07.DAHU.1150 | 2025-02-26 | 2025-02-27 |  | 02 | 1 |
| PH07.DAHU.1170 |  | DAHU North Make DAHU Controls Connections | 3d | 2025-10-08 | 2025-10-08 | PH07.DAHU.1160 | 2025-02-28 | 2025-03-04 |  | 02 | 1 |
| PH07.DAHU.1180 |  | DAHU North Install Temporary Wall | 2d | 2025-10-08 | 2025-10-08 | PH07.DAHU.1170 | 2025-03-05 | 2025-03-06 |  | 02 | 1 |
| PH07.DAHU.1190 |  | DAHU North Install CSH ladders | 2d | 2025-10-08 | 2025-10-08 | PH07.DAHU.1170 | 2025-03-05 | 2025-03-06 |  | 02 | 1 |
| PH07.DAHU.1200 |  | DAHU North Clean DAHU Gallery and CSH | 3d | 2025-10-08 | 2025-10-08 | PH07.DAHU.1730, PH07.DAHU.1180, PH07.DAHU.1190, PH07.DAHU.1100, PH07.DAHU.1160 | 2025-03-31 | 2025-04-02 |  | 02 | 1 |
| PH07.DAHU.1420 |  | DAHU North Paint CSH drywall | 5d | 2025-10-08 | 2025-10-08 | PH07.DAHU.1080 | 2025-02-07 | 2025-02-13 |  | 02 | 1 |
| PH07.DAHU.1650 |  | DAHU North Coredrilling On 2nd Floor | 5d | 2025-10-08 | 2025-10-08 | PH07.M.1000 SS | 2024-12-16 | 2024-12-20 | DAHU North and South will | 02 | 1 |
| PH07.DAHU.1660 |  | DAHU North Install Floor Drains 2nd Floor | 2d | 2025-10-08 | 2025-10-08 | PH07.DAHU.1650 | 2024-12-23 | 2024-12-24 | DAHU North and South will | 02 | 1 |
| PH07.DAHU.1670 |  | DAHU North Concrete Infill 2nd Floor | 2d | 2025-10-08 | 2025-10-08 | PH07.DAHU.1660 | 2024-12-26 | 2024-12-27 | DAHU North and South will | 02 | 1 |
| PH07.DAHU.1680 |  | DAHU North Install OAD Damper | 4d | 2025-10-08 | 2025-10-08 | PH07.DAHU.1010 | 2024-12-20 | 2024-12-26 |  | 02 | 1 |
| PH07.DAHU.1690 |  | DAHU North Install Sprinkler Feed Lines | 4d | 2025-10-08 | 2025-10-08 | PH07.DAHU.1680 | 2024-12-27 | 2025-01-02 |  | 02 | 1 |
| PH07.DAHU.1700 |  | DAHU North Install Low Point Drain | 4d | 2025-10-08 | 2025-10-08 | PH07.DAHU.1690 FF | 2024-12-27 | 2025-01-02 |  | 02 | 1 |
| PH07.DAHU.1720 |  | DAHU North Install IW Drops | 3d | 2025-10-08 | 2025-10-08 | PH07.DAHU.1090 | 2025-02-24 | 2025-02-26 |  | 02 | 1 |
| PH07.DAHU.1730 |  | DAHU North Install VESDA Panels | 2d | 2025-10-08 | 2025-10-08 | PH07.DAHU.1180 | 2025-03-24 | 2025-03-25 |  | 02 | 1 |

| ID | WBS | Activity | Duration | Start | Finish | Predecessors | Planned start | Planned finish | user_text | 06 -GC - Building Levels | 05 -GC - Building Phase |
| --- | --- | --- | --- | --- | --- | --- | --- | --- | --- | --- | --- |
|  | 2 | **DAHU Gallery South** |  | 2025-10-08 | 2025-10-08 |  |  |  |  |  |  |
| PH07.DAHU.1430 |  | DAHU South Install fire protection and VESDA | 2d | 2025-10-08 | 2025-10-08 | PH07.M.1000 SS | 2024-12-16 | 2024-12-17 | DAHU North and South will | 02 | 1 |
| PH07.DAHU.1440 |  | DAHU South Install IW Piping | 4d | 2025-10-08 | 2025-10-08 | PH07.M.1000 SS | 2024-12-16 | 2024-12-19 | work simutaneously | 02 | 1 |
| PH07.DAHU.1450 |  | DAHU South Install Outside Air Reference Piping | 3d | 2025-10-08 | 2025-10-08 | PH07.DAHU.1440 FF | 2024-12-17 | 2024-12-19 |  | 02 | 1 |
| PH07.DAHU.1460 |  | DAHU South Frame DAHU wall and CSH catwalk | 6d | 2025-10-08 | 2025-10-08 | PH07.M.1000 SS | 2024-12-23 | 2024-12-31 |  | 02 | 1 |
| PH07.DAHU.1470 |  | DAHU South CSH Fire protection/alarm and VESDA rough-in | 3d | 2025-10-08 | 2025-10-08 | PH07.DAHU.1460 | 2025-01-02 | 2025-01-06 |  | 02 | 1 |
| PH07.DAHU.1480 |  | DAHU South CSH Electrical rough-in | 3d | 2025-10-08 | 2025-10-08 | PH07.DAHU.1430 | 2024-12-16 | 2024-12-18 |  | 02 | 1 |
| PH07.DAHU.1490 |  | DAHU South CSH In wall inspection | 1d | 2025-10-08 | 2025-10-08 | PH07.DAHU.1480, PH07.DAHU.1470 FF, PH07.DAHU.1470 | 2025-01-21 | 2025-01-21 |  | 02 | 1 |
| PH07.DAHU.1500 |  | DAHU South Install CSH drywall | 6d | 2025-10-08 | 2025-10-08 | PH07.DAHU.1810, PH07.DAHU.1490 FF | 2025-01-22 | 2025-01-29 |  | 02 | 1 |
| PH07.DAHU.1510 |  | DAHU South Finish CSH drywall | 6d | 2025-10-08 | 2025-10-08 | PH07.DAHU.1500 | 2025-01-27 | 2025-02-03 |  | 02 | 1 |
| PH07.DAHU.1520 |  | DAHU South Paint CSH drywall | 4d | 2025-10-08 | 2025-10-08 | PH07.DAHU.1510 | 2025-02-04 | 2025-02-07 |  | 02 | 1 |
| PH07.DAHU.1530 |  | DAHU South Install DAHUs | 2d | 2025-10-08 | 2025-10-08 | PH07.DAHU.1520, PH07.DAHU.1430, PH07.PR.1010 | 2025-02-10 | 2025-02-11 |  | 02 | 1 |
| PH07.DAHU.1540 |  | DAHU South Install CSH railing | 2d | 2025-10-08 | 2025-10-08 | PH07.DAHU.1530 | 2025-03-03 | 2025-03-04 |  | 02 | 1 |
| PH07.DAHU.1550 |  | DAHU South Install VFDs | 3d | 2025-10-08 | 2025-10-08 | PH07.DAHU.1530, PH07.PR.1130 | 2025-02-12 | 2025-02-14 |  | 02 | 1 |
| PH07.DAHU.1560 |  | DAHU South Make DAHU plumbing connections | 5d | 2025-10-08 | 2025-10-08 | PH07.DAHU.1760 SS+2d, PH07.DAHU.1530 | 2025-02-14 | 2025-02-21 |  | 02 | 1 |
| PH07.DAHU.1570 |  | DAHU South Pull and terminate VFDs from electrical room | 5d | 2025-10-08 | 2025-10-08 | PH07.DAHU.1550 | 2025-02-24 | 2025-02-28 |  | 02 | 1 |
| PH07.DAHU.1580 |  | DAHU South Install feeder trays (DAHU, VFD, communications) | 5d | 2025-10-08 | 2025-10-08 | PH07.DAHU.1530 | 2025-02-12 | 2025-02-19 |  | 02 | 1 |
| PH07.DAHU.1590 |  | DAHU South Pull DAHU Feeders | 2d | 2025-10-08 | 2025-10-08 | PH07.DH.1200 SS, PH07.DAHU.1580 | 2025-02-20 | 2025-02-21 |  | 02 | 1 |
| PH07.DAHU.1600 |  | DAHU South Make DAHU electrical connections | 2d | 2025-10-08 | 2025-10-08 | PH07.DAHU.1590 | 2025-02-24 | 2025-02-25 |  | 02 | 1 |
| PH07.DAHU.1610 |  | DAHU South Make DAHU controls connections | 3d | 2025-10-08 | 2025-10-08 | PH07.DAHU.1600 | 2025-02-26 | 2025-02-28 |  | 02 | 1 |
| PH07.DAHU.1620 |  | DAHU South Install temporary wall | 2d | 2025-10-08 | 2025-10-08 | PH07.DAHU.1610 | 2025-03-03 | 2025-03-04 |  | 02 | 1 |
| PH07.DAHU.1630 |  | DAHU South Install CSH ladders | 2d | 2025-10-08 | 2025-10-08 | PH07.DAHU.1610 | 2025-03-03 | 2025-03-04 |  | 02 | 1 |
| PH07.DAHU.1640 |  | DAHU South Clean DAHU gallery and CSH | 3d | 2025-10-08 | 2025-10-08 | PH07.DAHU.1800, PH07.DAHU.1620, PH07.DAHU.1630, PH07.DAHU.1540, PH07.DAHU.1600 | 2025-03-31 | 2025-04-02 |  | 02 | 1 |
| PH07.DAHU.1740 |  | DAHU South Coredrilling On 2nd Floor | 5d | 2025-10-08 | 2025-10-08 | PH07.M.1000 SS | 2024-12-16 | 2024-12-20 | DAHU North and South will | 02 | 1 |
| PH07.DAHU.1750 |  | DAHU South Install Floor Drains 2nd Floor | 2d | 2025-10-08 | 2025-10-08 | PH07.DAHU.1740 | 2024-12-23 | 2024-12-24 | DAHU North and South will | 02 | 1 |
| PH07.DAHU.1760 |  | DAHU South Install IW Drops | 3d | 2025-10-08 | 2025-10-08 | PH07.DAHU.1530, PH07.DAHU.1440 | 2025-02-12 | 2025-02-14 | work simutaneously | 02 | 1 |
| PH07.DAHU.1770 |  | DAHU South Install Sprinkler Lines | 4d | 2025-10-08 | 2025-10-08 | PH07.DAHU.1530 | 2025-02-12 | 2025-02-18 |  | 02 | 1 |
| PH07.DAHU.1800 |  | DAHU South Install VESDA Panels | 2d | 2025-10-08 | 2025-10-08 | PH07.DAHU.1620 | 2025-03-24 | 2025-03-25 |  | 02 | 1 |
| PH07.DAHU.1810 |  | DAHU South Concrete Infill 2nd Floor | 2d | 2025-10-08 | 2025-10-08 | PH07.DAHU.1750 | 2024-12-26 | 2024-12-27 | DAHU North and South will | 02 | 1 |

| ID | WBS | Activity | Duration | Start | Finish | Predecessors | Planned start | Planned finish | 06 -GC - Building Levels | 05 -GC - Building Phase | user_text |
| --- | --- | --- | --- | --- | --- | --- | --- | --- | --- | --- | --- |
|  | 6 | **Data Hall Gallery** |  | 2025-10-08 | 2025-10-08 |  |  |  |  |  |  |
| PH07.DH.1000 |  | Data Hall Install upper temp wall | 2d | 2025-10-08 | 2025-10-08 | WTHR-10, PH07.DH.1050 SS | 2025-01-21 | 2025-01-22 | 02 | 1 |  |
| PH07.DH.1010 |  | Data Hall Rough-in electrical for exhaust fans | 5d | 2025-10-08 | 2025-10-08 | PH07.M.1000 SS | 2024-12-16 | 2024-12-20 | 02 | 1 |  |
| PH07.DH.1020 |  | Data Hall Install exhaust fan drip pans | 5d | 2025-10-08 | 2025-10-08 | PH07.DH.1010 SS+2d | 2024-12-18 | 2024-12-24 | 02 | 1 |  |
| PH07.DH.1030 |  | Data Hall Install Fire Protection (high) | 5d | 2025-10-08 | 2025-10-08 | PH07.DH.1020 SS+3d | 2024-12-23 | 2024-12-30 | 02 | 1 |  |
| PH07.DH.1040 |  | Data Hall Pipe exhaust fans drip pans | 4d | 2025-10-08 | 2025-10-08 | PH07.DH.1020 | 2024-12-26 | 2024-12-31 | 02 | 1 |  |
| PH07.DH.1050 |  | Data Hall Layout and frame B/E/3.5 line walls | 5d | 2025-10-08 | 2025-10-08 | PH07.M.1000 SS | 2024-12-16 | 2024-12-20 | 02 | 1 |  |
| PH07.DH.1060 |  | Data Hall In wall rough-in | 5d | 2025-10-08 | 2025-10-08 | PH07.DH.1050 SS | 2024-12-16 | 2024-12-20 | 02 | 1 |  |
| PH07.DH.1070 |  | Data Hall In wall inspection | 1d | 2025-10-08 | 2025-10-08 | PH07.DH.1060 | 2024-12-23 | 2024-12-23 | 02 | 1 |  |
| PH07.DH.1080 |  | Data Hall Install Drywall on B/E/3.5 line walls | 5d | 2025-10-08 | 2025-10-08 | PH07.DH.1070 | 2024-12-24 | 2024-12-31 | 02 | 1 |  |
| PH07.DH.1090 |  | Data Hall Finish B/E/3.5 line walls | 7d | 2025-10-08 | 2025-10-08 | PH07.DH.1460, PH07.DH.1080, WTHR-10 | 2025-01-02 | 2025-01-10 | 02 | 1 |  |
| PH07.DH.1140 |  | Data Hall Install Lower temp wall and doors | 3d | 2025-10-08 | 2025-10-08 | PH07.DH.1290, PH07.DH.1000, PH07.DH.1230, WTHR-10, PH07.DH.1050 SS | 2025-02-24 | 2025-02-26 | 02 | 1 |  |
| PH07.DH.1150 |  | Data Hall Install return air dampers | 3d | 2025-10-08 | 2025-10-08 | PH07.DH.1380 SS, PH07.DH.1090 | 2025-01-21 | 2025-01-23 | 02 | 1 |  |
| PH07.DH.1160 |  | Data Hall Install supply air dampers | 3d | 2025-10-08 | 2025-10-08 | PH07.DH.1150 | 2025-01-21 | 2025-01-23 | 02 | 1 |  |
| PH07.DH.1170 |  | Data Hall Install fire protection (low) | 5d | 2025-10-08 | 2025-10-08 | PH07.DH.1150 | 2025-01-27 | 2025-01-31 | 02 | 1 |  |
| PH07.DH.1180 |  | Data Hall Install Racking | 8d | 2025-10-08 | 2025-10-08 | PH07.DH.1040, PH07.DH.1450, PH07.DH.1440, PH07.DH.1080, PH07.DH.1030, PH07.PR.1000 | 2025-01-21 | 2025-01-30 | 02 | 1 |  |
| PH07.DH.1190 |  | Data Hall Install DAHU feeder tray | 10d | 2025-10-08 | 2025-10-08 | PH07.DH.1180 | 2025-01-27 | 2025-02-07 | 02 | 1 |  |
| PH07.DH.1200 |  | Data Hall Pull DAHU feeders | 2d | 2025-10-08 | 2025-10-08 | PH07.DH.1190 | 2025-02-10 | 2025-02-11 | 02 | 1 |  |
| PH07.DH.1210 |  | Data Hall Install vertical communication risers | 3d | 2025-10-08 | 2025-10-08 | PH07.DH.1200 | 2025-02-12 | 2025-02-14 | 02 | 1 |  |
| PH07.DH.1220 |  | Data Hall Install guardrails at risers | 2d | 2025-10-08 | 2025-10-08 | PH07.DH.1210 | 2025-02-24 | 2025-02-25 | 02 | 1 |  |
| PH07.DH.1230 |  | Data Hall Install ACT grid | 4d | 2025-10-08 | 2025-10-08 | PH07.DH.1500, PH07.DH.1270 | 2025-01-23 | 2025-01-28 | 02 | 1 |  |
| PH07.DH.1240 |  | Data Hall Electrical ceiling rough-in | 5d | 2025-10-08 | 2025-10-08 | PH07.DH.1470, PH07.DH.1170, PH07.DH.1230 | 2025-01-29 | 2025-02-04 | 02 | 1 |  |
| PH07.DH.1250 |  | Data Hall Install Fire protection Sprinkler Heads | 4d | 2025-10-08 | 2025-10-08 | PH07.DH.1230 | 2025-01-29 | 2025-02-03 | 02 | 1 |  |
| PH07.DH.1260 |  | Data Hall Fire alarm and VESDA rough-in | 4d | 2025-10-08 | 2025-10-08 | PH07.DH.1230 | 2025-02-14 | 2025-02-20 | 02 | 1 |  |
| PH07.DH.1270 |  | Data Hall Install upper twin wall | 5d | 2025-10-08 | 2025-10-08 | PH07.DH.1180 SS+3d | 2025-01-21 | 2025-01-27 | 02 | 1 |  |
| PH07.DH.1280 |  | Data Hall Install Ceiling Tiles | 4d | 2025-10-08 | 2025-10-08 | PH07.DH.1510, PH07.DH.1230, PH07.DH.1250, PH07.DH.1240, PH07.DH.1270 | 2025-03-24 | 2025-03-27 | 02 | 1 |  |
| PH07.DH.1290 |  | Data Hall Install Basket Tray | 10d | 2025-10-08 | 2025-10-08 | PH07.DH.1180 | 2025-02-07 | 2025-02-21 | 02 | 1 | Changed from 15 to 10 |
| PH07.DH.1300 |  | Data Hall Pull branch circuit and PDC feeders | 10d | 2025-10-08 | 2025-10-08 | PH07.EA.2030 SS, PH07.DH.1290 FF+4d | 2025-02-13 | 2025-02-27 | 02 | 1 | Changed from 15 to 10 |
| PH07.DH.1310 |  | Data Hall Install PDC cabinets | 3d | 2025-10-08 | 2025-10-08 | PH07.DH.1230, PH07.PR.1100 | 2025-02-24 | 2025-02-26 | 02 | 1 |  |
| PH07.DH.1320 |  | Data Hall Terminate PDC cabinets | 5d | 2025-10-08 | 2025-10-08 | PH07.DH.1310, PH07.DH.1300 FF+3d | 2025-02-27 | 2025-03-05 | 02 | 1 |  |
| PH07.DH.1330 |  | Data Hall Install PDC Whips and labels | 5d | 2025-10-08 | 2025-10-08 | PH07.DH.1290, PH07.PR.1100 | 2025-02-24 | 2025-02-28 | 02 | 1 | Data hall is driving out the |
| PH07.DH.1340 |  | Data Hall Perform PDC Whip Checks | 2d | 2025-10-08 | 2025-10-08 | PH07.DH.1330, PH07.DH.1320 | 2025-03-06 | 2025-03-07 | 02 | 1 | NEA data in the milestones |
| PH07.DH.1350 |  | Data Hall Install lower twin wall and doors | 5d | 2025-10-08 | 2025-10-08 | PH07.DH.1360 FF, PH07.DH.1180, WTHR-10, PH07.DH.1050 SS | 2025-03-24 | 2025-03-28 | 02 | 1 | Changed from 7 to 5 |
| PH07.DH.1360 |  | Data Hall Install Perfect Positioning | 2d | 2025-10-08 | 2025-10-08 | PH07.DH.1320, PH07.DH.1340 | 2025-03-31 | 2025-04-01 | 02 | 1 | Must complete by 10/23/23 |
| PH07.DH.1370 |  | Data Hall Clean data hall | 2d | 2025-10-08 | 2025-10-08 | PH07.DH.1490, PH07.DH.1480, PH07.DH.1280, PH07.DH.1140, PH07.DH.1220, PH07.DH.1360, PH07.DH.1350, WTHR-10, PH07.DH.1050 SS | 2025-04-02 | 2025-04-03 | 02 | 1 |  |
| PH07.DH.1380 |  | Data Hall Paint B/E/3.5 line walls | 5d | 2025-10-08 | 2025-10-08 | PH07.DH.1090 | 2025-01-21 | 2025-01-27 | 02 | 1 |  |
| PH07.DH.1430 |  | Data Hall Install High VESDA Pipes | 4d | 2025-10-08 | 2025-10-08 | PH07.DH.1030, WTHR-10 | 2024-12-31 | 2025-01-06 | 02 | 1 |  |
| PH07.DH.1440 |  | Data Hall Install Fire Protection (Low) | 5d | 2025-10-08 | 2025-10-08 | PH07.DH.1030 SS+2d | 2024-12-26 | 2025-01-02 | 02 | 1 |  |
| PH07.DH.1450 |  | Data Hall Hang Wire for Ceiling Grid | 4d | 2025-10-08 | 2025-10-08 | PH07.DH.1440 SS+2d | 2024-12-30 | 2025-01-03 | 02 | 1 |  |
| PH07.DH.1460 |  | Data Hall Install Dampers/Screens | 3d | 2025-10-08 | 2025-10-08 | PH07.DH.1080 SS | 2024-12-24 | 2024-12-27 | 02 | 1 |  |
| PH07.DH.1470 |  | Data Hall Install BMS Panel | 3d | 2025-10-08 | 2025-10-08 | PH07.DH.1090 | 2025-01-21 | 2025-01-23 | 02 | 1 |  |
| PH07.DH.1480 |  | Data Hall Install VESDA Panels | 0d | 2025-10-08 | 2025-10-08 | PH07.DH.1260, PH07.DH.1280, PH07.DH.1500, WTHR-10, PH07.DH.1050 SS | 2025-03-28 | 2025-03-28 | 02 | 1 | NEA data in the milestones |
| PH07.DH.1490 |  | Data Hall Pull & Terminate VESDA Wiring | 2d | 2025-10-08 | 2025-10-08 | PH07.DH.1480 | 2025-03-28 | 2025-03-31 | 02 | 1 | NEA data in the milestones |
| PH07.DH.1500 |  | Data Hall Install Lower VESDA Pipes | 4d | 2025-10-08 | 2025-10-08 | PH07.DH.1430 | 2025-01-21 | 2025-01-24 | 02 | 1 |  |
| PH07.DH.1510 |  | Data Hall Install Back Draft Damper | 4d | 2025-10-08 | 2025-10-08 | PH07.DH.1230 | 2025-01-29 | 2025-02-03 | 02 | 1 |  |
| PH07.DH.1520 |  | Data Hall Install BMS/EPMS | 5d | 2025-10-08 | 2025-10-08 | PH07.DH.1210 | 2025-02-24 | 2025-02-28 | 02 | 1 |  |

| ID | WBS | Activity | Duration | Start | Finish | Predecessors | Planned start | Planned finish | Calendar | user_text | 06 -GC - Building Levels | 05 -GC - Building Phase | SCHDULE UPDATE |
| --- | --- | --- | --- | --- | --- | --- | --- | --- | --- | --- | --- | --- | --- |
|  | 7 | **Startup and Commissioning** |  | 2025-10-08 | 2025-10-08 |  |  |  |  |  |  |  |  |
| PH07.SU.1000 |  | OWNER FOD Walks | 3d | 2025-10-08 | 2025-10-08 | PH07.GEN.1120, PH07.XFMR.1100, PH07.GEN.1110, PH07.DAHU.1570, PH07.DAHU.1640 FF, PH07.EA.2070 FF, PH07.XFMR.1110, PH07.DAHU.1120 | 2025-03-28 | 2025-04-01 |  | Must begin by 10/09/23 | 02 | 1 |  |
| PH07.SU.1010 |  | Energization | 2d | 2025-10-08 | 2025-10-08 | PH07.SU.1000 | 2025-04-03 | 2025-04-04 |  | Must complete by 10/16/23 | 02 | 1 |  |
| PH07.SU.1030 |  | L4-L5 Commissioning | 10d | 2025-10-08 | 2025-10-08 | PH07.SU.1010, PH07.SU.1050, PH07.DH.1370, PH07.M.1070 | 2025-05-30 | 2025-06-12 |  |  | 02 | 1 |  |
| PH07.SU.1040 |  | Comissioning Complete | 1d | 2025-10-08 | 2025-10-08 | PH07.SU.1030 | 2025-06-13 | 2025-06-13 |  |  | 02 | 1 |  |
| PH07.SU.1050 |  | Startup activities for H2C | 4d | 2025-10-08 | 2025-10-08 | PH07.SU.1010 | 2025-04-08 | 2025-04-11 |  |  | 02 | 1 |  |
|  | INSPECTIONS | **Final Inspections** |  | 2025-10-08 | 2025-10-08 |  |  |  |  |  |  |  |  |
| PH07.1000 |  | Fire Protection Final Inspection | 1d | 2025-10-08 | 2025-10-08 | PH07.DAHU.1770, PH07.EA.136, PH07.DAHU.1050, PH07.DAHU.1430, PH07.DH.1250, PH07.SU.1010, PH07.EA.2070, PH07.DAHU.1200, PH07.DAHU.1640, PH07.DH.1370 | 2025-04-07 | 2025-04-07 |  | Must complete by 10/16/23 | 02 | 1 |  |
| PH07.1010 |  | Electrical Final Inspection | 0d | 2025-10-08 | 2025-10-08 | PH07.SU.1010, PH07.EA.2070, PH07.DAHU.1200, PH07.DAHU.1640, PH07.DH.1370 | 2025-04-07 | 2025-04-07 |  | Must complete by 10/16/23 | 02 | 1 |  |
| PH07.1020 |  | Fire Alarm Final Inspection | 1d | 2025-10-08 | 2025-10-08 | PH07.EA.2140, PH07.SU.1010, PH07.EA.2070, PH07.DAHU.1200, PH07.DAHU.1640, PH07.DH.1370 | 2025-04-07 | 2025-04-07 |  | Must complete by 10/16/23 | 02 | 1 |  |
| PH07.1030 |  | Mechanical Final Inspection | 0d | 2025-10-08 | 2025-10-08 | PH07.SU.1010, PH07.EA.2070, PH07.DAHU.1200, PH07.DAHU.1640, PH07.DH.1370 | 2025-04-07 | 2025-04-07 |  | Must complete by 10/16/23 | 02 | 1 |  |
| PH07.1040 |  | Plumbing Final Inspection | 2d | 2025-10-08 | 2025-10-08 | PH07.DAHU.1130, PH07.DAHU.1720, PH07.DAHU.1560, PH07.DAHU.1760, PH07.DAHU.1750 | 2025-03-19 | 2025-03-20 |  | Must complete by 10/16/23 | 02 | 1 |  |
| PH07.1050 |  | Special Inspections Sign-off | 2d | 2025-10-08 | 2025-10-08 | PH07.1020 | 2025-06-02 | 2025-06-03 |  | Must complete by 10/16/23 | 02 | 1 |  |
|  | PH8 | **Phase 8 Construction** |  | 2025-10-08 | 2025-10-08 |  |  |  |  |  |  |  |  |
|  | 2 | **Site** |  | 2025-10-08 | 2025-10-08 |  |  |  |  |  |  |  |  |
|  | 2 | **Generator Yard** |  | 2025-10-08 | 2025-10-08 |  |  |  |  |  |  |  |  |
|  | 2 | **Generators-Phase 1** |  | 2025-10-08 | 2025-10-08 |  |  |  |  |  |  |  |  |
| PH08.GEN.1100 |  | Gen Yard Install generators | 2d | 2025-10-08 | 2025-10-08 | PH2-10.GEN.1210, PH08.PR.1050 | 2025-01-21 | 2025-01-22 |  |  | 02 | 1 | ELIASE |
| PH08.GEN.1110 |  | Gen Yard Anchor generators | 2d | 2025-10-08 | 2025-10-08 | PH08.GEN.1100, PH08.GEN.1130 | 2025-01-27 | 2025-01-28 |  |  | 02 | 1 | ELIASE |
| PH08.GEN.1120 |  | Gen Yard Install cable bus from generator to electrical room | 10d | 2025-10-08 | 2025-10-08 | PH08.XFMR.1100 SS, PH08.GEN.1110, PH08.PR.1160 | 2025-01-29 | 2025-02-11 |  |  | 02 | 1 | ELIASE |
| PH08.GEN.1130 |  | Gen Yard Install generators Exhaust Duct | 2d | 2025-10-08 | 2025-10-08 | PH08.GEN.1100 | 2025-01-23 | 2025-01-24 |  |  | 02 | 1 | ELIASE |
|  | 4 | **MV Transformers-Phase 1** |  | 2025-10-08 | 2025-10-08 |  |  |  |  |  |  |  |  |
| PH08.XFMR.1100 |  | XFMR Install cable bus to electrical room | 8d | 2025-10-08 | 2025-10-08 | PH08.XFMR.1110, PH08.PR.1160, PH03.XFMR.1100 SS | 2025-01-21 | 2025-01-29 | Calendar 06 - 6 Day Work Week w/ Mass. Holidays |  | 02 | 1 | ELIASE |
| PH08.XFMR.1110 |  | XFMR Pull and terminate to MV SWGR | 10d | 2025-10-08 | 2025-10-08 | PH08.PR.1040 FF | 2024-11-25 | 2024-12-09 |  |  | 02 | 1 | ELIASE |

| ID | WBS | Activity | Duration | Start | Finish | Predecessors | Planned start | Planned finish | 06 -GC - Building Levels | 05 -GC - Building Phase | user_text |
| --- | --- | --- | --- | --- | --- | --- | --- | --- | --- | --- | --- |
|  | 3 | **Electrical Room E1.3** |  | 2025-10-08 | 2025-10-08 |  |  |  |  |  |  |
| PH08.EA.136 |  | ER E1.3 Install sprinkler heads | 5d | 2025-10-08 | 2025-10-08 | PH08.EA.1860 | 2025-02-06 | 2025-02-12 | 02 | 1 |  |
| PH08.EA.1860 |  | ER E1.3 Install fire protection | 1d | 2025-10-08 | 2025-10-08 | PH08.EA.1960 | 2025-02-05 | 2025-02-05 | 02 | 1 | All electrical rooms will |
| PH08.EA.1870 |  | ER E1.3 Layout and frame walls | 2d | 2025-10-08 | 2025-10-08 | PH08.M.1000 SS | 2024-12-30 | 2024-12-31 | 02 | 1 | start simutaneously |
| PH08.EA.1880 |  | ER E1.3 Install OAD ductwork Transitions | 6d | 2025-10-08 | 2025-10-08 | PH08.EA.2090, PH08.M.1000 SS | 2025-01-02 | 2025-01-09 | 02 | 1 |  |
| PH08.EA.1890 |  | ER E1.3 Electrical rough-in | 3d | 2025-10-08 | 2025-10-08 | PH08.EA.1870, PH08.EA.1880 | 2025-01-10 | 2025-01-14 | 02 | 1 |  |
| PH08.EA.1900 |  | ER E1.3 Mechanical rough-in | 3d | 2025-10-08 | 2025-10-08 | PH08.EA.1870, PH08.EA.1880 | 2025-01-10 | 2025-01-14 | 02 | 1 |  |
| PH08.EA.1910 |  | ER E1.3 Fire alarm rough-in | 3d | 2025-10-08 | 2025-10-08 | PH08.EA.1870, PH08.EA.1880 | 2025-01-10 | 2025-01-14 | 02 | 1 |  |
| PH08.EA.1920 |  | ER E1.3 Plumbing rough-in | 3d | 2025-10-08 | 2025-10-08 | PH08.EA.1880, PH08.EA.1870 | 2025-01-10 | 2025-01-14 | 02 | 1 |  |
| PH08.EA.1930 |  | ER E1.3 In wall inspection | 1d | 2025-10-08 | 2025-10-08 | PH08.EA.1910, PH08.EA.1900, PH08.EA.1890, PH08.EA.1920 | 2025-01-21 | 2025-01-21 | 02 | 1 |  |
| PH08.EA.1940 |  | ER E1.3 Install drywall | 3d | 2025-10-08 | 2025-10-08 | PH08.EA.1930 | 2025-01-22 | 2025-01-24 | 02 | 1 |  |
| PH08.EA.1950 |  | ER E1.3 Finish drywall | 5d | 2025-10-08 | 2025-10-08 | PH08.EA.1940 | 2025-01-27 | 2025-01-31 | 02 | 1 |  |
| PH08.EA.1960 |  | ER E1.3 Paint drywall | 2d | 2025-10-08 | 2025-10-08 | PH08.EA.1950 | 2025-02-03 | 2025-02-04 | 02 | 1 |  |
| PH08.EA.1970 |  | ER E1.3 Install OAD dampers + Ductwork | 3d | 2025-10-08 | 2025-10-08 | PH08.EA.1960, PH08.EA.1950 | 2025-02-05 | 2025-02-07 | 02 | 1 |  |
| PH08.EA.1980 |  | ER E1.3 Install split units | 3d | 2025-10-08 | 2025-10-08 | PH08.EA.1970 | 2025-02-10 | 2025-02-12 | 02 | 1 |  |
| PH08.EA.1990 |  | ER E1.3 Install Busway and OH electrical supports | 5d | 2025-10-08 | 2025-10-08 | PH08.EA.1960 SS, PH08.EA.1950 | 2025-02-04 | 2025-02-10 | 02 | 1 |  |
| PH08.EA.2000 |  | ER E1.3 Install Electrical SWGR | 2d | 2025-10-08 | 2025-10-08 | PH08.EA.2130, PH08.EA.1990, PH08.PR.1070 | 2025-02-24 | 2025-02-25 | 02 | 1 |  |
| PH08.EA.2010 |  | ER E1.3 Install Feeder tray | 5d | 2025-10-08 | 2025-10-08 | PH08.EA.1990, PH08.EA.2000 | 2025-02-26 | 2025-03-04 | 02 | 1 |  |
| PH08.EA.2020 |  | ER E1.3 Install electrical panels and disconnects | 5d | 2025-10-08 | 2025-10-08 | PH08.EA.2010, PH08.PR.1170, PH08.PR.1190 | 2025-03-05 | 2025-03-11 | 02 | 1 |  |
| PH08.EA.2030 |  | ER E1.3 Pull and terminate feeders | 0d | 2025-10-08 | 2025-10-08 | PH08.EA.2010 SS+2d, PH08.EA.2010 FF | 2025-03-24 | 2025-03-24 | 02 | 1 |  |
| PH08.EA.2040 |  | ER E1.3 Install lighting | 3d | 2025-10-08 | 2025-10-08 | PH08.EA.2020, PH08.EA.2030 | 2025-04-01 | 2025-04-03 | 02 | 1 |  |
| PH08.EA.2050 |  | ER E1.3 Install accessories (shepherds hook, fire ext) | 1d | 2025-10-08 | 2025-10-08 | PH08.EA.2040 FF, PH08.EA.2040 | 2025-04-21 | 2025-04-21 | 02 | 1 |  |
| PH08.EA.2070 |  | ER E1.3 Clean electrical room | 1d | 2025-10-08 | 2025-10-08 | PH08.EA.2150, PH08.EA.2120, PH08.EA.2040, PH08.EA.1980, PH08.EA.2050 FF | 2025-04-21 | 2025-04-21 | 02 | 1 |  |
| PH08.EA.2090 |  | ER E1.3 Install Plenum on Louvers | 2d | 2025-10-08 | 2025-10-08 | PH08.M.1000 SS | 2024-12-30 | 2024-12-31 | 02 | 1 | start simutaneously |
| PH08.EA.2100 |  | ER E1.3 Install Vesda Piping System | 5d | 2025-10-08 | 2025-10-08 | PH08.EA.1960 | 2025-02-05 | 2025-02-11 | 02 | 1 |  |
| PH08.EA.2110 |  | ER E1.3 Install Refrigerantion Lines | 5d | 2025-10-08 | 2025-10-08 | PH08.EA.1960 | 2025-02-05 | 2025-02-11 | 02 | 1 |  |
| PH08.EA.2120 |  | ER E1.3 Install ERV | 2d | 2025-10-08 | 2025-10-08 | PH08.EA.2030, PH08.EA.2110 | 2025-04-01 | 2025-04-02 | 02 | 1 |  |
| PH08.EA.2130 |  | ER E1.3 Install Cable Trays | 5d | 2025-10-08 | 2025-10-08 | PH08.EA.1980 SS+2d, PH08.EA.1980 FF | 2025-02-12 | 2025-02-19 | 02 | 1 |  |
| PH08.EA.2140 |  | ER E1.3 Install Fire Alarm + Vesda Panel | 3d | 2025-10-08 | 2025-10-08 | PH08.EA.2100 | 2025-02-12 | 2025-02-14 | 02 | 1 |  |
| PH08.EA.2150 |  | ER E1.3 Install Control BMS & EPMS | 4d | 2025-10-08 | 2025-10-08 | PH08.EA.2030 | 2025-04-01 | 2025-04-04 | 02 | 1 |  |

| ID | WBS | Activity | Duration | Start | Finish | Predecessors | Planned start | Planned finish | user_text | 06 -GC - Building Levels | 05 -GC - Building Phase |
| --- | --- | --- | --- | --- | --- | --- | --- | --- | --- | --- | --- |
|  | 5 | **DAHU Galleries** |  | 2025-10-08 | 2025-10-08 |  |  |  |  |  |  |
|  | 1 | **DAHU Gallery North** |  | 2025-10-08 | 2025-10-08 |  |  |  |  |  |  |
| PH08.DAHU.1000 |  | DAHU North Install Fire Protection & VESDA | 2d | 2025-10-08 | 2025-10-08 | PH08.M.1000 SS | 2024-12-30 | 2024-12-31 | DAHU North and South will | 02 | 1 |
| PH08.DAHU.1010 |  | DAHU North Install IW Piping | 4d | 2025-10-08 | 2025-10-08 | PH08.M.1000 SS | 2024-12-30 | 2025-01-03 | work simutaneously | 02 | 1 |
| PH08.DAHU.1020 |  | DAHU North Install Outside Air Reference Piping | 3d | 2025-10-08 | 2025-10-08 | PH08.DAHU.1010 SS+2d | 2025-01-02 | 2025-01-06 |  | 02 | 1 |
| PH08.DAHU.1030 |  | DAHU North Frame DAHU wall and CSH catwalk | 6d | 2025-10-08 | 2025-10-08 | PH08.M.1000 SS | 2024-12-30 | 2025-01-07 |  | 02 | 1 |
| PH08.DAHU.1040 |  | DAHU North CSH Electrical rough-in | 5d | 2025-10-08 | 2025-10-08 | PH08.DAHU.1030 SS+2d | 2025-01-02 | 2025-01-08 |  | 02 | 1 |
| PH08.DAHU.1050 |  | DAHU North CSH Fire protection/alarm and VESDA rough-in | 3d | 2025-10-08 | 2025-10-08 | PH08.DAHU.1030 SS+2d | 2025-01-02 | 2025-01-06 |  | 02 | 1 |
| PH08.DAHU.1060 |  | DAHU North CSH In wall inspection | 1d | 2025-10-08 | 2025-10-08 | PH08.DAHU.1040, PH08.DAHU.1050 FF, PH08.DAHU.1050 | 2025-01-21 | 2025-01-21 |  | 02 | 1 |
| PH08.DAHU.1070 |  | DAHU North Install CSH drywall | 6d | 2025-10-08 | 2025-10-08 | PH08.DAHU.1060 | 2025-01-22 | 2025-01-29 |  | 02 | 1 |
| PH08.DAHU.1080 |  | DAHU North Finish CSH drywall | 13d | 2025-10-08 | 2025-10-08 | PH08.DAHU.1070 | 2025-01-30 | 2025-02-18 |  | 02 | 1 |
| PH08.DAHU.1090 |  | DAHU North Install DAHUs | 2d | 2025-10-08 | 2025-10-08 | PH08.DAHU.1700, PH08.DAHU.1690, PH08.DAHU.1680, PH08.DAHU.1670, PH08.DAHU.1000, PH08.DAHU.1080, PH08.DAHU.1420, PH08.PR.1010 | 2025-03-03 | 2025-03-04 |  | 02 | 1 |
| PH08.DAHU.1100 |  | DAHU North Install CSH railing | 2d | 2025-10-08 | 2025-10-08 | PH08.DAHU.1420 | 2025-03-31 | 2025-04-01 |  | 02 | 1 |
| PH08.DAHU.1120 |  | DAHU North Pull and terminate VFDs from electrical room | 5d | 2025-10-08 | 2025-10-08 | PH08.DAHU.1090, PH08.PR.1130 | 2025-03-24 | 2025-03-28 |  | 02 | 1 |
| PH08.DAHU.1130 |  | DAHU North Make DAHU Plumbing Connections | 3d | 2025-10-08 | 2025-10-08 | PH08.DAHU.1720, PH08.DAHU.1090 | 2025-04-01 | 2025-04-03 |  | 02 | 1 |
| PH08.DAHU.1140 |  | DAHU North Install Feeder Trays (DAHU, VFD, Communications) | 5d | 2025-10-08 | 2025-10-08 | PH08.DAHU.1420, PH08.DH.1190 SS | 2025-03-24 | 2025-03-28 |  | 02 | 1 |
| PH08.DAHU.1150 |  | DAHU North Pull DAHU Feeders | 2d | 2025-10-08 | 2025-10-08 | PH08.DH.1200 FF, PH08.DAHU.1140 | 2025-03-31 | 2025-04-01 |  | 02 | 1 |
| PH08.DAHU.1160 |  | DAHU North Make DAHU Electrical Connections | 2d | 2025-10-08 | 2025-10-08 | PH08.DAHU.1150 | 2025-04-09 | 2025-04-10 |  | 02 | 1 |
| PH08.DAHU.1170 |  | DAHU North Make DAHU Controls Connections | 3d | 2025-10-08 | 2025-10-08 | PH08.DAHU.1160 | 2025-04-11 | 2025-04-15 |  | 02 | 1 |
| PH08.DAHU.1180 |  | DAHU North Install Temporary Wall | 2d | 2025-10-08 | 2025-10-08 | PH08.DAHU.1170 | 2025-04-16 | 2025-04-17 |  | 02 | 1 |
| PH08.DAHU.1190 |  | DAHU North Install CSH ladders | 2d | 2025-10-08 | 2025-10-08 | PH08.DAHU.1170 | 2025-04-16 | 2025-04-17 |  | 02 | 1 |
| PH08.DAHU.1200 |  | DAHU North Clean DAHU Gallery and CSH | 2d | 2025-10-08 | 2025-10-08 | PH08.DAHU.1730, PH08.DAHU.1180, PH08.DAHU.1190, PH08.DAHU.1100, PH08.DAHU.1160 | 2025-04-21 | 2025-04-22 |  | 02 | 1 |
| PH08.DAHU.1420 |  | DAHU North Paint CSH drywall | 5d | 2025-10-08 | 2025-10-08 | PH08.DAHU.1080 | 2025-02-24 | 2025-02-28 |  | 02 | 1 |
| PH08.DAHU.1650 |  | DAHU North Coredrilling On 2nd Floor | 5d | 2025-10-08 | 2025-10-08 | PH08.M.1000 SS | 2024-12-30 | 2025-01-06 | DAHU North and South will | 02 | 1 |
| PH08.DAHU.1660 |  | DAHU North Install Floor Drains 2nd Floor | 2d | 2025-10-08 | 2025-10-08 | PH08.DAHU.1650 | 2025-01-21 | 2025-01-22 | DAHU North and South will | 02 | 1 |
| PH08.DAHU.1670 |  | DAHU North Concrete Infill 2nd Floor | 2d | 2025-10-08 | 2025-10-08 | PH08.DAHU.1660 | 2025-01-23 | 2025-01-24 | DAHU North and South will | 02 | 1 |
| PH08.DAHU.1680 |  | DAHU North Install OAD Damper | 4d | 2025-10-08 | 2025-10-08 | PH08.DAHU.1010 | 2025-01-21 | 2025-01-24 |  | 02 | 1 |
| PH08.DAHU.1690 |  | DAHU North Install Sprinkler Feed Lines | 4d | 2025-10-08 | 2025-10-08 | PH08.DAHU.1680 | 2025-01-27 | 2025-01-30 |  | 02 | 1 |
| PH08.DAHU.1700 |  | DAHU North Install Low Point Drain | 4d | 2025-10-08 | 2025-10-08 | PH08.DAHU.1690 FF | 2025-01-27 | 2025-01-30 |  | 02 | 1 |
| PH08.DAHU.1720 |  | DAHU North Install IW Drops | 3d | 2025-10-08 | 2025-10-08 | PH08.DAHU.1090 | 2025-03-24 | 2025-03-26 |  | 02 | 1 |
| PH08.DAHU.1730 |  | DAHU North Install VESDA Panels | 2d | 2025-10-08 | 2025-10-08 | PH08.DAHU.1180 | 2025-04-18 | 2025-04-21 |  | 02 | 1 |

| ID | WBS | Activity | Duration | Start | Finish | Predecessors | Planned start | Planned finish | user_text | 06 -GC - Building Levels | 05 -GC - Building Phase |
| --- | --- | --- | --- | --- | --- | --- | --- | --- | --- | --- | --- |
|  | 2 | **DAHU Gallery South** |  | 2025-10-08 | 2025-10-08 |  |  |  |  |  |  |
| PH08.DAHU.1430 |  | DAHU South Install fire protection and VESDA | 2d | 2025-10-08 | 2025-10-08 | PH08.M.1000 SS | 2024-12-30 | 2024-12-31 | DAHU North and South will | 02 | 1 |
| PH08.DAHU.1440 |  | DAHU South Install IW Piping | 4d | 2025-10-08 | 2025-10-08 | PH08.M.1000 SS | 2024-12-30 | 2025-01-03 | work simutaneously | 02 | 1 |
| PH08.DAHU.1450 |  | DAHU South Install Outside Air Reference Piping | 3d | 2025-10-08 | 2025-10-08 | PH08.DAHU.1440 FF | 2024-12-31 | 2025-01-03 |  | 02 | 1 |
| PH08.DAHU.1460 |  | DAHU South Frame DAHU wall and CSH catwalk | 6d | 2025-10-08 | 2025-10-08 | PH08.M.1000 SS | 2024-12-30 | 2025-01-07 |  | 02 | 1 |
| PH08.DAHU.1470 |  | DAHU South CSH Fire protection/alarm and VESDA rough-in | 3d | 2025-10-08 | 2025-10-08 | PH08.DAHU.1460 | 2025-01-21 | 2025-01-23 |  | 02 | 1 |
| PH08.DAHU.1480 |  | DAHU South CSH Electrical rough-in | 3d | 2025-10-08 | 2025-10-08 | PH08.DAHU.1460 SS | 2024-12-30 | 2025-01-02 |  | 02 | 1 |
| PH08.DAHU.1490 |  | DAHU South CSH In wall inspection | 1d | 2025-10-08 | 2025-10-08 | PH08.DAHU.1480, PH08.DAHU.1470 FF, PH08.DAHU.1470 | 2025-01-24 | 2025-01-24 |  | 02 | 1 |
| PH08.DAHU.1500 |  | DAHU South Install CSH drywall | 6d | 2025-10-08 | 2025-10-08 | PH08.DAHU.1810, PH08.DAHU.1490 | 2025-01-27 | 2025-02-03 |  | 02 | 1 |
| PH08.DAHU.1510 |  | DAHU South Finish CSH drywall | 10d | 2025-10-08 | 2025-10-08 | PH08.DAHU.1500 | 2025-02-10 | 2025-02-24 |  | 02 | 1 |
| PH08.DAHU.1520 |  | DAHU South Paint CSH drywall | 4d | 2025-10-08 | 2025-10-08 | PH08.DAHU.1510 | 2025-02-25 | 2025-02-28 |  | 02 | 1 |
| PH08.DAHU.1530 |  | DAHU South Install DAHUs | 2d | 2025-10-08 | 2025-10-08 | PH08.DAHU.1520, PH08.DAHU.1430, PH08.PR.1010 | 2025-03-03 | 2025-03-04 |  | 02 | 1 |
| PH08.DAHU.1540 |  | DAHU South Install CSH railing | 2d | 2025-10-08 | 2025-10-08 | PH08.DAHU.1530 | 2025-03-05 | 2025-03-06 |  | 02 | 1 |
| PH08.DAHU.1560 |  | DAHU South Make DAHU plumbing connections | 5d | 2025-10-08 | 2025-10-08 | PH08.DAHU.1760 SS+2d, PH08.DAHU.1530 | 2025-03-07 | 2025-03-13 |  | 02 | 1 |
| PH08.DAHU.1600 |  | DAHU South Make DAHU electrical connections | 2d | 2025-10-08 | 2025-10-08 | PH08.DAHU.1530 | 2025-03-14 | 2025-03-17 |  | 02 | 1 |
| PH08.DAHU.1610 |  | DAHU South Make DAHU controls connections | 3d | 2025-10-08 | 2025-10-08 | PH08.DAHU.1600 | 2025-03-18 | 2025-03-20 |  | 02 | 1 |
| PH08.DAHU.1630 |  | DAHU South Install CSH ladders | 2d | 2025-10-08 | 2025-10-08 | PH08.DAHU.1610 | 2025-03-24 | 2025-03-25 |  | 02 | 1 |
| PH08.DAHU.1640 |  | DAHU South Clean DAHU gallery and CSH | 2d | 2025-10-08 | 2025-10-08 | PH08.DAHU.1610, PH08.DAHU.1800, PH08.DAHU.1630, PH08.DAHU.1540, PH08.DAHU.1600 | 2025-04-21 | 2025-04-22 |  | 02 | 1 |
| PH08.DAHU.1740 |  | DAHU South Coredrilling On 2nd Floor | 5d | 2025-10-08 | 2025-10-08 | PH08.M.1000 SS | 2024-12-30 | 2025-01-06 | DAHU North and South will | 02 | 1 |
| PH08.DAHU.1750 |  | DAHU South Install Floor Drains 2nd Floor | 2d | 2025-10-08 | 2025-10-08 | PH08.DAHU.1740 | 2025-01-21 | 2025-01-22 | DAHU North and South will | 02 | 1 |
| PH08.DAHU.1760 |  | DAHU South Install IW Drops | 3d | 2025-10-08 | 2025-10-08 | PH08.DAHU.1530, PH08.DAHU.1440 | 2025-03-05 | 2025-03-07 | work simutaneously | 02 | 1 |
| PH08.DAHU.1770 |  | DAHU South Install Sprinkler Lines | 4d | 2025-10-08 | 2025-10-08 | PH08.DAHU.1530 | 2025-03-05 | 2025-03-10 |  | 02 | 1 |
| PH08.DAHU.1800 |  | DAHU South Install VESDA Panels | 2d | 2025-10-08 | 2025-10-08 | PH08.DAHU.1610 | 2025-03-31 | 2025-04-01 |  | 02 | 1 |
| PH08.DAHU.1810 |  | DAHU South Concrete Infill 2nd Floor | 2d | 2025-10-08 | 2025-10-08 | PH08.DAHU.1750 | 2025-01-23 | 2025-01-24 | DAHU North and South will | 02 | 1 |

| ID | WBS | Activity | Duration | Start | Finish | Predecessors | Planned start | Planned finish | 06 -GC - Building Levels | 05 -GC - Building Phase | user_text |
| --- | --- | --- | --- | --- | --- | --- | --- | --- | --- | --- | --- |
|  | 6 | **Data Hall Gallery** |  | 2025-10-08 | 2025-10-08 |  |  |  |  |  |  |
| PH08.DH.1000 |  | Data Hall Install upper temp wall | 2d | 2025-10-08 | 2025-10-08 | PH08.DH.1050 SS | 2025-01-21 | 2025-01-22 | 02 | 1 |  |
| PH08.DH.1010 |  | Data Hall Rough-in electrical for exhaust fans | 5d | 2025-10-08 | 2025-10-08 | PH08.M.1000 SS | 2024-12-30 | 2025-01-06 | 02 | 1 |  |
| PH08.DH.1020 |  | Data Hall Install exhaust fan drip pans | 5d | 2025-10-08 | 2025-10-08 | PH08.DH.1010 SS+2d | 2025-01-02 | 2025-01-08 | 02 | 1 |  |
| PH08.DH.1030 |  | Data Hall Install Fire Protection (high) | 5d | 2025-10-08 | 2025-10-08 | PH08.DH.1020 SS+3d | 2025-01-21 | 2025-01-27 | 02 | 1 |  |
| PH08.DH.1040 |  | Data Hall Pipe exhaust fans drip pans | 4d | 2025-10-08 | 2025-10-08 | PH08.DH.1020 | 2025-01-21 | 2025-01-24 | 02 | 1 |  |
| PH08.DH.1050 |  | Data Hall Layout and frame B/E/3.5 line walls | 5d | 2025-10-08 | 2025-10-08 | PH08.M.1000 SS | 2024-12-30 | 2025-01-06 | 02 | 1 |  |
| PH08.DH.1060 |  | Data Hall In wall rough-in | 5d | 2025-10-08 | 2025-10-08 | PH08.DH.1050 SS | 2024-12-30 | 2025-01-06 | 02 | 1 |  |
| PH08.DH.1070 |  | Data Hall In wall inspection | 1d | 2025-10-08 | 2025-10-08 | PH08.DH.1060 | 2025-01-21 | 2025-01-21 | 02 | 1 |  |
| PH08.DH.1080 |  | Data Hall Install Drywall on B/E/3.5 line walls | 5d | 2025-10-08 | 2025-10-08 | PH08.DH.1070 | 2025-01-22 | 2025-01-28 | 02 | 1 |  |
| PH08.DH.1090 |  | Data Hall Finish B/E/3.5 line walls | 7d | 2025-10-08 | 2025-10-08 | PH08.DH.1460, PH08.DH.1080 | 2025-01-29 | 2025-02-06 | 02 | 1 |  |
| PH08.DH.1140 |  | Data Hall Install Lower temp wall and doors | 3d | 2025-10-08 | 2025-10-08 | PH08.DH.1290, PH08.DH.1000, PH08.DH.1230, PH08.DH.1050 SS | 2025-03-31 | 2025-04-02 | 02 | 1 |  |
| PH08.DH.1150 |  | Data Hall Install return air dampers | 3d | 2025-10-08 | 2025-10-08 | PH08.DH.1380 SS, PH08.DH.1090 | 2025-02-07 | 2025-02-11 | 02 | 1 |  |
| PH08.DH.1160 |  | Data Hall Install supply air dampers | 3d | 2025-10-08 | 2025-10-08 | PH08.DH.1150 | 2025-02-12 | 2025-02-14 | 02 | 1 |  |
| PH08.DH.1170 |  | Data Hall Install fire protection (low) | 5d | 2025-10-08 | 2025-10-08 | PH08.DH.1180, PH08.DH.1150 | 2025-02-12 | 2025-02-19 | 02 | 1 |  |
| PH08.DH.1180 |  | Data Hall Install Racking | 8d | 2025-10-08 | 2025-10-08 | PH08.DH.1040, PH08.DH.1450, PH08.DH.1440, PH08.DH.1080, PH08.DH.1030, PH08.PR.1000 | 2025-01-31 | 2025-02-11 | 02 | 1 |  |
| PH08.DH.1190 |  | Data Hall Install DAHU feeder tray | 10d | 2025-10-08 | 2025-10-08 | PH08.DH.1180 | 2025-02-12 | 2025-02-26 | 02 | 1 |  |
| PH08.DH.1200 |  | Data Hall Pull DAHU feeders | 2d | 2025-10-08 | 2025-10-08 | PH08.DH.1190 | 2025-04-07 | 2025-04-08 | 02 | 1 |  |
| PH08.DH.1210 |  | Data Hall Install vertical communication risers | 3d | 2025-10-08 | 2025-10-08 | PH08.DH.1310 | 2025-03-26 | 2025-03-28 | 02 | 1 |  |
| PH08.DH.1220 |  | Data Hall Install guardrails at risers | 2d | 2025-10-08 | 2025-10-08 | PH08.DH.1210 | 2025-03-31 | 2025-04-01 | 02 | 1 |  |
| PH08.DH.1230 |  | Data Hall Install ACT grid | 4d | 2025-10-08 | 2025-10-08 | PH08.DH.1500, PH08.DH.1270 | 2025-02-18 | 2025-02-21 | 02 | 1 |  |
| PH08.DH.1240 |  | Data Hall Electrical ceiling rough-in | 0d | 2025-10-08 | 2025-10-08 | PH08.DH.1470, PH08.DH.1170, PH08.DH.1230 FF | 2025-03-24 | 2025-03-24 | 02 | 1 |  |
| PH08.DH.1250 |  | Data Hall Install Fire protection Sprinkler Heads | 4d | 2025-10-08 | 2025-10-08 | PH08.DH.1230 FF | 2025-02-26 | 2025-03-03 | 02 | 1 |  |
| PH08.DH.1260 |  | Data Hall Fire alarm and VESDA rough-in | 4d | 2025-10-08 | 2025-10-08 | PH08.DH.1230 | 2025-03-28 | 2025-04-02 | 02 | 1 |  |
| PH08.DH.1270 |  | Data Hall Install upper twin wall | 5d | 2025-10-08 | 2025-10-08 | PH08.DH.1180 SS+3d | 2025-02-05 | 2025-02-11 | 02 | 1 |  |
| PH08.DH.1280 |  | Data Hall Install Ceiling Tiles | 3d | 2025-10-08 | 2025-10-08 | PH08.DH.1510, PH08.DH.1230, PH08.DH.1250, PH08.DH.1240, PH08.DH.1270 | 2025-04-07 | 2025-04-09 | 02 | 1 |  |
| PH08.DH.1290 |  | Data Hall Install Basket Tray | 3d | 2025-10-08 | 2025-10-08 | PH08.DH.1310 | 2025-03-27 | 2025-03-31 | 02 | 1 | Changed from 15 to 10 |
| PH08.DH.1300 |  | Data Hall Pull branch circuit and PDC feeders | 5d | 2025-10-08 | 2025-10-08 | PH08.EA.2030 SS, PH08.DH.1290 FF | 2025-03-31 | 2025-04-04 | 02 | 1 | Changed from 15 to 10 |
| PH08.DH.1310 |  | Data Hall Install PDC cabinets | 3d | 2025-10-08 | 2025-10-08 | PH08.DH.1230, PH08.PR.1100 | 2025-03-24 | 2025-03-26 | 02 | 1 |  |
| PH08.DH.1320 |  | Data Hall Terminate PDC cabinets | 5d | 2025-10-08 | 2025-10-08 | PH08.DH.1310, PH08.DH.1300 FF+3d | 2025-04-08 | 2025-04-14 | 02 | 1 |  |
| PH08.DH.1330 |  | Data Hall Install PDC Whips and labels | 5d | 2025-10-08 | 2025-10-08 | PH08.DH.1290, PH08.PR.1100 | 2025-03-31 | 2025-04-04 | 02 | 1 | Data hall is driving out the |
| PH08.DH.1340 |  | Data Hall Perform PDC Whip Checks | 2d | 2025-10-08 | 2025-10-08 | PH08.DH.1330, PH08.DH.1320 | 2025-04-15 | 2025-04-16 | 02 | 1 | NEA data in the milestones |
| PH08.DH.1350 |  | Data Hall Install lower twin wall and doors | 5d | 2025-10-08 | 2025-10-08 | PH08.DH.1360 SS, PH08.DH.1180, PH08.DH.1050 SS | 2025-04-17 | 2025-04-23 | 02 | 1 | Changed from 7 to 5 |
| PH08.DH.1360 |  | Data Hall Install Perfect Positioning | 2d | 2025-10-08 | 2025-10-08 | PH08.DH.1320, PH08.DH.1340 | 2025-04-17 | 2025-04-18 | 02 | 1 | Must complete by 10/23/23 |
| PH08.DH.1370 |  | Data Hall Clean data hall | 1d | 2025-10-08 | 2025-10-08 | PH08.DH.1490, PH08.DH.1480, PH08.DH.1280, PH08.DH.1140, PH08.DH.1220, PH08.DH.1360, PH08.DH.1350, PH08.DH.1050 SS | 2025-04-21 | 2025-04-21 | 02 | 1 |  |
| PH08.DH.1380 |  | Data Hall Paint B/E/3.5 line walls | 5d | 2025-10-08 | 2025-10-08 | PH08.DH.1090 | 2025-02-07 | 2025-02-13 | 02 | 1 |  |
| PH08.DH.1430 |  | Data Hall Install High VESDA Pipes | 4d | 2025-10-08 | 2025-10-08 | PH08.DH.1030 | 2025-01-28 | 2025-01-31 | 02 | 1 |  |
| PH08.DH.1440 |  | Data Hall Install Fire Protection (Low) | 5d | 2025-10-08 | 2025-10-08 | PH08.DH.1030 SS+2d | 2025-01-23 | 2025-01-29 | 02 | 1 |  |
| PH08.DH.1450 |  | Data Hall Hang Wire for Ceiling Grid | 4d | 2025-10-08 | 2025-10-08 | PH08.DH.1440 SS+2d | 2025-01-27 | 2025-01-30 | 02 | 1 |  |
| PH08.DH.1460 |  | Data Hall Install Dampers/Screens | 3d | 2025-10-08 | 2025-10-08 | PH08.DH.1080 SS | 2025-01-22 | 2025-01-24 | 02 | 1 |  |
| PH08.DH.1470 |  | Data Hall Install BMS Panel | 3d | 2025-10-08 | 2025-10-08 | PH08.DH.1090 | 2025-02-07 | 2025-02-11 | 02 | 1 |  |
| PH08.DH.1480 |  | Data Hall Install VESDA Panels | 2d | 2025-10-08 | 2025-10-08 | PH08.DH.1260, PH08.DH.1280, PH08.DH.1500, PH08.DH.1050 SS | 2025-04-10 | 2025-04-11 | 02 | 1 | NEA data in the milestones |
| PH08.DH.1490 |  | Data Hall Pull & Terminate VESDA Wiring | 2d | 2025-10-08 | 2025-10-08 | PH08.DH.1480 | 2025-04-14 | 2025-04-15 | 02 | 1 | NEA data in the milestones |
| PH08.DH.1500 |  | Data Hall Install Lower VESDA Pipes | 4d | 2025-10-08 | 2025-10-08 | PH08.DH.1430 | 2025-02-03 | 2025-02-06 | 02 | 1 |  |
| PH08.DH.1510 |  | Data Hall Install Back Draft Damper | 4d | 2025-10-08 | 2025-10-08 | PH08.DH.1230 FF | 2025-02-26 | 2025-03-03 | 02 | 1 |  |
| PH08.DH.1520 |  | Data Hall Install BMS/EPMS | 5d | 2025-10-08 | 2025-10-08 | PH08.DH.1210 | 2025-03-31 | 2025-04-04 | 02 | 1 |  |

| ID | WBS | Activity | Duration | Start | Finish | Predecessors | Planned start | Planned finish | Constraint | Calendar | user_text | 06 -GC - Building Levels | 05 -GC - Building Phase | SCHDULE UPDATE |
| --- | --- | --- | --- | --- | --- | --- | --- | --- | --- | --- | --- | --- | --- | --- |
|  | 7 | **Startup and Commissioning** |  | 2025-10-08 | 2025-10-08 |  |  |  |  |  |  |  |  |  |
| PH08.SU.1000 |  | OWNER FOD Walks | 2d | 2025-10-08 | 2025-10-08 | PH08.DAHU.1530, PH08.PR.1130, PH08.GEN.1120, PH08.XFMR.1100, PH08.GEN.1110, PH08.XFMR.1110, PH08.DAHU.1120 | 2025-04-14 | 2025-04-15 | start on or after 2025-04-14 |  | Must begin by 10/09/23 | 02 | 1 |  |
| PH08.SU.1010 |  | Energization | 2d | 2025-10-08 | 2025-10-08 | PH08.SU.1000 FF+1d | 2025-04-15 | 2025-04-16 |  |  | Must complete by 10/16/23 | 02 | 1 |  |
| PH08.SU.1030 |  | L4-L5 Commissioning | 10d | 2025-10-08 | 2025-10-08 | ISSU26.10 FF, PH08.SU.1010, PH08.SU.1050, PH08.DH.1370, PH08.M.1070 | 2025-06-09 | 2025-06-20 |  |  |  | 02 | 1 |  |
| PH08.SU.1040 |  | Comissioning Complete | 1d | 2025-10-08 | 2025-10-08 | PH08.SU.1030 | 2025-06-30 | 2025-06-30 |  |  |  | 02 | 1 |  |
| PH08.SU.1050 |  | Startup activities for H2C | 4d | 2025-10-08 | 2025-10-08 | PH08.SU.1010 FF, PH08.M.1060 FF | 2025-04-29 | 2025-05-02 |  |  |  | 02 | 1 |  |
|  | INSPECTIONS | **Final Inspections** |  | 2025-10-08 | 2025-10-08 |  |  |  |  |  |  |  |  |  |
| PH08.1000 |  | Fire Protection Final Inspection | 2d | 2025-10-08 | 2025-10-08 | PH08.DAHU.1770, PH08.EA.136, PH08.DAHU.1050, PH08.DAHU.1430, PH08.DH.1250, PH08.SU.1010, PH08.EA.2070, PH08.DAHU.1200, PH08.DAHU.1640, PH08.DH.1370 | 2025-04-23 | 2025-04-24 |  |  | Must complete by 10/16/23 | 02 | 1 |  |
| PH08.1010 |  | Electrical Final Inspection | 2d | 2025-10-08 | 2025-10-08 | PH08.SU.1010, PH08.EA.2070, PH08.DAHU.1200, PH08.DAHU.1640, PH08.DH.1370 | 2025-04-23 | 2025-04-24 |  |  | Must complete by 10/16/23 | 02 | 1 |  |
| PH08.1020 |  | Fire Alarm Final Inspection | 2d | 2025-10-08 | 2025-10-08 | PH08.EA.2140, PH08.SU.1010, PH08.EA.2070, PH08.DAHU.1200, PH08.DAHU.1640, PH08.DH.1370 | 2025-04-23 | 2025-04-24 |  |  | Must complete by 10/16/23 | 02 | 1 |  |
| PH08.1030 |  | Mechanical Final Inspection | 2d | 2025-10-08 | 2025-10-08 | PH08.SU.1010, PH08.EA.2070, PH08.DAHU.1200, PH08.DAHU.1640, PH08.DH.1370 | 2025-04-23 | 2025-04-24 |  |  | Must complete by 10/16/23 | 02 | 1 |  |
| PH08.1040 |  | Plumbing Final Inspection | 2d | 2025-10-08 | 2025-10-08 | PH08.SU.1010, PH08.EA.2070, PH08.DAHU.1200, PH08.DAHU.1640, PH08.DH.1370 | 2025-04-23 | 2025-04-24 |  |  | Must complete by 10/16/23 | 02 | 1 |  |
| PH08.1050 |  | Special Inspections Sign-off | 2d | 2025-10-08 | 2025-10-08 | PH08.M.1070 | 2025-06-09 | 2025-06-10 |  |  | Must complete by 10/16/23 | 02 | 1 |  |
|  | PH9 | **Phase 9 Construction** |  | 2025-10-08 | 2025-10-08 |  |  |  |  |  |  |  |  |  |
|  | 2 | **Site** |  | 2025-10-08 | 2025-10-08 |  |  |  |  |  |  |  |  |  |
|  | 2 | **Generator Yard** |  | 2025-10-08 | 2025-10-08 |  |  |  |  |  |  |  |  |  |
|  | 2 | **Generators-Phase 1** |  | 2025-10-08 | 2025-10-08 |  |  |  |  |  |  |  |  |  |
| PH09.GEN.1100 |  | Gen Yard Install generators | 2d | 2025-10-08 | 2025-10-08 | PH2-10.GEN.1210, PH09.PR.1050 | 2025-01-21 | 2025-01-22 |  |  |  | 02 | 1 | ELIASE |
| PH09.GEN.1110 |  | Gen Yard Anchor generators | 2d | 2025-10-08 | 2025-10-08 | PH09.GEN.1100 | 2025-01-27 | 2025-01-28 |  |  |  | 02 | 1 | ELIASE |
| PH09.GEN.1120 |  | Gen Yard Install cable bus from generator to electrical room | 10d | 2025-10-08 | 2025-10-08 | PH09.XFMR.1100 SS, PH09.GEN.1110, PH09.PR.1160 | 2025-01-29 | 2025-02-11 |  |  |  | 02 | 1 | ELIASE |
| PH09.GEN.1130 |  | Gen Yard Install generators Exhaust Duct | 2d | 2025-10-08 | 2025-10-08 | PH09.GEN.1100 | 2025-01-23 | 2025-01-24 |  |  |  | 02 | 1 | ELIASE |
|  | 4 | **MV Transformers-Phase 1** |  | 2025-10-08 | 2025-10-08 |  |  |  |  |  |  |  |  |  |
| PH09.XFMR.1100 |  | XFMR Install cable bus to electrical room | 8d | 2025-10-08 | 2025-10-08 | PH09.PR.1160, PH09.XFMR.1120, PH04.XFMR.1100 SS | 2025-01-25 | 2025-02-03 |  | Calendar 06 - 6 Day Work Week w/ Mass. Holidays |  | 02 | 1 | ELIASE |
| PH09.XFMR.1110 |  | XFMR Pull to MV SWGR | 5d | 2025-10-08 | 2025-10-08 | PH09.PR.1040 | 2025-01-31 | 2025-02-06 |  |  |  | 02 | 1 | ELIASE |
| PH09.XFMR.1120 |  | XFMR Terminate to MV SWGR | 5d | 2025-10-08 | 2025-10-08 | PH09.XFMR.1110 | 2025-02-07 | 2025-02-13 |  |  |  | 02 | 1 | ELIASE |

| ID | WBS | Activity | Duration | Start | Finish | Predecessors | Planned start | Planned finish | 06 -GC - Building Levels | 05 -GC - Building Phase | user_text |
| --- | --- | --- | --- | --- | --- | --- | --- | --- | --- | --- | --- |
|  | 3 | **Electrical Room E21.4** |  | 2025-10-08 | 2025-10-08 |  |  |  |  |  |  |
| PH09.EA.136 |  | ER E1.4 Install sprinkler heads | 5d | 2025-10-08 | 2025-10-08 | PH09.EA.1860 | 2025-02-06 | 2025-02-12 | 02 | 1 |  |
| PH09.EA.1860 |  | ER E1.4 Install fire protection | 1d | 2025-10-08 | 2025-10-08 | PH09.EA.1960 | 2025-02-05 | 2025-02-05 | 02 | 1 | All electrical rooms will |
| PH09.EA.1870 |  | ER E1.4 Layout and frame walls | 2d | 2025-10-08 | 2025-10-08 | PH09.M.1000 SS | 2024-12-30 | 2024-12-31 | 02 | 1 | start simutaneously |
| PH09.EA.1880 |  | ER E1.4 Install OAD ductwork Transitions | 6d | 2025-10-08 | 2025-10-08 | PH09.EA.2090, PH09.M.1000 SS | 2025-01-02 | 2025-01-09 | 02 | 1 |  |
| PH09.EA.1890 |  | ER E1.4 Electrical rough-in | 3d | 2025-10-08 | 2025-10-08 | PH09.EA.1870 | 2025-01-10 | 2025-01-14 | 02 | 1 |  |
| PH09.EA.1900 |  | ER E1.4 Mechanical rough-in | 3d | 2025-10-08 | 2025-10-08 | PH09.EA.1870 | 2025-01-10 | 2025-01-14 | 02 | 1 |  |
| PH09.EA.1910 |  | ER E1.4 Fire alarm rough-in | 3d | 2025-10-08 | 2025-10-08 | PH09.EA.1870 | 2025-01-10 | 2025-01-14 | 02 | 1 |  |
| PH09.EA.1920 |  | ER E1.4 Plumbing rough-in | 3d | 2025-10-08 | 2025-10-08 | PH09.EA.1870 | 2025-01-10 | 2025-01-14 | 02 | 1 |  |
| PH09.EA.1930 |  | ER E1.4 In wall inspection | 1d | 2025-10-08 | 2025-10-08 | PH09.EA.1910, PH09.EA.1900, PH09.EA.1890, PH09.EA.1920 | 2025-01-21 | 2025-01-21 | 02 | 1 |  |
| PH09.EA.1940 |  | ER E1.4 Install drywall | 3d | 2025-10-08 | 2025-10-08 | PH09.EA.1930, PH09.EA.1880 | 2025-01-23 | 2025-01-27 | 02 | 1 |  |
| PH09.EA.1950 |  | ER E1.4 Finish drywall | 5d | 2025-10-08 | 2025-10-08 | PH09.EA.1940 | 2025-01-28 | 2025-02-03 | 02 | 1 |  |
| PH09.EA.1960 |  | ER E1.4 Paint drywall | 2d | 2025-10-08 | 2025-10-08 | PH09.EA.1950 | 2025-02-03 | 2025-02-04 | 02 | 1 |  |
| PH09.EA.1970 |  | ER E1.4 Install OAD dampers + Ductwork | 3d | 2025-10-08 | 2025-10-08 | PH09.EA.1960, PH09.EA.1950 | 2025-02-05 | 2025-02-07 | 02 | 1 |  |
| PH09.EA.1980 |  | ER E1.4 Install split units | 3d | 2025-10-08 | 2025-10-08 | PH09.EA.1970 | 2025-02-10 | 2025-02-12 | 02 | 1 |  |
| PH09.EA.1990 |  | ER E1.4 Install Busway and OH electrical supports | 5d | 2025-10-08 | 2025-10-08 | PH09.EA.1960 SS, PH09.EA.1950 | 2025-02-04 | 2025-02-10 | 02 | 1 |  |
| PH09.EA.2000 |  | ER E1.4 Install Electrical SWGR | 2d | 2025-10-08 | 2025-10-08 | PH09.EA.2130, PH09.EA.1990, PH09.PR.1070 | 2025-02-24 | 2025-02-25 | 02 | 1 |  |
| PH09.EA.2010 |  | ER E1.4 Install Feeder tray | 0d | 2025-10-08 | 2025-10-08 | PH09.EA.1990, PH09.EA.2000 | 2025-03-24 | 2025-03-24 | 02 | 1 |  |
| PH09.EA.2020 |  | ER E1.4 Install electrical panels and disconnects | 5d | 2025-10-08 | 2025-10-08 | PH09.EA.2010, PH09.PR.1170, PH09.PR.1190 | 2025-03-24 | 2025-03-28 | 02 | 1 |  |
| PH09.EA.2030 |  | ER E1.4 Pull and terminate feeders | 2d | 2025-10-08 | 2025-10-08 | PH09.EA.2010 SS+2d, PH09.EA.2010 FF | 2025-03-31 | 2025-04-01 | 02 | 1 |  |
| PH09.EA.2040 |  | ER E1.4 Install lighting | 3d | 2025-10-08 | 2025-10-08 | PH09.EA.2020, PH09.EA.2030 | 2025-04-07 | 2025-04-09 | 02 | 1 |  |
| PH09.EA.2050 |  | ER E1.4 Install accessories (shepherds hook, fire ext) | 1d | 2025-10-08 | 2025-10-08 | PH09.EA.2040 FF, PH09.EA.2040 | 2025-04-21 | 2025-04-21 | 02 | 1 |  |
| PH09.EA.2070 |  | ER E1.4 Clean electrical room | 1d | 2025-10-08 | 2025-10-08 | PH09.EA.2150, PH09.EA.2120, PH09.EA.2040, PH09.EA.1980, PH09.EA.2050 FF | 2025-04-21 | 2025-04-21 | 02 | 1 |  |
| PH09.EA.2090 |  | ER E1.4 Install Plenum on Louvers | 2d | 2025-10-08 | 2025-10-08 | PH09.M.1000 SS | 2024-12-30 | 2024-12-31 | 02 | 1 | start simutaneously |
| PH09.EA.2100 |  | ER E1.4 Install Vesda Piping System | 5d | 2025-10-08 | 2025-10-08 | PH09.EA.1960 | 2025-02-05 | 2025-02-11 | 02 | 1 |  |
| PH09.EA.2110 |  | ER E1.4 Install Refrigerantion Lines | 5d | 2025-10-08 | 2025-10-08 | PH09.EA.1960 | 2025-02-05 | 2025-02-11 | 02 | 1 |  |
| PH09.EA.2120 |  | ER E1.4 Install ERV | 2d | 2025-10-08 | 2025-10-08 | PH09.EA.2030, PH09.EA.2110 | 2025-04-07 | 2025-04-08 | 02 | 1 |  |
| PH09.EA.2130 |  | ER E1.4 Install Cable Trays | 5d | 2025-10-08 | 2025-10-08 | PH09.EA.1980 SS+2d, PH09.EA.1980 FF | 2025-02-12 | 2025-02-19 | 02 | 1 |  |
| PH09.EA.2140 |  | ER E1.4 Install Fire Alarm + Vesda Panel | 3d | 2025-10-08 | 2025-10-08 | PH09.EA.2100 | 2025-02-12 | 2025-02-14 | 02 | 1 |  |
| PH09.EA.2150 |  | ER E1.4 Install Control BMS & EPMS | 4d | 2025-10-08 | 2025-10-08 | PH09.EA.2030 | 2025-04-07 | 2025-04-10 | 02 | 1 |  |

| ID | WBS | Activity | Duration | Start | Finish | Predecessors | Planned start | Planned finish | user_text | 06 -GC - Building Levels | 05 -GC - Building Phase |
| --- | --- | --- | --- | --- | --- | --- | --- | --- | --- | --- | --- |
|  | 5 | **DAHU Galleries** |  | 2025-10-08 | 2025-10-08 |  |  |  |  |  |  |
|  | 1 | **DAHU Gallery North** |  | 2025-10-08 | 2025-10-08 |  |  |  |  |  |  |
| PH09.DAHU.1000 |  | DAHU North Install Fire Protection & VESDA | 2d | 2025-10-08 | 2025-10-08 | PH09.M.1000 SS | 2024-12-30 | 2024-12-31 | DAHU North and South will | 02 | 1 |
| PH09.DAHU.1010 |  | DAHU North Install IW Piping | 4d | 2025-10-08 | 2025-10-08 | PH09.M.1000 SS | 2024-12-30 | 2025-01-03 | work simutaneously | 02 | 1 |
| PH09.DAHU.1020 |  | DAHU North Install Outside Air Reference Piping | 3d | 2025-10-08 | 2025-10-08 | PH09.DAHU.1010 SS+2d | 2025-01-02 | 2025-01-06 |  | 02 | 1 |
| PH09.DAHU.1030 |  | DAHU North Frame DAHU wall and CSH catwalk | 6d | 2025-10-08 | 2025-10-08 | PH09.M.1000 SS | 2024-12-30 | 2025-01-07 |  | 02 | 1 |
| PH09.DAHU.1040 |  | DAHU North CSH Electrical rough-in | 5d | 2025-10-08 | 2025-10-08 | PH09.DAHU.1030 SS+2d | 2025-01-02 | 2025-01-08 |  | 02 | 1 |
| PH09.DAHU.1050 |  | DAHU North CSH Fire protection/alarm and VESDA rough-in | 3d | 2025-10-08 | 2025-10-08 | PH09.DAHU.1030 SS+2d | 2025-01-02 | 2025-01-06 |  | 02 | 1 |
| PH09.DAHU.1060 |  | DAHU North CSH In wall inspection | 1d | 2025-10-08 | 2025-10-08 | PH09.DAHU.1040, PH09.DAHU.1050 FF, PH09.DAHU.1050 | 2025-01-21 | 2025-01-21 |  | 02 | 1 |
| PH09.DAHU.1070 |  | DAHU North Install CSH drywall | 6d | 2025-10-08 | 2025-10-08 | PH09.DAHU.1060 | 2025-01-22 | 2025-01-29 |  | 02 | 1 |
| PH09.DAHU.1080 |  | DAHU North Finish CSH drywall | 13d | 2025-10-08 | 2025-10-08 | PH09.DAHU.1070 | 2025-01-30 | 2025-02-18 |  | 02 | 1 |
| PH09.DAHU.1090 |  | DAHU North Install DAHUs | 2d | 2025-10-08 | 2025-10-08 | PH09.DAHU.1700, PH09.DAHU.1690, PH09.DAHU.1680, PH09.DAHU.1670, PH09.DAHU.1000, PH09.DAHU.1080, PH09.DAHU.1420, PH09.PR.1010 | 2025-03-03 | 2025-03-04 |  | 02 | 1 |
| PH09.DAHU.1100 |  | DAHU North Install CSH railing | 2d | 2025-10-08 | 2025-10-08 | PH09.DAHU.1420 | 2025-03-31 | 2025-04-01 |  | 02 | 1 |
| PH09.DAHU.1120 |  | DAHU North Pull and terminate VFDs from electrical room | 5d | 2025-10-08 | 2025-10-08 | PH09.DAHU.1090, PH09.PR.1130 | 2025-03-24 | 2025-03-28 |  | 02 | 1 |
| PH09.DAHU.1130 |  | DAHU North Make DAHU Plumbing Connections | 3d | 2025-10-08 | 2025-10-08 | PH09.DAHU.1720, PH09.DAHU.1090 | 2025-04-10 | 2025-04-14 |  | 02 | 1 |
| PH09.DAHU.1140 |  | DAHU North Install Feeder Trays (DAHU, VFD, Communications) | 5d | 2025-10-08 | 2025-10-08 | PH09.DAHU.1420, PH09.DH.1190 SS | 2025-03-24 | 2025-03-28 |  | 02 | 1 |
| PH09.DAHU.1150 |  | DAHU North Pull DAHU Feeders | 2d | 2025-10-08 | 2025-10-08 | PH09.DH.1200 SS, PH09.DAHU.1140 | 2025-04-07 | 2025-04-08 |  | 02 | 1 |
| PH09.DAHU.1160 |  | DAHU North Make DAHU Electrical Connections | 2d | 2025-10-08 | 2025-10-08 | PH09.DAHU.1150 | 2025-04-09 | 2025-04-10 |  | 02 | 1 |
| PH09.DAHU.1170 |  | DAHU North Make DAHU Controls Connections | 3d | 2025-10-08 | 2025-10-08 | PH09.DAHU.1160 | 2025-04-11 | 2025-04-15 |  | 02 | 1 |
| PH09.DAHU.1180 |  | DAHU North Install Temporary Wall | 2d | 2025-10-08 | 2025-10-08 | PH09.DAHU.1730, PH09.DAHU.1170 | 2025-04-18 | 2025-04-21 |  | 02 | 1 |
| PH09.DAHU.1190 |  | DAHU North Install CSH ladders | 2d | 2025-10-08 | 2025-10-08 | PH09.DAHU.1170 | 2025-04-16 | 2025-04-17 |  | 02 | 1 |
| PH09.DAHU.1200 |  | DAHU North Clean DAHU Gallery and CSH | 2d | 2025-10-08 | 2025-10-08 | PH09.DAHU.1180 FF, PH09.DAHU.1190, PH09.DAHU.1100, PH09.DAHU.1160 | 2025-04-21 | 2025-04-22 |  | 02 | 1 |
| PH09.DAHU.1420 |  | DAHU North Paint CSH drywall | 5d | 2025-10-08 | 2025-10-08 | PH09.DAHU.1080 | 2025-02-24 | 2025-02-28 |  | 02 | 1 |
| PH09.DAHU.1650 |  | DAHU North Coredrilling On 2nd Floor | 5d | 2025-10-08 | 2025-10-08 | PH09.M.1000 SS | 2024-12-30 | 2025-01-06 | DAHU North and South will | 02 | 1 |
| PH09.DAHU.1660 |  | DAHU North Install Floor Drains 2nd Floor | 2d | 2025-10-08 | 2025-10-08 | PH09.DAHU.1650 | 2025-01-21 | 2025-01-22 | DAHU North and South will | 02 | 1 |
| PH09.DAHU.1670 |  | DAHU North Concrete Infill 2nd Floor | 2d | 2025-10-08 | 2025-10-08 | PH09.DAHU.1660 | 2025-01-23 | 2025-01-24 | DAHU North and South will | 02 | 1 |
| PH09.DAHU.1680 |  | DAHU North Install OAD Damper | 4d | 2025-10-08 | 2025-10-08 | PH09.DAHU.1010 | 2025-01-21 | 2025-01-24 |  | 02 | 1 |
| PH09.DAHU.1690 |  | DAHU North Install Sprinkler Feed Lines | 4d | 2025-10-08 | 2025-10-08 | PH09.DAHU.1680 | 2025-01-27 | 2025-01-30 |  | 02 | 1 |
| PH09.DAHU.1700 |  | DAHU North Install Low Point Drain | 4d | 2025-10-08 | 2025-10-08 | PH09.DAHU.1690 FF | 2025-01-27 | 2025-01-30 |  | 02 | 1 |
| PH09.DAHU.1720 |  | DAHU North Install IW Drops | 3d | 2025-10-08 | 2025-10-08 | PH09.DAHU.1090 | 2025-04-07 | 2025-04-09 |  | 02 | 1 |
| PH09.DAHU.1730 |  | DAHU North Install VESDA Panels | 2d | 2025-10-08 | 2025-10-08 | PH09.DAHU.1190 | 2025-04-17 | 2025-04-18 |  | 02 | 1 |

| ID | WBS | Activity | Duration | Start | Finish | Predecessors | Planned start | Planned finish | user_text | 06 -GC - Building Levels | 05 -GC - Building Phase |
| --- | --- | --- | --- | --- | --- | --- | --- | --- | --- | --- | --- |
|  | 2 | **DAHU Gallery South** |  | 2025-10-08 | 2025-10-08 |  |  |  |  |  |  |
| PH09.DAHU.1430 |  | DAHU South Install fire protection and VESDA | 2d | 2025-10-08 | 2025-10-08 | PH09.M.1000 SS | 2024-12-30 | 2024-12-31 | DAHU North and South will | 02 | 1 |
| PH09.DAHU.1440 |  | DAHU South Install IW Piping | 4d | 2025-10-08 | 2025-10-08 | PH09.M.1000 SS | 2024-12-30 | 2025-01-03 | work simutaneously | 02 | 1 |
| PH09.DAHU.1450 |  | DAHU South Install Outside Air Reference Piping | 3d | 2025-10-08 | 2025-10-08 | PH09.DAHU.1440 FF | 2024-12-31 | 2025-01-03 |  | 02 | 1 |
| PH09.DAHU.1460 |  | DAHU South Frame DAHU wall and CSH catwalk | 6d | 2025-10-08 | 2025-10-08 | PH09.M.1000 SS | 2024-12-30 | 2025-01-07 |  | 02 | 1 |
| PH09.DAHU.1470 |  | DAHU South CSH Fire protection/alarm and VESDA rough-in | 3d | 2025-10-08 | 2025-10-08 | PH09.DAHU.1460 | 2025-01-21 | 2025-01-23 |  | 02 | 1 |
| PH09.DAHU.1480 |  | DAHU South CSH Electrical rough-in | 3d | 2025-10-08 | 2025-10-08 | PH09.DAHU.1460 SS | 2024-12-30 | 2025-01-02 |  | 02 | 1 |
| PH09.DAHU.1490 |  | DAHU South CSH In wall inspection | 1d | 2025-10-08 | 2025-10-08 | PH09.DAHU.1480, PH09.DAHU.1470 FF, PH09.DAHU.1470 | 2025-01-24 | 2025-01-24 |  | 02 | 1 |
| PH09.DAHU.1500 |  | DAHU South Install CSH drywall | 6d | 2025-10-08 | 2025-10-08 | PH09.DAHU.1810, PH09.DAHU.1490 | 2025-01-27 | 2025-02-03 |  | 02 | 1 |
| PH09.DAHU.1510 |  | DAHU South Finish CSH drywall | 10d | 2025-10-08 | 2025-10-08 | PH09.DAHU.1500 | 2025-02-04 | 2025-02-18 |  | 02 | 1 |
| PH09.DAHU.1520 |  | DAHU South Paint CSH drywall | 4d | 2025-10-08 | 2025-10-08 | PH09.DAHU.1510 | 2025-02-24 | 2025-02-27 |  | 02 | 1 |
| PH09.DAHU.1530 |  | DAHU South Install DAHUs | 2d | 2025-10-08 | 2025-10-08 | PH09.DAHU.1520, PH09.DAHU.1430, PH09.PR.1010 | 2025-02-28 | 2025-03-03 |  | 02 | 1 |
| PH09.DAHU.1540 |  | DAHU South Install CSH railing | 2d | 2025-10-08 | 2025-10-08 | PH09.DAHU.1530 | 2025-03-31 | 2025-04-01 |  | 02 | 1 |
| PH09.DAHU.1560 |  | DAHU South Make DAHU plumbing connections | 5d | 2025-10-08 | 2025-10-08 | PH09.DAHU.1760 SS+2d, PH09.DAHU.1530 | 2025-03-26 | 2025-04-01 |  | 02 | 1 |
| PH09.DAHU.1600 |  | DAHU South Make DAHU electrical connections | 2d | 2025-10-08 | 2025-10-08 | PH09.DAHU.1530, PH09.DH.1200 SS | 2025-04-07 | 2025-04-08 |  | 02 | 1 |
| PH09.DAHU.1610 |  | DAHU South Make DAHU controls connections | 3d | 2025-10-08 | 2025-10-08 | PH09.DAHU.1600 | 2025-04-09 | 2025-04-11 |  | 02 | 1 |
| PH09.DAHU.1620 |  | DAHU South Install temporary wall | 2d | 2025-10-08 | 2025-10-08 | PH09.DAHU.1610 | 2025-04-14 | 2025-04-15 |  | 02 | 1 |
| PH09.DAHU.1630 |  | DAHU South Install CSH ladders | 2d | 2025-10-08 | 2025-10-08 | PH09.DAHU.1610 | 2025-04-14 | 2025-04-15 |  | 02 | 1 |
| PH09.DAHU.1640 |  | DAHU South Clean DAHU gallery and CSH | 2d | 2025-10-08 | 2025-10-08 | PH09.DAHU.1800, PH09.DAHU.1620 FF, PH09.DAHU.1630, PH09.DAHU.1540, PH09.DAHU.1600 | 2025-04-21 | 2025-04-22 |  | 02 | 1 |
| PH09.DAHU.1740 |  | DAHU South Coredrilling On 2nd Floor | 5d | 2025-10-08 | 2025-10-08 | PH09.M.1000 SS | 2024-12-30 | 2025-01-06 | DAHU North and South will | 02 | 1 |
| PH09.DAHU.1750 |  | DAHU South Install Floor Drains 2nd Floor | 2d | 2025-10-08 | 2025-10-08 | PH09.DAHU.1740 | 2025-01-21 | 2025-01-22 | DAHU North and South will | 02 | 1 |
| PH09.DAHU.1760 |  | DAHU South Install IW Drops | 3d | 2025-10-08 | 2025-10-08 | PH09.DAHU.1530, PH09.DAHU.1440 | 2025-03-24 | 2025-03-26 | work simutaneously | 02 | 1 |
| PH09.DAHU.1770 |  | DAHU South Install Sprinkler Lines | 4d | 2025-10-08 | 2025-10-08 | PH09.DAHU.1530 | 2025-03-24 | 2025-03-27 |  | 02 | 1 |
| PH09.DAHU.1800 |  | DAHU South Install VESDA Panels | 2d | 2025-10-08 | 2025-10-08 | PH09.DAHU.1770 | 2025-04-15 | 2025-04-16 |  | 02 | 1 |
| PH09.DAHU.1810 |  | DAHU South Concrete Infill 2nd Floor | 2d | 2025-10-08 | 2025-10-08 | PH09.DAHU.1750 | 2025-01-23 | 2025-01-24 | DAHU North and South will | 02 | 1 |

| ID | WBS | Activity | Duration | Start | Finish | Predecessors | Planned start | Planned finish | 06 -GC - Building Levels | 05 -GC - Building Phase | user_text |
| --- | --- | --- | --- | --- | --- | --- | --- | --- | --- | --- | --- |
|  | 6 | **Data Hall Gallery** |  | 2025-10-08 | 2025-10-08 |  |  |  |  |  |  |
| PH09.DH.1000 |  | Data Hall Install upper temp wall | 2d | 2025-10-08 | 2025-10-08 | PH09.DH.1050 SS | 2025-01-21 | 2025-01-22 | 02 | 1 |  |
| PH09.DH.1010 |  | Data Hall Rough-in electrical for exhaust fans | 5d | 2025-10-08 | 2025-10-08 | PH09.M.1000 SS | 2024-12-30 | 2025-01-06 | 02 | 1 |  |
| PH09.DH.1020 |  | Data Hall Install exhaust fan drip pans | 5d | 2025-10-08 | 2025-10-08 | PH09.DH.1010 SS+2d | 2025-01-02 | 2025-01-08 | 02 | 1 |  |
| PH09.DH.1030 |  | Data Hall Install Fire Protection (high) | 5d | 2025-10-08 | 2025-10-08 | PH09.DH.1020 SS+3d | 2025-01-21 | 2025-01-27 | 02 | 1 |  |
| PH09.DH.1040 |  | Data Hall Pipe exhaust fans drip pans | 4d | 2025-10-08 | 2025-10-08 | PH09.DH.1020 | 2025-01-21 | 2025-01-24 | 02 | 1 |  |
| PH09.DH.1050 |  | Data Hall Layout and frame B/E/3.5 line walls | 5d | 2025-10-08 | 2025-10-08 | PH09.M.1000 SS | 2024-12-30 | 2025-01-06 | 02 | 1 |  |
| PH09.DH.1060 |  | Data Hall In wall rough-in | 5d | 2025-10-08 | 2025-10-08 | PH09.DH.1050 SS | 2024-12-30 | 2025-01-06 | 02 | 1 |  |
| PH09.DH.1070 |  | Data Hall In wall inspection | 1d | 2025-10-08 | 2025-10-08 | PH09.DH.1060 | 2025-01-21 | 2025-01-21 | 02 | 1 |  |
| PH09.DH.1080 |  | Data Hall Install Drywall on B/E/3.5 line walls | 5d | 2025-10-08 | 2025-10-08 | PH09.DH.1070 | 2025-01-22 | 2025-01-28 | 02 | 1 |  |
| PH09.DH.1090 |  | Data Hall Finish B/E/3.5 line walls | 7d | 2025-10-08 | 2025-10-08 | PH09.DH.1460, PH09.DH.1080 | 2025-01-29 | 2025-02-06 | 02 | 1 |  |
| PH09.DH.1140 |  | Data Hall Install Lower temp wall and doors | 3d | 2025-10-08 | 2025-10-08 | PH09.DH.1290, PH09.DH.1000, PH09.DH.1230, PH09.DH.1050 SS | 2025-04-07 | 2025-04-09 | 02 | 1 |  |
| PH09.DH.1150 |  | Data Hall Install return air dampers | 3d | 2025-10-08 | 2025-10-08 | PH09.DH.1380 SS, PH09.DH.1090 | 2025-02-07 | 2025-02-11 | 02 | 1 |  |
| PH09.DH.1160 |  | Data Hall Install supply air dampers | 3d | 2025-10-08 | 2025-10-08 | PH09.DH.1150 | 2025-02-12 | 2025-02-14 | 02 | 1 |  |
| PH09.DH.1170 |  | Data Hall Install fire protection (low) | 5d | 2025-10-08 | 2025-10-08 | PH09.DH.1150 | 2025-02-12 | 2025-02-19 | 02 | 1 |  |
| PH09.DH.1180 |  | Data Hall Install Racking | 8d | 2025-10-08 | 2025-10-08 | PH09.DH.1040, PH09.DH.1450, PH09.DH.1440, PH09.DH.1080, PH09.DH.1030, PH09.PR.1000 | 2025-02-18 | 2025-02-27 | 02 | 1 |  |
| PH09.DH.1190 |  | Data Hall Install DAHU feeder tray | 10d | 2025-10-08 | 2025-10-08 | PH09.DH.1180 | 2025-03-24 | 2025-04-04 | 02 | 1 |  |
| PH09.DH.1200 |  | Data Hall Pull DAHU feeders | 2d | 2025-10-08 | 2025-10-08 | PH09.DH.1190 | 2025-04-07 | 2025-04-08 | 02 | 1 |  |
| PH09.DH.1210 |  | Data Hall Install vertical communication risers | 3d | 2025-10-08 | 2025-10-08 | PH09.DH.1200 | 2025-04-09 | 2025-04-11 | 02 | 1 |  |
| PH09.DH.1220 |  | Data Hall Install guardrails at risers | 2d | 2025-10-08 | 2025-10-08 | PH09.DH.1210 | 2025-04-14 | 2025-04-15 | 02 | 1 |  |
| PH09.DH.1230 |  | Data Hall Install ACT grid | 4d | 2025-10-08 | 2025-10-08 | PH09.DH.1500, PH09.DH.1270 | 2025-02-18 | 2025-02-21 | 02 | 1 |  |
| PH09.DH.1240 |  | Data Hall Electrical ceiling rough-in | 0d | 2025-10-08 | 2025-10-08 | PH09.DH.1470, PH09.DH.1170, PH09.DH.1230 FF | 2025-03-24 | 2025-03-24 | 02 | 1 |  |
| PH09.DH.1250 |  | Data Hall Install Fire protection Sprinkler Heads | 4d | 2025-10-08 | 2025-10-08 | PH09.DH.1230 FF | 2025-02-27 | 2025-03-04 | 02 | 1 |  |
| PH09.DH.1260 |  | Data Hall Fire alarm and VESDA rough-in | 4d | 2025-10-08 | 2025-10-08 | PH09.DH.1230 | 2025-03-28 | 2025-04-02 | 02 | 1 |  |
| PH09.DH.1270 |  | Data Hall Install upper twin wall | 5d | 2025-10-08 | 2025-10-08 | PH09.DH.1500 | 2025-02-05 | 2025-02-11 | 02 | 1 |  |
| PH09.DH.1280 |  | Data Hall Install Ceiling Tiles | 4d | 2025-10-08 | 2025-10-08 | PH09.DH.1510, PH09.DH.1230, PH09.DH.1250, PH09.DH.1240, PH09.DH.1270 | 2025-04-07 | 2025-04-10 | 02 | 1 |  |
| PH09.DH.1290 |  | Data Hall Install Basket Tray | 3d | 2025-10-08 | 2025-10-08 | PH09.DH.1230 | 2025-03-27 | 2025-03-31 | 02 | 1 | Changed from 15 to 10 |
| PH09.DH.1300 |  | Data Hall Pull branch circuit and PDC feeders | 5d | 2025-10-08 | 2025-10-08 | PH09.EA.2030 SS, PH09.DH.1290 FF+4d | 2025-03-31 | 2025-04-04 | 02 | 1 | Changed from 15 to 10 |
| PH09.DH.1310 |  | Data Hall Install PDC cabinets | 3d | 2025-10-08 | 2025-10-08 | PH09.DH.1230 FF, PH09.PR.1100 | 2025-02-28 | 2025-03-04 | 02 | 1 |  |
| PH09.DH.1320 |  | Data Hall Terminate PDC cabinets | 5d | 2025-10-08 | 2025-10-08 | PH09.DH.1310, PH09.DH.1300 FF+3d | 2025-04-08 | 2025-04-14 | 02 | 1 |  |
| PH09.DH.1330 |  | Data Hall Install PDC Whips and labels | 5d | 2025-10-08 | 2025-10-08 | PH09.DH.1290, PH09.PR.1100 | 2025-04-07 | 2025-04-11 | 02 | 1 | Data hall is driving out the |
| PH09.DH.1340 |  | Data Hall Perform PDC Whip Checks | 2d | 2025-10-08 | 2025-10-08 | PH09.DH.1330, PH09.DH.1320 | 2025-04-15 | 2025-04-16 | 02 | 1 | NEA data in the milestones |
| PH09.DH.1350 |  | Data Hall Install lower twin wall and doors | 5d | 2025-10-08 | 2025-10-08 | PH09.DH.1360 SS, PH09.DH.1180, PH09.DH.1050 SS | 2025-04-17 | 2025-04-23 | 02 | 1 | Changed from 7 to 5 |
| PH09.DH.1360 |  | Data Hall Install Perfect Positioning | 2d | 2025-10-08 | 2025-10-08 | PH09.DH.1320, PH09.DH.1340 | 2025-04-17 | 2025-04-18 | 02 | 1 | Must complete by 10/23/23 |
| PH09.DH.1370 |  | Data Hall Clean data hall | 1d | 2025-10-08 | 2025-10-08 | PH09.DH.1490, PH09.DH.1480, PH09.DH.1280, PH09.DH.1140, PH09.DH.1220, PH09.DH.1360 FF, PH09.DH.1350 FF, PH09.DH.1050 SS | 2025-04-23 | 2025-04-23 | 02 | 1 |  |
| PH09.DH.1380 |  | Data Hall Paint B/E/3.5 line walls | 5d | 2025-10-08 | 2025-10-08 | PH09.DH.1090 | 2025-02-07 | 2025-02-13 | 02 | 1 |  |
| PH09.DH.1430 |  | Data Hall Install High VESDA Pipes | 4d | 2025-10-08 | 2025-10-08 | PH09.DH.1030 | 2025-01-28 | 2025-01-31 | 02 | 1 |  |
| PH09.DH.1440 |  | Data Hall Install Fire Protection (Low) | 5d | 2025-10-08 | 2025-10-08 | PH09.DH.1030 SS+2d | 2025-01-23 | 2025-01-29 | 02 | 1 |  |
| PH09.DH.1450 |  | Data Hall Hang Wire for Ceiling Grid | 4d | 2025-10-08 | 2025-10-08 | PH09.DH.1440 SS+2d | 2025-01-27 | 2025-01-30 | 02 | 1 |  |
| PH09.DH.1460 |  | Data Hall Install Dampers/Screens | 3d | 2025-10-08 | 2025-10-08 | PH09.DH.1080 SS | 2025-01-22 | 2025-01-24 | 02 | 1 |  |
| PH09.DH.1470 |  | Data Hall Install BMS Panel | 3d | 2025-10-08 | 2025-10-08 | PH09.DH.1090 | 2025-02-07 | 2025-02-11 | 02 | 1 |  |
| PH09.DH.1480 |  | Data Hall Install VESDA Panels | 2d | 2025-10-08 | 2025-10-08 | PH09.DH.1260, PH09.DH.1280, PH09.DH.1500, PH09.DH.1050 SS | 2025-04-11 | 2025-04-14 | 02 | 1 | NEA data in the milestones |
| PH09.DH.1490 |  | Data Hall Pull & Terminate VESDA Wiring | 2d | 2025-10-08 | 2025-10-08 | PH09.DH.1480 | 2025-04-15 | 2025-04-16 | 02 | 1 | NEA data in the milestones |
| PH09.DH.1500 |  | Data Hall Install Lower VESDA Pipes | 4d | 2025-10-08 | 2025-10-08 | PH09.DH.1430 | 2025-02-03 | 2025-02-06 | 02 | 1 |  |
| PH09.DH.1510 |  | Data Hall Install Back Draft Damper | 4d | 2025-10-08 | 2025-10-08 | PH09.DH.1230 FF | 2025-02-27 | 2025-03-04 | 02 | 1 |  |
| PH09.DH.1520 |  | Data Hall Install BMS/EPMS | 5d | 2025-10-08 | 2025-10-08 | PH09.DH.1210 | 2025-04-14 | 2025-04-18 | 02 | 1 |  |

| ID | WBS | Activity | Duration | Start | Finish | Predecessors | Planned start | Planned finish | Calendar | user_text | 06 -GC - Building Levels | 05 -GC - Building Phase | SCHDULE UPDATE |
| --- | --- | --- | --- | --- | --- | --- | --- | --- | --- | --- | --- | --- | --- |
|  | 7 | **Startup and Commissioning** |  | 2025-10-08 | 2025-10-08 |  |  |  |  |  |  |  |  |
| PH09.SU.1000 |  | OWNER FOD Walks | 5d | 2025-10-08 | 2025-10-08 | PH09.DAHU.1530, PH09.PR.1130, PH09.GEN.1120, PH09.XFMR.1100, PH09.GEN.1110, PH09.DAHU.1640 FF, PH09.EA.2070 FF, PH09.DAHU.1120, PH09.XFMR.1120, PH09.GEN.1130 | 2025-04-18 | 2025-04-24 |  | Must begin by 10/09/23 | 02 | 1 |  |
| PH09.SU.1010 |  | Energization | 2d | 2025-10-08 | 2025-10-08 | PH09.SU.1000 FF | 2025-04-21 | 2025-04-22 |  | Must complete by 10/16/23 | 02 | 1 |  |
| PH09.SU.1030 |  | L4-L5 Commissioning | 10d | 2025-10-08 | 2025-10-08 | ISSU26.10 FF, PH09.SU.1010, PH09.SU.1050, PH09.DH.1370, PH09.M.1070 | 2025-06-09 | 2025-06-20 |  |  | 02 | 1 |  |
| PH09.SU.1040 |  | Comissioning Complete | 1d | 2025-10-08 | 2025-10-08 | PH09.SU.1030 | 2025-06-30 | 2025-06-30 |  |  | 02 | 1 |  |
| PH09.SU.1050 |  | Startup activities for H2C | 4d | 2025-10-08 | 2025-10-08 | PH09.SU.1010 FF, PH09.M.1060 FF | 2025-04-29 | 2025-05-02 |  |  | 02 | 1 |  |
|  | INSPECTIONS | **Final Inspections** |  | 2025-10-08 | 2025-10-08 |  |  |  |  |  |  |  |  |
| PH09.1000 |  | Fire Protection Final Inspection | 2d | 2025-10-08 | 2025-10-08 | PH09.DAHU.1770, PH09.EA.136, PH09.DAHU.1050, PH09.DAHU.1430, PH09.DH.1250, PH09.SU.1010 FF, PH09.EA.2070, PH09.DAHU.1200, PH09.DAHU.1640, PH09.DH.1370 | 2025-04-24 | 2025-04-25 |  | Must complete by 10/16/23 | 02 | 1 |  |
| PH09.1010 |  | Electrical Final Inspection | 2d | 2025-10-08 | 2025-10-08 | PH09.SU.1010 FF, PH09.EA.2070, PH09.DAHU.1200, PH09.DAHU.1640, PH09.DH.1370 | 2025-04-24 | 2025-04-25 |  | Must complete by 10/16/23 | 02 | 1 |  |
| PH09.1020 |  | Fire Alarm Final Inspection | 2d | 2025-10-08 | 2025-10-08 | PH09.EA.2140, PH09.SU.1010 FF, PH09.EA.2070, PH09.DAHU.1200, PH09.DAHU.1640, PH09.DH.1370 | 2025-04-24 | 2025-04-25 |  | Must complete by 10/16/23 | 02 | 1 |  |
| PH09.1030 |  | Mechanical Final Inspection | 2d | 2025-10-08 | 2025-10-08 | PH09.SU.1010 FF, PH09.EA.2070, PH09.DAHU.1200, PH09.DAHU.1640, PH09.DH.1370 | 2025-04-24 | 2025-04-25 |  | Must complete by 10/16/23 | 02 | 1 |  |
| PH09.1040 |  | Plumbing Final Inspection | 2d | 2025-10-08 | 2025-10-08 | PH09.SU.1010 FF, PH09.EA.2070, PH09.DAHU.1200, PH09.DAHU.1640, PH09.DH.1370 | 2025-04-24 | 2025-04-25 |  | Must complete by 10/16/23 | 02 | 1 |  |
| PH09.1050 |  | Special Inspections Sign-off | 2d | 2025-10-08 | 2025-10-08 | PH09.1040 | 2025-06-09 | 2025-06-10 |  | Must complete by 10/16/23 | 02 | 1 |  |
|  | PH10 | **Phase 10 Construction** |  | 2025-10-08 | 2025-10-08 |  |  |  |  |  |  |  |  |
|  | 2 | **Site** |  | 2025-10-08 | 2025-10-08 |  |  |  |  |  |  |  |  |
|  | 2 | **Generator Yard** |  | 2025-10-08 | 2025-10-08 |  |  |  |  |  |  |  |  |
|  | 2 | **Generators-Phase 1** |  | 2025-10-08 | 2025-10-08 |  |  |  |  |  |  |  |  |
| PH10.GEN.1100 |  | Gen Yard Install generators | 2d | 2025-10-08 | 2025-10-08 | PH2-10.GEN.1210, PH10.PR.1050 | 2025-01-21 | 2025-01-22 |  |  | 02 | 1 | ELIASE |
| PH10.GEN.1110 |  | Gen Yard Anchor generators | 2d | 2025-10-08 | 2025-10-08 | PH10.GEN.1100 | 2025-01-27 | 2025-01-28 |  |  | 02 | 1 | ELIASE |
| PH10.GEN.1120 |  | Gen Yard Install cable bus from generator to electrical room | 10d | 2025-10-08 | 2025-10-08 | PH10.XFMR.1100 SS, PH10.GEN.1110, PH10.PR.1160 | 2025-02-24 | 2025-03-07 |  |  | 02 | 1 | ELIASE |
| PH10.GEN.1130 |  | Gen Yard Install generators Exhaust Duct | 2d | 2025-10-08 | 2025-10-08 | PH10.GEN.1100 | 2025-01-23 | 2025-01-24 |  |  | 02 | 1 | ELIASE |
|  | 4 | **MV Transformers-Phase 1** |  | 2025-10-08 | 2025-10-08 |  |  |  |  |  |  |  |  |
| PH10.XFMR.1100 |  | XFMR Install cable bus to electrical room | 8d | 2025-10-08 | 2025-10-08 | PH10.PR.1160, PH10.XFMR.1120, PH05.XFMR.1100 SS | 2025-02-15 | 2025-02-25 | Calendar 06 - 6 Day Work Week w/ Mass. Holidays |  | 02 | 1 | ELIASE |
| PH10.XFMR.1110 |  | XFMR Pull to MV SWGR | 5d | 2025-10-08 | 2025-10-08 | PH10.PR.1040 | 2025-02-03 | 2025-02-07 |  |  | 02 | 1 | ELIASE |
| PH10.XFMR.1120 |  | XFMR Terminate to MV SWGR | 5d | 2025-10-08 | 2025-10-08 | PH10.XFMR.1110 | 2025-02-10 | 2025-02-14 |  |  | 02 | 1 | ELIASE |

| ID | WBS | Activity | Duration | Start | Finish | Predecessors | Planned start | Planned finish | 06 -GC - Building Levels | 05 -GC - Building Phase | user_text |
| --- | --- | --- | --- | --- | --- | --- | --- | --- | --- | --- | --- |
|  | 3 | **Electrical Room E1.5** |  | 2025-10-08 | 2025-10-08 |  |  |  |  |  |  |
| PH10.EA.136 |  | ER E1.5 Install sprinkler heads | 5d | 2025-10-08 | 2025-10-08 | PH10.EA.1860 | 2025-02-27 | 2025-03-05 | 02 | 1 |  |
| PH10.EA.1860 |  | ER E1.5 Install fire protection | 1d | 2025-10-08 | 2025-10-08 | PH10.EA.1960 | 2025-02-26 | 2025-02-26 | 02 | 1 | All electrical rooms will |
| PH10.EA.1870 |  | ER E1.5 Layout and frame walls | 2d | 2025-10-08 | 2025-10-08 | PH10.M.1000 SS | 2025-01-27 | 2025-01-28 | 02 | 1 | start simutaneously |
| PH10.EA.1880 |  | ER E1.5 Install OAD ductwork Transitions | 6d | 2025-10-08 | 2025-10-08 | PH10.EA.2090, PH10.M.1000 SS | 2025-01-29 | 2025-02-05 | 02 | 1 |  |
| PH10.EA.1890 |  | ER E1.5 Electrical rough-in | 3d | 2025-10-08 | 2025-10-08 | PH10.EA.1870, PH10.EA.1880 | 2025-02-03 | 2025-02-05 | 02 | 1 |  |
| PH10.EA.1900 |  | ER E1.5 Mechanical rough-in | 3d | 2025-10-08 | 2025-10-08 | PH10.EA.1870, PH10.EA.1880 | 2025-02-03 | 2025-02-05 | 02 | 1 |  |
| PH10.EA.1910 |  | ER E1.5 Fire alarm rough-in | 3d | 2025-10-08 | 2025-10-08 | PH10.EA.1870, PH10.EA.1880 | 2025-02-03 | 2025-02-05 | 02 | 1 |  |
| PH10.EA.1920 |  | ER E1.5 Plumbing rough-in | 3d | 2025-10-08 | 2025-10-08 | PH10.EA.1880, PH10.EA.1870 | 2025-02-03 | 2025-02-05 | 02 | 1 |  |
| PH10.EA.1930 |  | ER E1.5 In wall inspection | 1d | 2025-10-08 | 2025-10-08 | PH10.EA.1910, PH10.EA.1900, PH10.EA.1890, PH10.EA.1920 | 2025-02-06 | 2025-02-06 | 02 | 1 |  |
| PH10.EA.1940 |  | ER E1.5 Install drywall | 3d | 2025-10-08 | 2025-10-08 | PH10.EA.1930 | 2025-02-07 | 2025-02-11 | 02 | 1 |  |
| PH10.EA.1950 |  | ER E1.5 Finish drywall | 5d | 2025-10-08 | 2025-10-08 | PH10.EA.1940 SS+2d, PH10.EA.1940 FF | 2025-02-11 | 2025-02-18 | 02 | 1 |  |
| PH10.EA.1960 |  | ER E1.5 Paint drywall | 2d | 2025-10-08 | 2025-10-08 | PH10.EA.1950 | 2025-02-24 | 2025-02-25 | 02 | 1 |  |
| PH10.EA.1970 |  | ER E1.5 Install OAD dampers + Ductwork | 3d | 2025-10-08 | 2025-10-08 | PH10.EA.1960, PH10.EA.1950 | 2025-02-26 | 2025-02-28 | 02 | 1 |  |
| PH10.EA.1980 |  | ER E1.5 Install split units | 3d | 2025-10-08 | 2025-10-08 | PH10.EA.1970 | 2025-04-07 | 2025-04-09 | 02 | 1 |  |
| PH10.EA.1990 |  | ER E1.5 Install Busway and OH electrical supports | 5d | 2025-10-08 | 2025-10-08 | PH10.EA.1960 SS, PH10.EA.1950, PH10.PR.1060 | 2025-02-26 | 2025-03-04 | 02 | 1 |  |
| PH10.EA.2000 |  | ER E1.5 Install Electrical SWGR | 2d | 2025-10-08 | 2025-10-08 | PH10.EA.2130, PH10.EA.1990, PH10.PR.1070 | 2025-03-12 | 2025-03-13 | 02 | 1 |  |
| PH10.EA.2010 |  | ER E1.5 Install Feeder tray | 5d | 2025-10-08 | 2025-10-08 | PH10.EA.1990, PH10.EA.2000 | 2025-03-24 | 2025-03-28 | 02 | 1 |  |
| PH10.EA.2020 |  | ER E1.5 Install electrical panels and disconnects | 5d | 2025-10-08 | 2025-10-08 | PH10.EA.2010, PH10.PR.1170, PH10.PR.1190 | 2025-04-02 | 2025-04-08 | 02 | 1 |  |
| PH10.EA.2030 |  | ER E1.5 Pull and terminate feeders | 10d | 2025-10-08 | 2025-10-08 | PH10.EA.2010 SS+2d, PH10.EA.2010 FF | 2025-03-26 | 2025-04-08 | 02 | 1 |  |
| PH10.EA.2040 |  | ER E1.5 Install lighting | 3d | 2025-10-08 | 2025-10-08 | PH10.EA.2020, PH10.EA.2030 | 2025-04-29 | 2025-05-01 | 02 | 1 |  |
| PH10.EA.2050 |  | ER E1.5 Install accessories (shepherds hook, fire ext) | 1d | 2025-10-08 | 2025-10-08 | PH10.EA.2040 FF, PH10.EA.2040 | 2025-06-16 | 2025-06-16 | 02 | 1 |  |
| PH10.EA.2070 |  | ER E1.5 Clean electrical room | 7d | 2025-10-08 | 2025-10-08 | PH10.EA.2150, PH10.EA.2120, PH10.EA.2040, PH10.EA.1980 | 2025-05-05 | 2025-05-13 | 02 | 1 |  |
| PH10.EA.2090 |  | ER E1.5 Install Plenum on Louvers | 2d | 2025-10-08 | 2025-10-08 | PH10.M.1000 SS | 2025-01-27 | 2025-01-28 | 02 | 1 | start simutaneously |
| PH10.EA.2100 |  | ER E1.5 Install Vesda Piping System | 5d | 2025-10-08 | 2025-10-08 | PH10.EA.1960 | 2025-02-26 | 2025-03-04 | 02 | 1 |  |
| PH10.EA.2110 |  | ER E1.5 Install Refrigerantion Lines | 5d | 2025-10-08 | 2025-10-08 | PH10.EA.1960 | 2025-02-26 | 2025-03-04 | 02 | 1 |  |
| PH10.EA.2120 |  | ER E1.5 Install ERV | 2d | 2025-10-08 | 2025-10-08 | PH10.EA.2030, PH10.EA.2110 | 2025-04-21 | 2025-04-22 | 02 | 1 |  |
| PH10.EA.2130 |  | ER E1.5 Install Cable Trays | 5d | 2025-10-08 | 2025-10-08 | PH10.EA.1990 | 2025-03-05 | 2025-03-11 | 02 | 1 |  |
| PH10.EA.2140 |  | ER E1.5 Install Fire Alarm + Vesda Panel | 3d | 2025-10-08 | 2025-10-08 | PH10.EA.2100 | 2025-03-24 | 2025-03-26 | 02 | 1 |  |
| PH10.EA.2150 |  | ER E1.5 Install Control BMS & EPMS | 4d | 2025-10-08 | 2025-10-08 | PH10.EA.2030 | 2025-04-29 | 2025-05-02 | 02 | 1 |  |

| ID | WBS | Activity | Duration | Start | Finish | Predecessors | Planned start | Planned finish | user_text | 06 -GC - Building Levels | 05 -GC - Building Phase |
| --- | --- | --- | --- | --- | --- | --- | --- | --- | --- | --- | --- |
|  | 5 | **DAHU Galleries** |  | 2025-10-08 | 2025-10-08 |  |  |  |  |  |  |
|  | 1 | **DAHU Gallery North** |  | 2025-10-08 | 2025-10-08 |  |  |  |  |  |  |
| PH10.DAHU.1000 |  | DAHU North Install Fire Protection & VESDA | 2d | 2025-10-08 | 2025-10-08 | PH10.M.1000 SS | 2025-01-27 | 2025-01-28 | DAHU North and South will | 02 | 1 |
| PH10.DAHU.1010 |  | DAHU North Install IW Piping | 4d | 2025-10-08 | 2025-10-08 | PH10.M.1000 SS | 2025-01-27 | 2025-01-30 | work simutaneously | 02 | 1 |
| PH10.DAHU.1020 |  | DAHU North Install Outside Air Reference Piping | 3d | 2025-10-08 | 2025-10-08 | PH10.DAHU.1010 SS+2d | 2025-01-29 | 2025-01-31 |  | 02 | 1 |
| PH10.DAHU.1030 |  | DAHU North Frame DAHU wall and CSH catwalk | 6d | 2025-10-08 | 2025-10-08 | PH10.M.1000 SS | 2025-01-27 | 2025-02-03 |  | 02 | 1 |
| PH10.DAHU.1040 |  | DAHU North CSH Electrical rough-in | 5d | 2025-10-08 | 2025-10-08 | PH10.DAHU.1030 SS+2d | 2025-01-29 | 2025-02-04 |  | 02 | 1 |
| PH10.DAHU.1050 |  | DAHU North CSH Fire protection/alarm and VESDA rough-in | 3d | 2025-10-08 | 2025-10-08 | PH10.DAHU.1030 SS+2d | 2025-01-29 | 2025-01-31 |  | 02 | 1 |
| PH10.DAHU.1060 |  | DAHU North CSH In wall inspection | 1d | 2025-10-08 | 2025-10-08 | PH10.DAHU.1040, PH10.DAHU.1050 FF, PH10.DAHU.1050 | 2025-02-05 | 2025-02-05 |  | 02 | 1 |
| PH10.DAHU.1070 |  | DAHU North Install CSH drywall | 6d | 2025-10-08 | 2025-10-08 | PH10.DAHU.1060 | 2025-02-06 | 2025-02-13 |  | 02 | 1 |
| PH10.DAHU.1080 |  | DAHU North Finish CSH drywall | 13d | 2025-10-08 | 2025-10-08 | PH10.DAHU.1070 | 2025-02-24 | 2025-03-12 |  | 02 | 1 |
| PH10.DAHU.1090 |  | DAHU North Install DAHUs | 2d | 2025-10-08 | 2025-10-08 | PH10.DAHU.1700, PH10.DAHU.1690, PH10.DAHU.1680, PH10.DAHU.1670, PH10.DAHU.1000, PH10.DAHU.1080, PH10.DAHU.1420, PH10.PR.1010 FF | 2025-03-20 | 2025-03-21 |  | 02 | 1 |
| PH10.DAHU.1100 |  | DAHU North Install CSH railing | 2d | 2025-10-08 | 2025-10-08 | PH10.DAHU.1420 | 2025-04-07 | 2025-04-08 |  | 02 | 1 |
| PH10.DAHU.1120 |  | DAHU North Pull and terminate VFDs from electrical room | 5d | 2025-10-08 | 2025-10-08 | PH10.DAHU.1090, PH10.PR.1130 | 2025-04-07 | 2025-04-11 |  | 02 | 1 |
| PH10.DAHU.1130 |  | DAHU North Make DAHU Plumbing Connections | 3d | 2025-10-08 | 2025-10-08 | PH10.DAHU.1720, PH10.DAHU.1090 | 2025-04-10 | 2025-04-14 |  | 02 | 1 |
| PH10.DAHU.1140 |  | DAHU North Install Feeder Trays (DAHU, VFD, Communications) | 5d | 2025-10-08 | 2025-10-08 | PH10.DAHU.1420, PH10.DH.1190 SS | 2025-04-07 | 2025-04-11 |  | 02 | 1 |
| PH10.DAHU.1150 |  | DAHU North Pull DAHU Feeders | 2d | 2025-10-08 | 2025-10-08 | PH10.DH.1200 SS, PH10.DAHU.1140 FF | 2025-04-16 | 2025-04-17 |  | 02 | 1 |
| PH10.DAHU.1160 |  | DAHU North Make DAHU Electrical Connections | 2d | 2025-10-08 | 2025-10-08 | PH10.DAHU.1150 FF | 2025-04-18 | 2025-04-21 |  | 02 | 1 |
| PH10.DAHU.1170 |  | DAHU North Make DAHU Controls Connections | 3d | 2025-10-08 | 2025-10-08 | PH10.DAHU.1160 | 2025-04-28 | 2025-04-30 |  | 02 | 1 |
| PH10.DAHU.1180 |  | DAHU North Install Temporary Wall | 2d | 2025-10-08 | 2025-10-08 | PH10.DAHU.1170 | 2025-05-01 | 2025-05-02 |  | 02 | 1 |
| PH10.DAHU.1190 |  | DAHU North Install CSH ladders | 2d | 2025-10-08 | 2025-10-08 | PH10.DAHU.1170 | 2025-05-01 | 2025-05-02 |  | 02 | 1 |
| PH10.DAHU.1200 |  | DAHU North Clean DAHU Gallery and CSH | 7d | 2025-10-08 | 2025-10-08 | PH10.DAHU.1730, PH10.DAHU.1180, PH10.DAHU.1190, PH10.DAHU.1100, PH10.DAHU.1160 | 2025-05-05 | 2025-05-13 |  | 02 | 1 |
| PH10.DAHU.1420 |  | DAHU North Paint CSH drywall | 5d | 2025-10-08 | 2025-10-08 | PH10.DAHU.1080 | 2025-03-13 | 2025-03-19 |  | 02 | 1 |
| PH10.DAHU.1650 |  | DAHU North Coredrilling On 2nd Floor | 5d | 2025-10-08 | 2025-10-08 | PH10.M.1000 SS | 2025-01-27 | 2025-01-31 | DAHU North and South will | 02 | 1 |
| PH10.DAHU.1660 |  | DAHU North Install Floor Drains 2nd Floor | 2d | 2025-10-08 | 2025-10-08 | PH10.DAHU.1650 | 2025-02-03 | 2025-02-04 | DAHU North and South will | 02 | 1 |
| PH10.DAHU.1670 |  | DAHU North Concrete Infill 2nd Floor | 2d | 2025-10-08 | 2025-10-08 | PH10.DAHU.1660 | 2025-02-05 | 2025-02-06 | DAHU North and South will | 02 | 1 |
| PH10.DAHU.1680 |  | DAHU North Install OAD Damper | 4d | 2025-10-08 | 2025-10-08 | PH10.DAHU.1010 | 2025-01-31 | 2025-02-05 |  | 02 | 1 |
| PH10.DAHU.1690 |  | DAHU North Install Sprinkler Feed Lines | 4d | 2025-10-08 | 2025-10-08 | PH10.DAHU.1680 | 2025-02-06 | 2025-02-11 |  | 02 | 1 |
| PH10.DAHU.1700 |  | DAHU North Install Low Point Drain | 4d | 2025-10-08 | 2025-10-08 | PH10.DAHU.1690 FF | 2025-02-06 | 2025-02-11 |  | 02 | 1 |
| PH10.DAHU.1720 |  | DAHU North Install IW Drops | 3d | 2025-10-08 | 2025-10-08 | PH10.DAHU.1090 | 2025-04-07 | 2025-04-09 |  | 02 | 1 |
| PH10.DAHU.1730 |  | DAHU North Install VESDA Panels | 2d | 2025-10-08 | 2025-10-08 | PH10.DAHU.1180 | 2025-05-05 | 2025-05-06 |  | 02 | 1 |

| ID | WBS | Activity | Duration | Start | Finish | Predecessors | Planned start | Planned finish | user_text | 06 -GC - Building Levels | 05 -GC - Building Phase |
| --- | --- | --- | --- | --- | --- | --- | --- | --- | --- | --- | --- |
|  | 2 | **DAHU Gallery South** |  | 2025-10-08 | 2025-10-08 |  |  |  |  |  |  |
| PH10.DAHU.1430 |  | DAHU South Install fire protection and VESDA | 2d | 2025-10-08 | 2025-10-08 | PH10.M.1000 SS | 2025-01-27 | 2025-01-28 | DAHU North and South will | 02 | 1 |
| PH10.DAHU.1440 |  | DAHU South Install IW Piping | 4d | 2025-10-08 | 2025-10-08 | PH10.M.1000 SS | 2025-01-27 | 2025-01-30 | work simutaneously | 02 | 1 |
| PH10.DAHU.1450 |  | DAHU South Install Outside Air Reference Piping | 3d | 2025-10-08 | 2025-10-08 | PH10.DAHU.1440 FF | 2025-01-28 | 2025-01-30 |  | 02 | 1 |
| PH10.DAHU.1460 |  | DAHU South Frame DAHU wall and CSH catwalk | 6d | 2025-10-08 | 2025-10-08 | PH10.M.1000 SS | 2025-01-27 | 2025-02-03 |  | 02 | 1 |
| PH10.DAHU.1470 |  | DAHU South CSH Fire protection/alarm and VESDA rough-in | 3d | 2025-10-08 | 2025-10-08 | PH10.DAHU.1460 | 2025-02-03 | 2025-02-05 |  | 02 | 1 |
| PH10.DAHU.1480 |  | DAHU South CSH Electrical rough-in | 3d | 2025-10-08 | 2025-10-08 | PH10.DAHU.1460 SS | 2025-01-27 | 2025-01-29 |  | 02 | 1 |
| PH10.DAHU.1490 |  | DAHU South CSH In wall inspection | 1d | 2025-10-08 | 2025-10-08 | PH10.DAHU.1480, PH10.DAHU.1470 FF, PH10.DAHU.1470 | 2025-02-06 | 2025-02-06 |  | 02 | 1 |
| PH10.DAHU.1500 |  | DAHU South Install CSH drywall | 6d | 2025-10-08 | 2025-10-08 | PH10.DAHU.1810, PH10.DAHU.1490 | 2025-02-07 | 2025-02-14 |  | 02 | 1 |
| PH10.DAHU.1510 |  | DAHU South Finish CSH drywall | 10d | 2025-10-08 | 2025-10-08 | PH10.DAHU.1500 | 2025-02-24 | 2025-03-07 |  | 02 | 1 |
| PH10.DAHU.1520 |  | DAHU South Paint CSH drywall | 4d | 2025-10-08 | 2025-10-08 | PH10.DAHU.1510 | 2025-03-10 | 2025-03-13 |  | 02 | 1 |
| PH10.DAHU.1530 |  | DAHU South Install DAHUs | 2d | 2025-10-08 | 2025-10-08 | PH10.DAHU.1520, PH10.DAHU.1430, PH10.PR.1010 FF | 2025-03-31 | 2025-04-01 |  | 02 | 1 |
| PH10.DAHU.1540 |  | DAHU South Install CSH railing | 2d | 2025-10-08 | 2025-10-08 | PH10.DAHU.1530 | 2025-04-07 | 2025-04-08 |  | 02 | 1 |
| PH10.DAHU.1550 |  | DAHU South Install VFDs | 3d | 2025-10-08 | 2025-10-08 | PH10.DAHU.1530, PH10.PR.1130 | 2025-04-07 | 2025-04-09 |  | 02 | 1 |
| PH10.DAHU.1560 |  | DAHU South Make DAHU plumbing connections | 5d | 2025-10-08 | 2025-10-08 | PH10.DAHU.1760 SS+2d, PH10.DAHU.1530 | 2025-04-09 | 2025-04-15 |  | 02 | 1 |
| PH10.DAHU.1570 |  | DAHU South Pull and terminate VFDs from electrical room | 5d | 2025-10-08 | 2025-10-08 | PH10.DAHU.1550 | 2025-04-10 | 2025-04-16 |  | 02 | 1 |
| PH10.DAHU.1580 |  | DAHU South Install feeder trays (DAHU, VFD, communications) | 5d | 2025-10-08 | 2025-10-08 | PH10.DAHU.1530 | 2025-04-07 | 2025-04-11 |  | 02 | 1 |
| PH10.DAHU.1590 |  | DAHU South Pull DAHU Feeders | 2d | 2025-10-08 | 2025-10-08 | PH10.DH.1200 SS, PH10.DAHU.1580 | 2025-04-16 | 2025-04-17 |  | 02 | 1 |
| PH10.DAHU.1600 |  | DAHU South Make DAHU electrical connections | 2d | 2025-10-08 | 2025-10-08 | PH10.DAHU.1590 | 2025-04-18 | 2025-04-21 |  | 02 | 1 |
| PH10.DAHU.1610 |  | DAHU South Make DAHU controls connections | 3d | 2025-10-08 | 2025-10-08 | PH10.DAHU.1600 | 2025-04-23 | 2025-04-25 |  | 02 | 1 |
| PH10.DAHU.1620 |  | DAHU South Install temporary wall | 2d | 2025-10-08 | 2025-10-08 | PH10.DAHU.1560 | 2025-04-28 | 2025-04-29 |  | 02 | 1 |
| PH10.DAHU.1630 |  | DAHU South Install CSH ladders | 2d | 2025-10-08 | 2025-10-08 | PH10.DAHU.1560 | 2025-04-28 | 2025-04-29 |  | 02 | 1 |
| PH10.DAHU.1640 |  | DAHU South Clean DAHU gallery and CSH | 7d | 2025-10-08 | 2025-10-08 | PH10.DAHU.1610, PH10.DAHU.1800, PH10.DAHU.1620, PH10.DAHU.1630, PH10.DAHU.1540, PH10.DAHU.1600 | 2025-05-05 | 2025-05-13 |  | 02 | 1 |
| PH10.DAHU.1740 |  | DAHU South Coredrilling On 2nd Floor | 5d | 2025-10-08 | 2025-10-08 | PH10.M.1000 SS | 2025-01-27 | 2025-01-31 | DAHU North and South will | 02 | 1 |
| PH10.DAHU.1750 |  | DAHU South Install Floor Drains 2nd Floor | 2d | 2025-10-08 | 2025-10-08 | PH10.DAHU.1740 | 2025-02-03 | 2025-02-04 | DAHU North and South will | 02 | 1 |
| PH10.DAHU.1760 |  | DAHU South Install IW Drops | 3d | 2025-10-08 | 2025-10-08 | PH10.DAHU.1530, PH10.DAHU.1440 | 2025-04-07 | 2025-04-09 | work simutaneously | 02 | 1 |
| PH10.DAHU.1770 |  | DAHU South Install Sprinkler Lines | 4d | 2025-10-08 | 2025-10-08 | PH10.DAHU.1530 | 2025-04-07 | 2025-04-10 |  | 02 | 1 |
| PH10.DAHU.1800 |  | DAHU South Install VESDA Panels | 2d | 2025-10-08 | 2025-10-08 | PH10.DAHU.1620 | 2025-04-29 | 2025-04-30 |  | 02 | 1 |
| PH10.DAHU.1810 |  | DAHU South Concrete Infill 2nd Floor | 2d | 2025-10-08 | 2025-10-08 | PH10.DAHU.1750 | 2025-02-05 | 2025-02-06 | DAHU North and South will | 02 | 1 |

| ID | WBS | Activity | Duration | Start | Finish | Predecessors | Planned start | Planned finish | 06 -GC - Building Levels | 05 -GC - Building Phase | user_text |
| --- | --- | --- | --- | --- | --- | --- | --- | --- | --- | --- | --- |
|  | 6 | **Data Hall Gallery** |  | 2025-10-08 | 2025-10-08 |  |  |  |  |  |  |
| PH10.DH.1000 |  | Data Hall Install upper temp wall | 2d | 2025-10-08 | 2025-10-08 | PH10.DH.1050 SS | 2025-03-03 | 2025-03-04 | 02 | 1 |  |
| PH10.DH.1010 |  | Data Hall Rough-in electrical for exhaust fans | 5d | 2025-10-08 | 2025-10-08 | PH10.M.1000 SS | 2025-01-27 | 2025-01-31 | 02 | 1 |  |
| PH10.DH.1020 |  | Data Hall Install exhaust fan drip pans | 5d | 2025-10-08 | 2025-10-08 | PH10.DH.1010 SS+2d | 2025-01-29 | 2025-02-04 | 02 | 1 |  |
| PH10.DH.1030 |  | Data Hall Install Fire Protection (high) | 5d | 2025-10-08 | 2025-10-08 | PH10.DH.1020 SS+3d | 2025-02-03 | 2025-02-07 | 02 | 1 |  |
| PH10.DH.1040 |  | Data Hall Pipe exhaust fans drip pans | 4d | 2025-10-08 | 2025-10-08 | PH10.DH.1020 | 2025-02-05 | 2025-02-10 | 02 | 1 |  |
| PH10.DH.1050 |  | Data Hall Layout and frame B/E/3.5 line walls | 5d | 2025-10-08 | 2025-10-08 | PH10.M.1000 SS | 2025-01-27 | 2025-01-31 | 02 | 1 |  |
| PH10.DH.1060 |  | Data Hall In wall rough-in | 5d | 2025-10-08 | 2025-10-08 | PH10.DH.1050 SS | 2025-01-27 | 2025-01-31 | 02 | 1 |  |
| PH10.DH.1070 |  | Data Hall In wall inspection | 1d | 2025-10-08 | 2025-10-08 | PH10.DH.1060 | 2025-02-03 | 2025-02-03 | 02 | 1 |  |
| PH10.DH.1080 |  | Data Hall Install Drywall on B/E/3.5 line walls | 5d | 2025-10-08 | 2025-10-08 | PH10.DH.1070 | 2025-02-04 | 2025-02-10 | 02 | 1 |  |
| PH10.DH.1090 |  | Data Hall Finish B/E/3.5 line walls | 7d | 2025-10-08 | 2025-10-08 | PH10.DH.1460 FF, PH10.DH.1080 | 2025-02-13 | 2025-02-24 | 02 | 1 |  |
| PH10.DH.1140 |  | Data Hall Install Lower temp wall and doors | 3d | 2025-10-08 | 2025-10-08 | PH10.DH.1290, PH10.DH.1000, PH10.DH.1230, PH10.DH.1050 SS | 2025-04-29 | 2025-05-01 | 02 | 1 |  |
| PH10.DH.1150 |  | Data Hall Install return air dampers | 3d | 2025-10-08 | 2025-10-08 | PH10.DH.1380 SS, PH10.DH.1090 | 2025-02-25 | 2025-02-27 | 02 | 1 |  |
| PH10.DH.1160 |  | Data Hall Install supply air dampers | 3d | 2025-10-08 | 2025-10-08 | PH10.DH.1150 | 2025-02-28 | 2025-03-04 | 02 | 1 |  |
| PH10.DH.1170 |  | Data Hall Install fire protection (low) | 5d | 2025-10-08 | 2025-10-08 | PH10.DH.1150 | 2025-03-25 | 2025-03-31 | 02 | 1 |  |
| PH10.DH.1180 |  | Data Hall Install Racking | 8d | 2025-10-08 | 2025-10-08 | PH10.DH.1040, PH10.DH.1450, PH10.DH.1440, PH10.DH.1080, PH10.DH.1030, PH10.PR.1000 | 2025-03-05 | 2025-03-14 | 02 | 1 |  |
| PH10.DH.1190 |  | Data Hall Install DAHU feeder tray | 10d | 2025-10-08 | 2025-10-08 | PH10.DH.1180 | 2025-04-01 | 2025-04-14 | 02 | 1 |  |
| PH10.DH.1200 |  | Data Hall Pull DAHU feeders | 2d | 2025-10-08 | 2025-10-08 | PH10.DH.1190 | 2025-04-16 | 2025-04-17 | 02 | 1 |  |
| PH10.DH.1210 |  | Data Hall Install vertical communication risers | 3d | 2025-10-08 | 2025-10-08 | PH10.DH.1200 | 2025-04-21 | 2025-04-23 | 02 | 1 |  |
| PH10.DH.1230 |  | Data Hall Install ACT grid | 4d | 2025-10-08 | 2025-10-08 | PH10.DH.1500, PH10.DH.1270, PH10.DH.1180 | 2025-04-02 | 2025-04-07 | 02 | 1 |  |
| PH10.DH.1240 |  | Data Hall Electrical ceiling rough-in | 5d | 2025-10-08 | 2025-10-08 | PH10.DH.1470, PH10.DH.1170, PH10.DH.1230 | 2025-04-08 | 2025-04-14 | 02 | 1 |  |
| PH10.DH.1250 |  | Data Hall Install Fire protection Sprinkler Heads | 4d | 2025-10-08 | 2025-10-08 | PH10.DH.1230 | 2025-04-08 | 2025-04-11 | 02 | 1 |  |
| PH10.DH.1260 |  | Data Hall Fire alarm and VESDA rough-in | 2d | 2025-10-08 | 2025-10-08 | PH10.DH.1280 FF, PH10.DH.1230 | 2025-04-29 | 2025-04-30 | 02 | 1 |  |
| PH10.DH.1270 |  | Data Hall Install upper twin wall | 5d | 2025-10-08 | 2025-10-08 | PH10.DH.1180 SS+3d | 2025-03-24 | 2025-03-28 | 02 | 1 |  |
| PH10.DH.1280 |  | Data Hall Install Ceiling Tiles | 2d | 2025-10-08 | 2025-10-08 | PH10.DH.1510, PH10.DH.1230, PH10.DH.1250, PH10.DH.1240, PH10.DH.1270 | 2025-04-29 | 2025-04-30 | 02 | 1 |  |
| PH10.DH.1290 |  | Data Hall Install Basket Tray | 10d | 2025-10-08 | 2025-10-08 | PH10.DH.1180 | 2025-04-15 | 2025-04-28 | 02 | 1 | Changed from 15 to 10 |
| PH10.DH.1300 |  | Data Hall Pull branch circuit and PDC feeders | 10d | 2025-10-08 | 2025-10-08 | PH10.EA.2030 SS, PH10.DH.1290 FF | 2025-04-18 | 2025-05-01 | 02 | 1 | Changed from 15 to 10 |
| PH10.DH.1310 |  | Data Hall Install PDC cabinets | 3d | 2025-10-08 | 2025-10-08 | PH10.DH.1230, PH10.PR.1100 | 2025-04-08 | 2025-04-10 | 02 | 1 |  |
| PH10.DH.1320 |  | Data Hall Terminate PDC cabinets | 5d | 2025-10-08 | 2025-10-08 | PH10.DH.1310, PH10.DH.1300 FF+3d | 2025-04-30 | 2025-05-06 | 02 | 1 |  |
| PH10.DH.1330 |  | Data Hall Install PDC Whips and labels | 5d | 2025-10-08 | 2025-10-08 | PH10.DH.1290, PH10.PR.1100 | 2025-04-29 | 2025-05-05 | 02 | 1 | Data hall is driving out the |
| PH10.DH.1340 |  | Data Hall Perform PDC Whip Checks | 2d | 2025-10-08 | 2025-10-08 | PH10.DH.1330, PH10.DH.1320 FF+1d | 2025-05-07 | 2025-05-08 | 02 | 1 | NEA data in the milestones |
| PH10.DH.1350 |  | Data Hall Install lower twin wall and doors | 5d | 2025-10-08 | 2025-10-08 | PH10.DH.1180, PH10.DH.1050 SS | 2025-05-05 | 2025-05-09 | 02 | 1 | Changed from 7 to 5 |
| PH10.DH.1360 |  | Data Hall Install Perfect Positioning | 2d | 2025-10-08 | 2025-10-08 | PH10.DH.1320, PH10.DH.1340 | 2025-05-09 | 2025-05-12 | 02 | 1 | Must complete by 10/23/23 |
| PH10.DH.1370 |  | Data Hall Clean data hall | 1d | 2025-10-08 | 2025-10-08 | PH10.DH.1210, PH10.DH.1490, PH10.DH.1480, PH10.DH.1280, PH10.DH.1140, PH10.DH.1360, PH10.DH.1350, PH10.DH.1050 SS | 2025-05-14 | 2025-05-14 | 02 | 1 |  |
| PH10.DH.1380 |  | Data Hall Paint B/E/3.5 line walls | 5d | 2025-10-08 | 2025-10-08 | PH10.DH.1090 | 2025-02-25 | 2025-03-03 | 02 | 1 |  |
| PH10.DH.1430 |  | Data Hall Install High VESDA Pipes | 4d | 2025-10-08 | 2025-10-08 | PH10.DH.1030 | 2025-02-10 | 2025-02-13 | 02 | 1 |  |
| PH10.DH.1440 |  | Data Hall Install Fire Protection (Low) | 5d | 2025-10-08 | 2025-10-08 | PH10.DH.1030 SS+2d | 2025-02-05 | 2025-02-11 | 02 | 1 |  |
| PH10.DH.1450 |  | Data Hall Hang Wire for Ceiling Grid | 4d | 2025-10-08 | 2025-10-08 | PH10.DH.1440 SS+2d | 2025-02-07 | 2025-02-12 | 02 | 1 |  |
| PH10.DH.1460 |  | Data Hall Install Dampers/Screens | 3d | 2025-10-08 | 2025-10-08 | PH10.DH.1080 SS | 2025-02-04 | 2025-02-06 | 02 | 1 |  |
| PH10.DH.1470 |  | Data Hall Install BMS Panel | 3d | 2025-10-08 | 2025-10-08 | PH10.DH.1090 | 2025-02-25 | 2025-02-27 | 02 | 1 |  |
| PH10.DH.1480 |  | Data Hall Install VESDA Panels | 2d | 2025-10-08 | 2025-10-08 | PH10.DH.1260, PH10.DH.1280, PH10.DH.1500, PH10.DH.1050 SS | 2025-05-01 | 2025-05-02 | 02 | 1 | NEA data in the milestones |
| PH10.DH.1490 |  | Data Hall Pull & Terminate VESDA Wiring | 2d | 2025-10-08 | 2025-10-08 | PH10.DH.1480 | 2025-05-05 | 2025-05-06 | 02 | 1 | NEA data in the milestones |
| PH10.DH.1500 |  | Data Hall Install Lower VESDA Pipes | 4d | 2025-10-08 | 2025-10-08 | PH10.DH.1430 | 2025-02-14 | 2025-02-20 | 02 | 1 |  |
| PH10.DH.1510 |  | Data Hall Install Back Draft Damper | 4d | 2025-10-08 | 2025-10-08 | PH10.DH.1230 | 2025-04-08 | 2025-04-11 | 02 | 1 |  |
| PH10.DH.1520 |  | Data Hall Install BMS/EPMS | 5d | 2025-10-08 | 2025-10-08 | PH10.DH.1210 | 2025-04-29 | 2025-05-05 | 02 | 1 |  |

| ID | WBS | Activity | Duration | Start | Finish | Predecessors | Planned start | Planned finish | user_text | 06 -GC - Building Levels | 05 -GC - Building Phase |
| --- | --- | --- | --- | --- | --- | --- | --- | --- | --- | --- | --- |
|  | 7 | **Startup and Commissioning** |  | 2025-10-08 | 2025-10-08 |  |  |  |  |  |  |
| PH10.SU.1000 |  | OWNER FOD Walks | 1d | 2025-10-08 | 2025-10-08 | PH10.GEN.1120, PH10.XFMR.1100, PH10.GEN.1110, PH10.DAHU.1570, PH10.DAHU.1640 FF, PH10.EA.2070 FF, PH10.DAHU.1120, PH10.XFMR.1120, PH10.GEN.1130 | 2025-05-13 | 2025-05-13 | Must begin by 10/09/23 | 02 | 1 |
| PH10.SU.1010 |  | Energization | 2d | 2025-10-08 | 2025-10-08 | PH10.SU.1000 | 2025-05-14 | 2025-05-15 | Must complete by 10/16/23 | 02 | 1 |
| PH10.SU.1030 |  | L4-L5 Commissioning | 10d | 2025-10-08 | 2025-10-08 | PH10.SU.1010, PH10.SU.1050, PH10.DH.1370, PH10.M.1070 | 2025-06-30 | 2025-07-14 |  | 02 | 1 |
| PH10.SU.1040 |  | Comissioning Complete | 1d | 2025-10-08 | 2025-10-08 | PH10.SU.1030 FF | 2025-07-14 | 2025-07-14 |  | 02 | 1 |
| PH10.SU.1050 |  | Startup activities for H2C | 28d | 2025-10-08 | 2025-10-08 | PH10.SU.1010, PH10.M.1060 | 2025-05-20 | 2025-06-27 |  | 02 | 1 |
|  | INSPECTIONS | **Final Inspections** |  | 2025-10-08 | 2025-10-08 |  |  |  |  |  |  |
| PH10.1000 |  | Fire Protection Final Inspection | 2d | 2025-10-08 | 2025-10-08 | PH10.DAHU.1770, PH10.EA.136, PH10.DAHU.1050, PH10.DAHU.1430, PH10.DH.1250, PH10.SU.1010, PH10.EA.2070 FF, PH10.DAHU.1200, PH10.DAHU.1640 FF, PH10.DH.1370 FF | 2025-05-16 | 2025-05-19 | Must complete by 10/16/23 | 02 | 1 |
| PH10.1010 |  | Electrical Final Inspection | 2d | 2025-10-08 | 2025-10-08 | PH10.SU.1010, PH10.EA.2070 FF, PH10.DAHU.1200, PH10.DAHU.1640, PH10.DH.1370 | 2025-05-16 | 2025-05-19 | Must complete by 10/16/23 | 02 | 1 |
| PH10.1020 |  | Fire Alarm Final Inspection | 2d | 2025-10-08 | 2025-10-08 | PH10.EA.2140, PH10.SU.1010, PH10.EA.2070 FF, PH10.DAHU.1200, PH10.DAHU.1640, PH10.DH.1370 | 2025-05-16 | 2025-05-19 | Must complete by 10/16/23 | 02 | 1 |
| PH10.1030 |  | Mechanical Final Inspection | 2d | 2025-10-08 | 2025-10-08 | PH10.SU.1010, PH10.EA.2070 FF, PH10.DAHU.1200, PH10.DAHU.1640, PH10.DH.1370 | 2025-05-16 | 2025-05-19 | Must complete by 10/16/23 | 02 | 1 |
| PH10.1040 |  | Plumbing Final Inspection | 2d | 2025-10-08 | 2025-10-08 | PH10.SU.1010, PH10.EA.2070 FF, PH10.DAHU.1200, PH10.DAHU.1640, PH10.DH.1370 | 2025-05-16 | 2025-05-19 | Must complete by 10/16/23 | 02 | 1 |
| PH10.1050 |  | Special Inspections Sign-off | 2d | 2025-10-08 | 2025-10-08 | PH10.M.1070, ISSU28.10 | 2025-09-15 | 2025-09-16 | Must complete by 10/16/23 | 02 | 1 |

## Activity codes

| Code | Value | Meaning |
| --- | --- | --- |
| 03-GC - Location (Systems of Work) | MS1 | (02) Substantial Completion (TCO or 1st Turnover Milestone) |
| 03-GC - Location (Systems of Work) | MS2 | (03) 2nd Turnover Milestone |
| 03-GC - Location (Systems of Work) | MS3 | (04) 3rd Turnover Milestone |
| 03-GC - Location (Systems of Work) | MS4 | (05) 4th Turnover Milestone |
| 03-GC - Location (Systems of Work) | MS5 | (05) 5th Turnover Milestone |
| 05 -GC - Building Phase | 1 | Phase 1 |
| 05 -GC - Building Phase | 10 | Phase 10 |
| 05 -GC - Building Phase | 2 | Phase 2 |
| 05 -GC - Building Phase | 3 | Phase 3 |
| 05 -GC - Building Phase | 4 | Phase 4 |
| 05 -GC - Building Phase | 5 | Phase 5 |
| 05 -GC - Building Phase | 6 | Phase 6 |
| 05 -GC - Building Phase | 7 | Phase 7 |
| 05 -GC - Building Phase | 8 | Phase 8 |
| 05 -GC - Building Phase | 9 | Phase 9 |
| 06 -GC - Building Levels | 02 | Level 02 |
| 13 -GC - MC (Systems of Work) | H2C | (04) Hand off to CX/Substantial Comp/L4 |
| 13 -GC - MC (Systems of Work) | NEA | (03) Network Early Access/L3 |
| 13 -GC - MC (Systems of Work) | PFHO | (05) PFHO or Final Completion/L5 |
| 13 -GC - MC (Systems of Work) | SWD | (02) Start Work |
| ISSUES | ISSU01 | Issue 01 Owner Delayed Project Start 5/28/24 |
| ISSUES | ISSU02 | Issue 02 Owner Delayed Project Start 7/1/24 |
| ISSUES | ISSU03 | Issue 03 Owner Delayed Project Start 8/19/24 |
| ISSUES | ISSU04 | Issue 04 - Owner Delayed Project Start 8/26/24 |
| ISSUES | ISSU05 | Issue 05 - Owner Delayed Project Start 9/16/24 |
| ISSUES | ISSU06 | Issue 06 - Additional Genyard Excavation |
| ISSUES | ISSU07 | Issue 07 - PCL#4 (CS FP Line vs Air Intake Piping Re-work) |
| ISSUES | ISSU08 | Issue 08 - PCL#12 (C/S Drain Locations Vs TI Drain Locations) |
| ISSUES | ISSU09 | Issue 09 - (Side Walk Conflict With Generator Pad) |
| ISSUES | ISSU10 | Issue 10 - (Additional MC Cables Required) |
| ISSUES | ISSU11 | Issue 11 - Catwalk Structural Conflict |
| ISSUES | ISSU12 | Issue 12 - Eaton Delay for MV XFMR - Change Date to 12/27/2024 |
| ISSUES | ISSU13 | Issue 13 - Phase 3 PDC Damage During Transportation |
| ISSUES | ISSU14 | Issue 14 - Delay Due to MV Transformer Relay Testing Procedure |
| ISSUES | ISSU15 | Issue 15 - Eaton Startup Technician Rescheduled |
| ISSUES | ISSU16 | Issue 16 - Novec Reschedule MV Switchgear Energization |
| ISSUES | ISSU17 | Issue 17 - Weather days |
| ISSUES | ISSU18 | Issue 18 - Owner Security Complete Needed For NEA Phase 4 |
| ISSUES | ISSU19 | Issue 19 - Observation154 - OLP2 Main Breaker Set Screw |
| ISSUES | ISSU20 | Issue 20 - Observation 172 - OLP1 |
| ISSUES | ISSU21 | Issue 21 - Observation 213 - OUPP 1A2 |
| ISSUES | ISSU22 | Issue 22 - 2.3A XFMR Relay Issue |
| ISSUES | ISSU23 | Issue 23 - Phase 7 DAHU Damage During Transportation |
| ISSUES | ISSU24 | Issue 24 - Eaton XFMR Issues |
| ISSUES | ISSU25 | Issue 25 - H2C Delay Due to EATON Bus Duct Report |
| ISSUES | ISSU26 | Issue 26 - Eaton XFMR Issues |
| ISSUES | ISSU27 | Issue 27 - Post Phase 10 PFHO Change Order Work |
